Schedule from MS Project, 2015-05-11 to 2015-09-04, A marks actual dates.

## Calendars

- Standard: Mon-Fri 08:00-12:00, 13:00-17:00; Sat-Sun off. Exceptions (off unless hours are given): 2015-06-22 to 2015-06-26 (Nghỉ hè).

## Resources

| Resource |
| --- |
| NamNT |
| MaiTTT |
| PhuongBB |
| AnhTT |
| SangNV |
| Nam' |

## Schedule

| ID | WBS | Task | Type | Duration | Start | Finish | Predecessors | Complete | Constraint | Resources | Work | Actual work |
| --- | --- | --- | --- | --- | --- | --- | --- | --- | --- | --- | --- | --- |
| 1 | 1 | **BL** |  | 80d | 2015-05-11 08:00 A | 2015-09-04 17:00 A |  | 100% |  |  | 1305.6h | 1305.6h |
| 2 | 1.1 | **Initiation** |  | 12.7d | 2015-05-11 08:00 A | 2015-05-27 14:36 A |  | 100% |  |  | 224.8h | 224.8h |
| 3 | 1.1.1 | System feasible study |  | 0.3d | 2015-05-11 08:00 A | 2015-05-11 10:24 A |  | 100% |  | NamNT; MaiTTT; PhuongBB; AnhTT | 9.6h | 9.6h |
| 4 | 1.1.2 | Define business situation |  | 0.4d | 2015-05-11 10:24 A | 2015-05-11 14:36 A | 3 | 100% |  | NamNT; MaiTTT; PhuongBB; AnhTT | 12.8h | 12.8h |
| 5 | 1.1.3 | Develop project idea |  | 0.4d | 2015-05-11 14:36 A | 2015-05-12 08:48 A | 4 | 100% |  | NamNT; MaiTTT; PhuongBB; AnhTT | 12.8h | 12.8h |
| 6 | 1.1.4 | Define project and system scope |  | 0.5d | 2015-05-12 08:48 A | 2015-05-12 13:48 A | 5 | 100% |  | NamNT; MaiTTT; PhuongBB; AnhTT | 16h | 16h |
| 7 | 1.1.5 | Prepare project |  | 1d | 2015-05-12 13:48 A | 2015-05-13 13:48 A | 6 | 100% |  | NamNT; MaiTTT; PhuongBB; AnhTT | 32h | 32h |
| 8 | 1.1.6 | Kick-off meeting | milestone | 0.4d | 2015-05-13 13:48 A | 2015-05-13 17:00 A | 7 | 100% |  | NamNT; MaiTTT; PhuongBB; AnhTT | 12.8h | 12.8h |
| 9 | 1.1.7 | Q & A Management |  | 0.3d | 2015-05-14 08:00 A | 2015-05-14 10:24 A | 8 | 100% |  | MaiTTT | 2.4h | 2.4h |
| 10 | 1.1.8 | **Technologies** |  | 6d | 2015-05-19 14:36 A | 2015-05-27 14:36 A |  | 100% |  |  | 12h | 12h |
| 11 | 1.1.8.1 | Research development technologies |  | 0.5d | 2015-05-19 14:36 A | 2015-05-22 16:12 A | 8 | 100% |  | NamNT | 4h | 4h |
| 12 | 1.1.8.2 | Install and configure Android Studio and Android SDK |  | 0.5d | 2015-05-22 16:12 A | 2015-05-27 14:36 A | 11 | 100% | finish no earlier than 2015-05-22 17:00 | NamNT; MaiTTT | 4.8h | 4.8h |
| 13 | 1.1.8.3 | Install and configure NetBeans, PHP |  | 0.3d | 2015-05-22 16:12 A | 2015-05-27 11:12 A | 11 | 100% | finish no earlier than 2015-05-19 17:00 | NamNT | 2.4h | 2.4h |
| 14 | 1.1.8.4 | Study web service |  | 0.1d | 2015-05-27 11:12 A | 2015-05-27 12:00 A | 13 | 100% | finish no earlier than 2015-05-20 17:00 | NamNT | 0.8h | 0.8h |
| 15 | 1.1.9 | **SRS/PP/Concept design Review checklist** |  | 2d | 2015-05-14 10:24 A | 2015-05-18 10:24 A |  | 100% |  |  | 16h | 16h |
| 16 | 1.1.9.1 | Develop review checklist |  | 1.5d | 2015-05-14 10:24 A | 2015-05-15 15:24 A | 9 | 100% |  | MaiTTT | 12h | 12h |
| 17 | 1.1.9.2 | Review review checklist |  | 0.2d | 2015-05-15 15:24 A | 2015-05-15 17:00 A | 16 | 100% |  | PhuongBB | 1.6h | 1.6h |
| 18 | 1.1.9.3 | Update review checklist |  | 0.3d | 2015-05-18 08:00 A | 2015-05-18 10:24 A | 17 | 100% |  | PhuongBB | 2.4h | 2.4h |
| 19 | 1.1.9.4 | Complete review checklist | milestone | 0d | 2015-05-18 10:24 A | 2015-05-18 10:24 A | 18 | 100% |  | MaiTTT |  |  |
| 20 | 1.1.10 | **Requirements** |  | 3.4d | 2015-05-14 08:00 A | 2015-05-19 11:12 A |  | 100% |  |  | 25.6h | 25.6h |
| 21 | 1.1.10.1 | **User Requirements Specification** |  | 2.7d | 2015-05-14 08:00 A | 2015-05-18 14:36 A |  | 100% |  |  | 20h | 20h |
| 22 | 1.1.10.1.1 | Collect business requirements and processes |  | 0.5d | 2015-05-14 08:00 A | 2015-05-14 12:00 A | 8 | 100% |  | PhuongBB | 4h | 4h |
| 23 | 1.1.10.1.2 | Create draft requirements |  | 1d | 2015-05-14 13:00 A | 2015-05-15 12:00 A | 22 | 100% |  | PhuongBB | 8h | 8h |
| 24 | 1.1.10.1.3 | Complete draft requirements | milestone | 0d | 2015-05-15 12:00 A | 2015-05-15 12:00 A | 23 | 100% |  | PhuongBB |  |  |
| 25 | 1.1.10.1.4 | Develop main function and processes |  | 1d | 2015-05-15 13:00 A | 2015-05-18 14:36 A | 24 | 100% |  | PhuongBB | 8h | 8h |
| 26 | 1.1.10.2 | Review User Requirement Specification with checklist |  | 0.3d | 2015-05-18 14:36 A | 2015-05-18 17:00 A | 25, 19 | 100% |  | MaiTTT | 2.4h | 2.4h |
| 27 | 1.1.10.3 | Update User Requirement Specification |  | 0.4d | 2015-05-19 08:00 A | 2015-05-19 11:12 A | 26 | 100% |  | PhuongBB | 3.2h | 3.2h |
| 28 | 1.1.10.4 | Complete User Requirement Specification | milestone | 0d | 2015-05-19 11:12 A | 2015-05-19 11:12 A | 27 | 100% |  | NamNT |  |  |

| ID | WBS | Task | Type | Duration | Start | Finish | Predecessors | Complete | Resources | Work | Actual work |
| --- | --- | --- | --- | --- | --- | --- | --- | --- | --- | --- | --- |
| 29 | 1.1.11 | **Concept design** |  | 2.5d | 2015-05-15 13:00 A | 2015-05-19 17:00 A |  | 100% |  | 16h | 16h |
| 30 | 1.1.11.1 | Create draft concept design |  | 1d | 2015-05-15 13:00 A | 2015-05-18 17:00 A | 24 | 100% | AnhTT | 8h | 8h |
| 31 | 1.1.11.2 | Review concept design with checklist |  | 0.5d | 2015-05-19 08:00 A | 2015-05-19 12:00 A | 30, 19 | 100% | MaiTTT | 4h | 4h |
| 32 | 1.1.11.3 | Update concept design |  | 0.5d | 2015-05-19 13:00 A | 2015-05-19 17:00 A | 31 | 100% | AnhTT | 4h | 4h |
| 33 | 1.1.11.4 | Complete concept design | milestone | 0d | 2015-05-19 17:00 A | 2015-05-19 17:00 A | 32 | 100% | NamNT |  |  |
| 34 | 1.1.12 | **Project plan** |  | 9.7d | 2015-05-14 08:00 A | 2015-05-27 14:36 A |  | 100% |  | 51.2h | 51.2h |
| 35 | 1.1.12.1 | Develop project definition |  | 0.7d | 2015-05-14 08:00 A | 2015-05-14 14:36 A | 8 | 100% | NamNT | 5.6h | 5.6h |
| 36 | 1.1.12.2 | Develop Work Breakdown Structure |  | 0.9d | 2015-05-14 14:36 A | 2015-05-15 13:48 A | 35 | 100% | NamNT | 7.2h | 7.2h |
| 37 | 1.1.12.3 | Create Project Schedule |  | 2d | 2015-05-15 13:48 A | 2015-05-19 13:48 A | 36 | 100% | NamNT | 16h | 16h |
| 38 | 1.1.12.4 | Create Configuration Management Plan version 1.0 |  | 0.8d | 2015-05-22 16:12 A | 2015-05-25 14:36 A | 37 | 100% | NamNT | 6.4h | 6.4h |
| 39 | 1.1.12.5 | Create Project Plan (first version) |  | 1.5d | 2015-05-25 14:36 A | 2015-05-27 09:36 A | 38 | 100% | NamNT | 12h | 12h |
| 40 | 1.1.12.6 | Review Project Plan (first version) |  | 0.5d | 2015-05-27 09:36 A | 2015-05-27 14:36 A | 39 | 100% | MaiTTT; PhuongBB | 4h | 4h |
| 41 | 1.1.12.7 | Complete Project Plan (final version) | milestone | 0d | 2015-05-27 14:36 A | 2015-05-27 14:36 A | 40 | 100% | NamNT |  |  |
| 42 | 1.1.13 | **Progress Report 1** |  | 0.7d | 2015-05-19 13:48 A | 2015-05-20 10:24 A |  | 100% |  | 5.6h | 5.6h |
| 43 | 1.1.13.1 | Develop Progress Report 1 |  | 0.4d | 2015-05-19 13:48 A | 2015-05-19 17:00 A | 37 | 100% | NamNT | 3.2h | 3.2h |
| 44 | 1.1.13.2 | Review Progress Report 1 |  | 0.2d | 2015-05-20 08:00 A | 2015-05-20 09:36 A | 43 | 100% | MaiTTT | 1.6h | 1.6h |
| 45 | 1.1.13.3 | Update Progress Report 1 |  | 0.1d | 2015-05-20 09:36 A | 2015-05-20 10:24 A | 44 | 100% | NamNT | 0.8h | 0.8h |
| 46 | 1.1.13.4 | Complete Progress Report 1 | milestone | 0d | 2015-05-20 10:24 A | 2015-05-20 10:24 A | 45 | 100% | NamNT |  |  |
| 47 | 1.1.14 | Submit PP, URS, Concept Design | milestone | 0d | 2015-05-27 14:36 A | 2015-05-27 14:36 A | 41, 46, 28, 33 | 100% | NamNT |  |  |
| 48 | 1.2 | **Solution** |  | 28.8d | 2015-05-27 14:36 A | 2015-07-14 12:00 A |  | 100% |  | 512h | 512h |
| 49 | 1.2.1 | **Requirements** |  | 7.2d | 2015-05-27 14:36 A | 2015-06-05 16:12 A |  | 100% |  | 129.6h | 129.6h |
| 50 | 1.2.1.1 | **Software Requirements Specification** |  | 7.2d | 2015-05-27 14:36 A | 2015-06-05 16:12 A |  | 100% |  | 129.6h | 129.6h |
| 51 | 1.2.1.1.1 | **Functional Requirement Specification** |  | 4.9d | 2015-05-27 14:36 A | 2015-06-03 13:48 A |  | 100% |  | 101.6h | 101.6h |
| 52 | 1.2.1.1.1.1 | **Bus Driver Module** |  | 0.9d | 2015-05-27 14:36 A | 2015-05-28 13:48 A |  | 100% |  | 4.8h | 4.8h |
| 53 | 1.2.1.1.1.1.1 | Send bus info module |  | 0.6d | 2015-05-27 14:36 A | 2015-05-28 13:48 A | 47 | 100% | NamNT | 4.8h | 4.8h |

| ID | WBS | Task | Duration | Start | Finish | Predecessors | Complete | Resources | Work | Actual work |
| --- | --- | --- | --- | --- | --- | --- | --- | --- | --- | --- |
| 54 | 1.2.1.1.1.2 | **Bus Rider Module** | 4.9d | 2015-05-27 14:36 A | 2015-06-03 13:48 A |  | 100% |  | 96.8h | 96.8h |
| 55 | 1.2.1.1.1.2.1 | **Common module** | 0.5d | 2015-06-01 09:36 A | 2015-06-01 14:36 A |  | 100% |  | 4h | 4h |
| 56 | 1.2.1.1.1.2.1.1 | Change app setting | 0.5d | 2015-06-01 09:36 A | 2015-06-01 14:36 A | 47 | 100% | NamNT | 4h | 4h |
| 57 | 1.2.1.1.1.2.2 | **Account Management module** | 1.6d | 2015-05-28 13:48 A | 2015-06-01 09:36 A |  | 100% |  | 11.2h | 11.2h |
| 58 | 1.2.1.1.1.2.2.1 | Log in | 0.6d | 2015-05-28 13:48 A | 2015-05-29 09:36 A | 47 | 100% | NamNT | 4.8h | 4.8h |
| 59 | 1.2.1.1.1.2.2.2 | Log out | 0.3d | 2015-05-29 09:36 A | 2015-05-29 12:00 A | 58 | 100% | NamNT | 2.4h | 2.4h |
| 60 | 1.2.1.1.1.2.2.3 | Change account info | 0.2d | 2015-05-29 13:00 A | 2015-05-29 14:36 A | 59 | 100% | NamNT | 1.6h | 1.6h |
| 61 | 1.2.1.1.1.2.2.4 | Forgot password | 0.3d | 2015-05-29 14:36 A | 2015-06-01 09:36 A | 60 | 100% | NamNT | 2.4h | 2.4h |
| 62 | 1.2.1.1.1.2.3 | **Bus module** | 2.7d | 2015-05-27 14:36 A | 2015-06-01 11:12 A |  | 100% |  | 21.6h | 21.6h |
| 63 | 1.2.1.1.1.2.3.1 | View bus list | 0.3d | 2015-05-27 14:36 A | 2015-05-27 17:00 A | 47 | 100% | PhuongBB | 2.4h | 2.4h |
| 64 | 1.2.1.1.1.2.3.2 | View bus info | 0.3d | 2015-05-28 08:00 A | 2015-05-28 10:24 A | 63 | 100% | PhuongBB | 2.4h | 2.4h |
| 65 | 1.2.1.1.1.2.3.3 | View bus route | 0.4d | 2015-05-28 10:24 A | 2015-05-28 14:36 A | 64 | 100% | PhuongBB | 3.2h | 3.2h |
| 66 | 1.2.1.1.1.2.3.4 | View nearest bus | 0.6d | 2015-05-28 14:36 A | 2015-05-29 10:24 A | 65 | 100% | PhuongBB | 4.8h | 4.8h |
| 67 | 1.2.1.1.1.2.3.5 | View bus map | 0.6d | 2015-05-29 10:24 A | 2015-05-29 16:12 A | 66 | 100% | PhuongBB | 4.8h | 4.8h |
| 68 | 1.2.1.1.1.2.3.6 | View bus near me | 0.5d | 2015-05-29 16:12 A | 2015-06-01 11:12 A | 67 | 100% | PhuongBB | 4h | 4h |
| 69 | 1.2.1.1.1.2.4 | **Path Finder module** | 2.7d | 2015-05-28 13:48 A | 2015-06-02 10:24 A |  | 100% |  | 21.6h | 21.6h |
| 70 | 1.2.1.1.1.2.4.1 | Find path | 1d | 2015-05-28 13:48 A | 2015-05-29 13:48 A | 53 | 100% | AnhTT | 8h | 8h |
| 71 | 1.2.1.1.1.2.4.2 | View paths found | 0.4d | 2015-05-29 13:48 A | 2015-05-29 17:00 A | 70 | 100% | AnhTT | 3.2h | 3.2h |
| 72 | 1.2.1.1.1.2.4.3 | View path detail | 0.7d | 2015-06-01 08:00 A | 2015-06-01 14:36 A | 71 | 100% | AnhTT | 5.6h | 5.6h |
| 73 | 1.2.1.1.1.2.4.4 | View direction | 0.6d | 2015-06-01 14:36 A | 2015-06-02 10:24 A | 72 | 100% | AnhTT | 4.8h | 4.8h |
| 74 | 1.2.1.1.1.2.5 | **Reminder module** | 1.3d | 2015-06-02 10:24 A | 2015-06-03 13:48 A |  | 100% |  | 10.4h | 10.4h |
| 75 | 1.2.1.1.1.2.5.1 | View bus reminder | 0.5d | 2015-06-02 10:24 A | 2015-06-02 15:24 A | 73 | 100% | AnhTT | 4h | 4h |
| 76 | 1.2.1.1.1.2.5.2 | Add reminder | 0.2d | 2015-06-02 15:24 A | 2015-06-02 17:00 A | 75 | 100% | AnhTT | 1.6h | 1.6h |
| 77 | 1.2.1.1.1.2.5.3 | Edit reminder | 0.3d | 2015-06-03 08:00 A | 2015-06-03 10:24 A | 76 | 100% | AnhTT | 2.4h | 2.4h |
| 78 | 1.2.1.1.1.2.5.4 | Delete reminder | 0.1d | 2015-06-03 10:24 A | 2015-06-03 11:12 A | 77 | 100% | AnhTT | 0.8h | 0.8h |
| 79 | 1.2.1.1.1.2.5.5 | Suspend/Unsuspend a chosen reminder | 0.2d | 2015-06-03 11:12 A | 2015-06-03 13:48 A | 78 | 100% | AnhTT | 1.6h | 1.6h |

| ID | WBS | Task | Type | Duration | Start | Finish | Predecessors | Complete | Resources | Work | Actual work |
| --- | --- | --- | --- | --- | --- | --- | --- | --- | --- | --- | --- |
| 80 | 1.2.1.1.1.2.6 | **Track module** |  | 1.2d | 2015-05-27 14:36 A | 2015-05-28 16:12 A |  | 100% |  | 9.6h | 9.6h |
| 81 | 1.2.1.1.1.2.6.1 | Tracking |  | 1d | 2015-05-27 14:36 A | 2015-05-28 14:36 A | 47 | 100% | MaiTTT | 8h | 8h |
| 82 | 1.2.1.1.1.2.6.2 | Cancel track |  | 0.2d | 2015-05-28 14:36 A | 2015-05-28 16:12 A | 81 | 100% | MaiTTT | 1.6h | 1.6h |
| 83 | 1.2.1.1.1.2.7 | **Favorite module** |  | 2.3d | 2015-05-28 16:12 A | 2015-06-02 09:36 A |  | 100% |  | 18.4h | 18.4h |
| 84 | 1.2.1.1.1.2.7.1 | View favorite places |  | 0.4d | 2015-05-28 16:12 A | 2015-05-29 10:24 A | 82 | 100% | MaiTTT | 3.2h | 3.2h |
| 85 | 1.2.1.1.1.2.7.2 | Add favorite places |  | 0.2d | 2015-05-29 10:24 A | 2015-05-29 12:00 A | 84 | 100% | MaiTTT | 1.6h | 1.6h |
| 86 | 1.2.1.1.1.2.7.3 | Edit favorite places |  | 0.3d | 2015-05-29 13:00 A | 2015-05-29 15:24 A | 85 | 100% | MaiTTT | 2.4h | 2.4h |
| 87 | 1.2.1.1.1.2.7.4 | Delete favorite places |  | 0.2d | 2015-05-29 15:24 A | 2015-05-29 17:00 A | 86 | 100% | MaiTTT | 1.6h | 1.6h |
| 88 | 1.2.1.1.1.2.7.5 | Search favorite places |  | 0.2d | 2015-06-01 08:00 A | 2015-06-01 09:36 A | 87 | 100% | MaiTTT | 1.6h | 1.6h |
| 89 | 1.2.1.1.1.2.7.6 | View favorite buses |  | 0.4d | 2015-06-01 09:36 A | 2015-06-01 13:48 A | 88 | 100% | MaiTTT | 3.2h | 3.2h |
| 90 | 1.2.1.1.1.2.7.7 | Add favorite buses |  | 0.2d | 2015-06-01 13:48 A | 2015-06-01 15:24 A | 89 | 100% | MaiTTT | 1.6h | 1.6h |
| 91 | 1.2.1.1.1.2.7.8 | Delete favorite buses |  | 0.2d | 2015-06-01 15:24 A | 2015-06-01 17:00 A | 90 | 100% | MaiTTT | 1.6h | 1.6h |
| 92 | 1.2.1.1.1.2.7.9 | Search favorite buses |  | 0.2d | 2015-06-02 08:00 A | 2015-06-02 09:36 A | 91 | 100% | MaiTTT | 1.6h | 1.6h |
| 93 | 1.2.1.1.2 | **Non-functional Requirement Specification** |  | 1.5d | 2015-06-02 09:36 A | 2015-06-03 14:36 A |  | 100% |  | 12h | 12h |
| 94 | 1.2.1.1.2.1 | Develop User Interface Requirement |  | 1d | 2015-06-02 09:36 A | 2015-06-03 09:36 A | 92 | 100% | MaiTTT | 8h | 8h |
| 95 | 1.2.1.1.2.2 | Develop Performance Requirement |  | 0.5d | 2015-06-03 09:36 A | 2015-06-03 14:36 A | 94 | 100% | NamNT | 4h | 4h |
| 96 | 1.2.1.1.3 | Review Software Requirement Specification with checklist |  | 1d | 2015-06-04 09:36 A | 2015-06-05 11:12 A | 53, 61, 68, 73, 79, 82, 92, 95 | 100% | MaiTTT | 8h | 8h |
| 97 | 1.2.1.1.4 | Update Software Requirement Specification |  | 0.5d | 2015-06-05 11:12 A | 2015-06-05 16:12 A | 96 | 100% | AnhTT; PhuongBB | 8h | 8h |
| 98 | 1.2.1.1.5 | Complete Software Requirement Specification | milestone | 0d | 2015-06-05 16:12 A | 2015-06-05 16:12 A | 97 | 100% | NamNT |  |  |
| 99 | 1.2.2 | **Design** |  | 22.7d | 2015-06-03 09:36 A | 2015-07-10 16:12 A |  | 100% |  | 226.4h | 226.4h |
| 100 | 1.2.2.1 | **Design Review checklist** |  | 1.3d | 2015-06-03 09:36 A | 2015-06-04 12:00 A |  | 100% |  | 10.4h | 10.4h |
| 101 | 1.2.2.1.1 | Develop review checklist |  | 1d | 2015-06-03 09:36 A | 2015-06-04 09:36 A | 94 | 100% | MaiTTT | 8h | 8h |
| 102 | 1.2.2.1.2 | Review review checklist |  | 0.1d | 2015-06-04 09:36 A | 2015-06-04 10:24 A | 101 | 100% | PhuongBB | 0.8h | 0.8h |
| 103 | 1.2.2.1.3 | Update review checklist |  | 0.2d | 2015-06-04 10:24 A | 2015-06-04 12:00 A | 102 | 100% | MaiTTT | 1.6h | 1.6h |
| 104 | 1.2.2.1.4 | Complete review checklist | milestone | 0d | 2015-06-04 12:00 A | 2015-06-04 12:00 A | 103 | 100% | MaiTTT |  |  |

| ID | WBS | Task | Type | Duration | Start | Finish | Predecessors | Complete | Constraint | Resources | Work | Actual work |
| --- | --- | --- | --- | --- | --- | --- | --- | --- | --- | --- | --- | --- |
| 105 | 1.2.2.2 | **Architecture design** |  | 2d | 2015-06-05 16:12 A | 2015-06-09 16:12 A |  | 100% |  |  | 16h | 16h |
| 106 | 1.2.2.2.1 | Define system structure and collect system features |  | 1d | 2015-06-05 16:12 A | 2015-06-08 16:12 A | 98 | 100% |  | NamNT | 8h | 8h |
| 107 | 1.2.2.2.2 | Study & choose System Architecture |  | 0.5d | 2015-06-08 16:12 A | 2015-06-09 11:12 A | 106 | 100% |  | NamNT | 4h | 4h |
| 108 | 1.2.2.2.3 | Review Architecture Design with checklist |  | 0.3d | 2015-06-09 11:12 A | 2015-06-09 14:36 A | 104, 107 | 100% |  | MaiTTT | 2.4h | 2.4h |
| 109 | 1.2.2.2.4 | Update Architecture Design |  | 0.2d | 2015-06-09 14:36 A | 2015-06-09 16:12 A | 108 | 100% |  | NamNT | 1.6h | 1.6h |
| 110 | 1.2.2.2.5 | Complete System Architecture version 1.0 | milestone | 0d | 2015-06-09 16:12 A | 2015-06-09 16:12 A | 109 | 100% |  | NamNT |  |  |
| 111 | 1.2.2.3 | **Detailed design** |  | 18d | 2015-06-09 16:12 A | 2015-07-10 16:12 A |  | 100% |  |  | 110.4h | 110.4h |
| 112 | 1.2.2.3.1 | **User Interface design** |  | 17.3d | 2015-06-09 16:12 A | 2015-07-10 09:36 A |  | 100% |  |  | 100.8h | 100.8h |
| 113 | 1.2.2.3.1.1 | **Bus Driver Module** |  | 2.8d | 2015-06-09 16:12 A | 2015-06-12 14:36 A |  | 100% |  |  | 3.2h | 3.2h |
| 114 | 1.2.2.3.1.1.1 | Send bus info module |  | 0.4d | 2015-06-09 16:12 A | 2015-06-12 14:36 A | 110 | 100% | finish no earlier than 2015-06-05 17:00 | NamNT | 3.2h | 3.2h |
| 115 | 1.2.2.3.1.2 | **Bus Rider Module** |  | 17.3d | 2015-06-09 16:12 A | 2015-07-10 09:36 A |  | 100% |  |  | 97.6h | 97.6h |
| 116 | 1.2.2.3.1.2.1 | **Common module** |  | 2.8d | 2015-06-09 16:12 A | 2015-06-12 14:36 A |  | 100% |  |  | 3.2h | 3.2h |
| 117 | 1.2.2.3.1.2.1.1 | Change app setting |  | 0.4d | 2015-06-09 16:12 A | 2015-06-12 14:36 A | 110 | 100% |  | NamNT | 3.2h | 3.2h |
| 118 | 1.2.2.3.1.2.2 | **Account Management module** |  | 10.1d | 2015-06-09 16:12 A | 2015-06-30 17:00 A |  | 100% |  |  | 10.4h | 10.4h |
| 119 | 1.2.2.3.1.2.2.1 | Log in |  | 0.5d | 2015-06-09 16:12 A | 2015-06-30 09:36 A | 110 | 100% |  | AnhTT | 4h | 4h |
| 120 | 1.2.2.3.1.2.2.2 | Log out |  | 0.3d | 2015-06-30 09:36 A | 2015-06-30 12:00 A | 119 | 100% |  | AnhTT | 2.4h | 2.4h |
| 121 | 1.2.2.3.1.2.2.3 | Change account info |  | 0.2d | 2015-06-30 13:00 A | 2015-06-30 14:36 A | 120 | 100% |  | AnhTT | 1.6h | 1.6h |
| 122 | 1.2.2.3.1.2.2.4 | Forgot password |  | 0.3d | 2015-06-30 14:36 A | 2015-06-30 17:00 A | 121 | 100% |  | AnhTT | 2.4h | 2.4h |
| 123 | 1.2.2.3.1.2.3 | **Bus module** |  | 17.1d | 2015-06-09 16:12 A | 2015-07-09 17:00 A |  | 100% |  |  | 25.6h | 25.6h |
| 124 | 1.2.2.3.1.2.3.1 | View bus list |  | 0.3d | 2015-06-09 16:12 A | 2015-06-19 08:48 A | 110 | 100% | finish no earlier than 2015-06-08 17:00 | MaiTTT | 2.4h | 2.4h |
| 125 | 1.2.2.3.1.2.3.2 | View bus info |  | 0.3d | 2015-06-19 08:48 A | 2015-06-30 11:12 A | 124 | 100% |  | MaiTTT | 2.4h | 2.4h |
| 126 | 1.2.2.3.1.2.3.3 | View bus route |  | 0.5d | 2015-06-30 11:12 A | 2015-07-01 10:24 A | 125 | 100% |  | MaiTTT | 4h | 4h |
| 127 | 1.2.2.3.1.2.3.4 | View nearest bus |  | 0.7d | 2015-07-03 08:00 A | 2015-07-03 14:36 A | 126 | 100% | finish no earlier than 2015-06-12 17:00 | MaiTTT | 5.6h | 5.6h |
| 128 | 1.2.2.3.1.2.3.5 | View bus map |  | 0.8d | 2015-07-07 09:36 A | 2015-07-07 17:00 A | 127 | 100% | start no earlier than 2015-06-16 08:00 | MaiTTT | 6.4h | 6.4h |
| 129 | 1.2.2.3.1.2.3.6 | View bus near me |  | 0.6d | 2015-07-09 11:12 A | 2015-07-09 17:00 A | 128 | 100% | start no earlier than 2015-06-17 08:00 | MaiTTT | 4.8h | 4.8h |

| ID | WBS | Task | Type | Duration | Start | Finish | Predecessors | Complete | Constraint | Resources | Work | Actual work |
| --- | --- | --- | --- | --- | --- | --- | --- | --- | --- | --- | --- | --- |
| 130 | 1.2.2.3.1.2.4 | **Path Finder module** |  | 2.5d | 2015-06-09 16:12 A | 2015-06-12 11:12 A |  | 100% |  |  | 20h | 20h |
| 131 | 1.2.2.3.1.2.4.1 | Find path |  | 1d | 2015-06-09 16:12 A | 2015-06-10 16:12 A | 110 | 100% |  | NamNT | 8h | 8h |
| 132 | 1.2.2.3.1.2.4.2 | View paths found |  | 0.4d | 2015-06-10 16:12 A | 2015-06-11 10:24 A | 131 | 100% |  | NamNT | 3.2h | 3.2h |
| 133 | 1.2.2.3.1.2.4.3 | View path detail |  | 0.6d | 2015-06-11 10:24 A | 2015-06-11 16:12 A | 132 | 100% |  | NamNT | 4.8h | 4.8h |
| 134 | 1.2.2.3.1.2.4.4 | View direction |  | 0.5d | 2015-06-11 16:12 A | 2015-06-12 11:12 A | 133 | 100% |  | NamNT | 4h | 4h |
| 135 | 1.2.2.3.1.2.5 | **Reminder module** |  | 2.9d | 2015-07-06 13:00 A | 2015-07-09 11:12 A |  | 100% |  |  | 10.4h | 10.4h |
| 136 | 1.2.2.3.1.2.5.1 | View bus reminder |  | 0.5d | 2015-07-06 13:00 A | 2015-07-06 17:00 A | 134 | 100% | start no earlier than 2015-06-10 08:00 | MaiTTT | 4h | 4h |
| 137 | 1.2.2.3.1.2.5.2 | Add reminder |  | 0.2d | 2015-07-07 08:00 A | 2015-07-07 09:36 A | 136 | 100% |  | MaiTTT | 1.6h | 1.6h |
| 138 | 1.2.2.3.1.2.5.3 | Edit reminder |  | 0.3d | 2015-07-08 13:48 A | 2015-07-08 16:12 A | 137 | 100% | start no earlier than 2015-06-15 08:00 | MaiTTT | 2.4h | 2.4h |
| 139 | 1.2.2.3.1.2.5.4 | Delete reminder |  | 0.1d | 2015-07-08 16:12 A | 2015-07-08 17:00 A | 138 | 100% |  | MaiTTT | 0.8h | 0.8h |
| 140 | 1.2.2.3.1.2.5.5 | Suspend/Unsuspend a chosen reminder |  | 0.2d | 2015-07-09 09:36 A | 2015-07-09 11:12 A | 139 | 100% |  | MaiTTT | 1.6h | 1.6h |
| 141 | 1.2.2.3.1.2.6 | **Track module** |  | 9d | 2015-06-09 16:12 A | 2015-06-29 16:12 A |  | 100% |  |  | 9.6h | 9.6h |
| 142 | 1.2.2.3.1.2.6.1 | Tracking |  | 1d | 2015-06-09 16:12 A | 2015-06-29 14:36 A | 110 | 100% |  | AnhTT | 8h | 8h |
| 143 | 1.2.2.3.1.2.6.2 | Cancel track |  | 0.2d | 2015-06-29 14:36 A | 2015-06-29 16:12 A | 142 | 100% |  | AnhTT | 1.6h | 1.6h |
| 144 | 1.2.2.3.1.2.7 | **Favorite module** |  | 8.3d | 2015-06-29 16:12 A | 2015-07-10 09:36 A |  | 100% |  |  | 18.4h | 18.4h |
| 145 | 1.2.2.3.1.2.7.1 | View favorite places |  | 0.4d | 2015-06-29 16:12 A | 2015-06-30 10:24 A | 143 | 100% |  | MaiTTT | 3.2h | 3.2h |
| 146 | 1.2.2.3.1.2.7.2 | Add favorite places |  | 0.2d | 2015-07-01 10:24 A | 2015-07-01 12:00 A | 145 | 100% |  | MaiTTT | 1.6h | 1.6h |
| 147 | 1.2.2.3.1.2.7.3 | Edit favorite places |  | 0.3d | 2015-07-02 14:36 A | 2015-07-02 17:00 A | 146 | 100% |  | MaiTTT | 2.4h | 2.4h |
| 148 | 1.2.2.3.1.2.7.4 | Delete favorite places |  | 0.2d | 2015-07-06 08:48 A | 2015-07-06 10:24 A | 147 | 100% | finish no earlier than 2015-06-19 17:00 | MaiTTT | 1.6h | 1.6h |
| 149 | 1.2.2.3.1.2.7.5 | Search favorite places |  | 0.2d | 2015-07-06 10:24 A | 2015-07-06 12:00 A | 148 | 100% |  | MaiTTT | 1.6h | 1.6h |
| 150 | 1.2.2.3.1.2.7.6 | View favorite buses |  | 0.4d | 2015-07-08 08:00 A | 2015-07-08 11:12 A | 149 | 100% |  | MaiTTT | 3.2h | 3.2h |
| 151 | 1.2.2.3.1.2.7.7 | Add favorite buses |  | 0.2d | 2015-07-08 11:12 A | 2015-07-08 13:48 A | 150 | 100% | finish no earlier than 2015-06-19 17:00 | MaiTTT | 1.6h | 1.6h |
| 152 | 1.2.2.3.1.2.7.8 | Delete favorite buses |  | 0.2d | 2015-07-09 08:00 A | 2015-07-09 09:36 A | 151 | 100% |  | MaiTTT | 1.6h | 1.6h |
| 153 | 1.2.2.3.1.2.7.9 | Search favorite buses |  | 0.2d | 2015-07-10 08:00 A | 2015-07-10 09:36 A | 152 | 100% |  | MaiTTT | 1.6h | 1.6h |
| 154 | 1.2.2.3.2 | Review Detailed Design with checklist |  | 0.2d | 2015-07-10 09:36 A | 2015-07-10 11:12 A | 104, 114, 117, 122, 129, 134, 140, 143, 153 | 100% |  | MaiTTT | 1.6h | 1.6h |
| 155 | 1.2.2.3.3 | Update Detailed Design |  | 0.5d | 2015-07-10 11:12 A | 2015-07-10 16:12 A | 154 | 100% |  | AnhTT; MaiTTT | 8h | 8h |
| 156 | 1.2.2.3.4 | Complete Detailed Design version 1.0 | milestone | 0d | 2015-07-10 16:12 A | 2015-07-10 16:12 A | 155 | 100% |  | MaiTTT |  |  |

| ID | WBS | Task | Type | Duration | Start | Finish | Predecessors | Complete | Constraint | Resources | Work | Actual work |
| --- | --- | --- | --- | --- | --- | --- | --- | --- | --- | --- | --- | --- |
| 157 | 1.2.2.4 | **Database design** |  | 8.3d | 2015-06-09 16:12 A | 2015-06-29 09:36 A |  | 100% |  |  | 52h | 52h |
| 158 | 1.2.2.4.1 | Create Databse Design draft version |  | 5d | 2015-06-09 16:12 A | 2015-06-18 14:36 A | 110 | 100% |  | AnhTT | 40h | 40h |
| 159 | 1.2.2.4.2 | Review Database Design with checklist |  | 0.5d | 2015-06-18 14:36 A | 2015-06-19 09:36 A | 103, 158 | 100% |  | PhuongBB | 4h | 4h |
| 160 | 1.2.2.4.3 | Update Database Design |  | 1d | 2015-06-19 09:36 A | 2015-06-29 09:36 A | 159 | 100% |  | AnhTT | 8h | 8h |
| 161 | 1.2.2.4.4 | Complete Database Design version 1.0 | milestone | 0d | 2015-06-29 09:36 A | 2015-06-29 09:36 A | 160 | 100% |  | AnhTT |  |  |
| 162 | 1.2.2.5 | **Class design** |  | 5.2d | 2015-06-29 09:36 A | 2015-07-06 11:12 A |  | 100% |  |  | 37.6h | 37.6h |
| 163 | 1.2.2.5.1 | Define class/component |  | 3.2d | 2015-06-29 09:36 A | 2015-07-02 14:36 A | 161 | 100% |  | NamNT; MaiTTT | 32h | 32h |
| 164 | 1.2.2.5.2 | Review Class Design with checklist |  | 0.4d | 2015-07-03 14:36 A | 2015-07-06 08:48 A | 163 | 100% | finish no earlier than 2015-06-19 17:00 | MaiTTT | 3.2h | 3.2h |
| 165 | 1.2.2.5.3 | Update Class Design |  | 0.3d | 2015-07-06 08:48 A | 2015-07-06 11:12 A | 164 | 100% |  | NamNT | 2.4h | 2.4h |
| 166 | 1.2.2.5.4 | Complete Class Design version 1.0 | milestone | 0d | 2015-07-06 11:12 A | 2015-07-06 11:12 A | 165 | 100% |  | NamNT |  |  |
| 167 | 1.2.2.6 | Complete design | milestone | 0d | 2015-07-10 16:12 A | 2015-07-10 16:12 A | 110, 156, 161, 166 | 100% | start no earlier than 2015-07-06 08:00 | NamNT |  |  |
| 168 | 1.2.3 | **Progress Report 2** |  | 1.6d | 2015-07-10 16:12 A | 2015-07-14 12:00 A |  | 100% |  |  | 4h | 4h |
| 169 | 1.2.3.1 | Develop Progress Report 2 |  | 0.3d | 2015-07-10 16:12 A | 2015-07-14 10:24 A | 156, 161, 166 | 100% | start no earlier than 2015-07-01 08:00 | NamNT | 2.4h | 2.4h |
| 170 | 1.2.3.2 | Review Progress Report 2 |  | 0.1d | 2015-07-14 10:24 A | 2015-07-14 11:12 A | 169 | 100% |  | MaiTTT | 0.8h | 0.8h |
| 171 | 1.2.3.3 | Update Progress Report 2 |  | 0.1d | 2015-07-14 11:12 A | 2015-07-14 12:00 A | 170 | 100% |  | MaiTTT | 0.8h | 0.8h |
| 172 | 1.2.3.4 | Complete Progress Report 2 | milestone | 0d | 2015-07-14 12:00 A | 2015-07-14 12:00 A | 171 | 100% |  | NamNT |  |  |
| 173 | 1.2.4 | Submit SRS,AD,DD | milestone | 0d | 2015-07-10 16:12 A | 2015-07-10 16:12 A | 98, 167 | 100% |  | NamNT |  |  |
| 174 | 1.2.5 | **Coding & Unit Testing** |  | 0.5d | 2015-07-10 16:12 A | 2015-07-13 11:12 A |  | 100% |  |  | 4h | 4h |
| 175 | 1.2.5.1 | **Bus Driver Module** |  | 0.5d | 2015-07-10 16:12 A | 2015-07-13 11:12 A |  | 100% |  |  | 4h | 4h |
| 176 | 1.2.5.1.1 | Send bus info module |  | 0.5d | 2015-07-10 16:12 A | 2015-07-13 11:12 A | 110, 156, 161, 166 | 100% | start no earlier than 2015-07-06 08:00 | NamNT | 4h | 4h |
| 177 | 1.2.6 | **Testing** |  | 14.3d | 2015-06-09 16:12 A | 2015-07-07 09:36 A |  | 100% |  |  | 124h | 124h |
| 178 | 1.2.6.1 | **Test review checklist** |  | 3d | 2015-06-09 16:12 A | 2015-06-12 16:12 A |  | 100% |  |  | 24h | 24h |
| 179 | 1.2.6.1.1 | **Test plan review checklist** |  | 2.6d | 2015-06-09 16:12 A | 2015-06-12 12:00 A |  | 100% |  |  | 9.6h | 9.6h |
| 180 | 1.2.6.1.1.1 | Develop test plan review checklist |  | 0.6d | 2015-06-09 16:12 A | 2015-06-10 12:00 A | 110 | 100% |  | MaiTTT | 4.8h | 4.8h |
| 181 | 1.2.6.1.1.2 | Review test plan review checklist |  | 0.4d | 2015-06-10 13:00 A | 2015-06-10 16:12 A | 180 | 100% |  | AnhTT | 3.2h | 3.2h |
| 182 | 1.2.6.1.1.3 | Update test plan review checklist |  | 0.2d | 2015-06-12 10:24 A | 2015-06-12 12:00 A | 181 | 100% |  | MaiTTT | 1.6h | 1.6h |
| 183 | 1.2.6.1.1.4 | Complete test plan review checklist | milestone | 0d | 2015-06-12 12:00 A | 2015-06-12 12:00 A | 182 | 100% |  | MaiTTT |  |  |

| ID | WBS | Task | Type | Duration | Start | Finish | Predecessors | Complete | Resources | Work | Actual work |
| --- | --- | --- | --- | --- | --- | --- | --- | --- | --- | --- | --- |
| 184 | 1.2.6.1.2 | **Test case review checklist** |  | 3d | 2015-06-09 16:12 A | 2015-06-12 16:12 A |  | 100% |  | 14.4h | 14.4h |
| 185 | 1.2.6.1.2.1 | Develop test case review checklist |  | 1d | 2015-06-09 16:12 A | 2015-06-11 11:12 A | 110 | 100% | MaiTTT | 8h | 8h |
| 186 | 1.2.6.1.2.2 | Review test case review checklist |  | 0.4d | 2015-06-11 11:12 A | 2015-06-11 15:24 A | 185 | 100% | AnhTT | 3.2h | 3.2h |
| 187 | 1.2.6.1.2.3 | Update test case review checklist |  | 0.4d | 2015-06-12 13:00 A | 2015-06-12 16:12 A | 186 | 100% | MaiTTT | 3.2h | 3.2h |
| 188 | 1.2.6.1.2.4 | Complete test case review checklist | milestone | 0d | 2015-06-12 16:12 A | 2015-06-12 16:12 A | 187 | 100% | MaiTTT |  |  |
| 189 | 1.2.6.1.3 | Complete review checklist | milestone | 0d | 2015-06-12 16:12 A | 2015-06-12 16:12 A | 183, 188 | 100% | MaiTTT |  |  |
| 190 | 1.2.6.2 | **Test plan** |  | 3.4d | 2015-06-09 16:12 A | 2015-06-15 10:24 A |  | 100% |  | 14.4h | 14.4h |
| 191 | 1.2.6.2.1 | Develop test plan |  | 1d | 2015-06-09 16:12 A | 2015-06-12 10:24 A | 110 | 100% | MaiTTT | 8h | 8h |
| 192 | 1.2.6.2.2 | Review test plan |  | 0.5d | 2015-06-12 13:00 A | 2015-06-12 17:00 A | 191, 183 | 100% | AnhTT | 4h | 4h |
| 193 | 1.2.6.2.3 | Update test plan |  | 0.3d | 2015-06-15 08:00 A | 2015-06-15 10:24 A | 192 | 100% | MaiTTT | 2.4h | 2.4h |
| 194 | 1.2.6.2.4 | Complete test plan | milestone | 0d | 2015-06-15 10:24 A | 2015-06-15 10:24 A | 193 | 100% | MaiTTT |  |  |
| 195 | 1.2.6.3 | **Test case** |  | 10.9d | 2015-06-15 10:24 A | 2015-07-07 09:36 A |  | 100% |  | 85.6h | 85.6h |
| 196 | 1.2.6.3.1 | **Unit test** |  | 3.7d | 2015-06-15 10:24 A | 2015-06-18 17:00 A |  | 100% |  | 29.6h | 29.6h |
| 197 | 1.2.6.3.1.1 | **Develop unit test case** |  | 1.7d | 2015-06-15 10:24 A | 2015-06-16 17:00 A |  | 100% |  | 13.6h | 13.6h |
| 198 | 1.2.6.3.1.1.1 | Bus driver module |  | 0.5d | 2015-06-15 10:24 A | 2015-06-15 15:24 A | 194 | 100% | MaiTTT | 4h | 4h |
| 199 | 1.2.6.3.1.1.2 | Bus module |  | 1d | 2015-06-15 15:24 A | 2015-06-16 15:24 A | 198 | 100% | MaiTTT | 8h | 8h |
| 200 | 1.2.6.3.1.1.3 | Setting module |  | 0.2d | 2015-06-16 15:24 A | 2015-06-16 17:00 A | 199 | 100% | MaiTTT | 1.6h | 1.6h |
| 201 | 1.2.6.3.1.2 | Review unit test case |  | 1d | 2015-06-17 08:00 A | 2015-06-17 17:00 A | 199, 200 | 100% | MaiTTT | 8h | 8h |
| 202 | 1.2.6.3.1.3 | Update unit test case |  | 1d | 2015-06-18 08:00 A | 2015-06-18 17:00 A | 201 | 100% | MaiTTT | 8h | 8h |
| 203 | 1.2.6.3.1.4 | Complete unit test case | milestone | 0d | 2015-06-18 17:00 A | 2015-06-18 17:00 A | 202 | 100% | MaiTTT |  |  |
| 204 | 1.2.6.3.2 | **Integration test** |  | 4d | 2015-06-19 09:36 A | 2015-07-02 09:36 A |  | 100% |  | 32h | 32h |
| 205 | 1.2.6.3.2.1 | Develop integration test case |  | 2d | 2015-06-19 09:36 A | 2015-06-30 09:36 A | 203 | 100% | PhuongBB | 16h | 16h |
| 206 | 1.2.6.3.2.2 | Review integration test case |  | 1d | 2015-06-30 09:36 A | 2015-07-01 09:36 A | 205 | 100% | PhuongBB | 8h | 8h |
| 207 | 1.2.6.3.2.3 | Update integration test case |  | 1d | 2015-07-01 09:36 A | 2015-07-02 09:36 A | 206 | 100% | PhuongBB | 8h | 8h |
| 208 | 1.2.6.3.2.4 | Complete integration test case | milestone | 0d | 2015-07-02 09:36 A | 2015-07-02 09:36 A | 207 | 100% | PhuongBB |  |  |

| ID | WBS | Task | Type | Duration | Start | Finish | Predecessors | Complete | Constraint | Resources | Work | Actual work |
| --- | --- | --- | --- | --- | --- | --- | --- | --- | --- | --- | --- | --- |
| 209 | 1.2.6.3.3 | **System test** |  | 3d | 2015-07-02 09:36 A | 2015-07-07 09:36 A |  | 100% |  |  | 24h | 24h |
| 210 | 1.2.6.3.3.1 | Develop system test case |  | 1d | 2015-07-02 09:36 A | 2015-07-03 09:36 A | 208 | 100% |  | PhuongBB | 8h | 8h |
| 211 | 1.2.6.3.3.2 | Review system test case |  | 1d | 2015-07-03 09:36 A | 2015-07-06 09:36 A | 210 | 100% |  | PhuongBB | 8h | 8h |
| 212 | 1.2.6.3.3.3 | Update system test case |  | 1d | 2015-07-06 09:36 A | 2015-07-07 09:36 A | 211 | 100% |  | PhuongBB | 8h | 8h |
| 213 | 1.2.6.3.3.4 | Complete system test case | milestone | 0d | 2015-07-07 09:36 A | 2015-07-07 09:36 A | 212 | 100% |  | PhuongBB |  |  |
| 214 | 1.2.7 | **Progress report 3** |  | 0.5d | 2015-07-07 09:36 A | 2015-07-07 14:36 A |  | 100% |  |  | 4h | 4h |
| 215 | 1.2.7.1 | Develop Progress Report 3 |  | 0.3d | 2015-07-07 09:36 A | 2015-07-07 12:00 A | 189, 203, 208, 213 | 100% |  | NamNT | 2.4h | 2.4h |
| 216 | 1.2.7.2 | Review Progress Report 3 |  | 0.1d | 2015-07-07 13:00 A | 2015-07-07 13:48 A | 215 | 100% |  | AnhTT | 0.8h | 0.8h |
| 217 | 1.2.7.3 | Update Progress Report 3 |  | 0.1d | 2015-07-07 13:48 A | 2015-07-07 14:36 A | 216 | 100% |  | NamNT | 0.8h | 0.8h |
| 218 | 1.2.7.4 | Complete Progress Report 3 | milestone | 0d | 2015-07-07 14:36 A | 2015-07-07 14:36 A | 217 | 100% |  | NamNT |  |  |
| 219 | 1.2.8 | **Report no.3** |  | 5.3d | 2015-07-07 09:36 A | 2015-07-14 12:00 A |  | 100% |  |  | 20h | 20h |
| 220 | 1.2.8.1 | Develop Report no.3 (draft version) |  | 0.2d | 2015-07-07 09:36 A | 2015-07-07 11:12 A | 194, 203, 208, 213 | 100% |  | NamNT | 1.6h | 1.6h |
| 221 | 1.2.8.2 | Review Report no.3 (draft version) |  | 1d | 2015-07-07 11:12 A | 2015-07-08 12:00 A | 220 | 100% |  | AnhTT | 8h | 8h |
| 222 | 1.2.8.3 | Update Report no.3 (draft version) |  | 0.5d | 2015-07-08 13:00 A | 2015-07-08 17:00 A | 221 | 100% |  | NamNT | 4h | 4h |
| 223 | 1.2.8.4 | Submit Report no.3 (first version) | milestone | 0d | 2015-07-08 17:00 A | 2015-07-08 17:00 A | 222 | 100% |  | NamNT |  |  |
| 224 | 1.2.8.5 | Revise after got comments for Report no.3 |  | 0.8d | 2015-07-09 08:00 A | 2015-07-09 15:24 A | 223 | 100% |  | NamNT | 6.4h | 6.4h |
| 225 | 1.2.8.6 | Submit Report no.3 (final version) | milestone | 0d | 2015-07-14 12:00 A | 2015-07-14 12:00 A | 224, 176, 172 | 100% |  | NamNT |  |  |
| 226 | 1.3 | **Construction** |  | 30.7d | 2015-07-14 13:00 A | 2015-08-26 09:36 A |  | 100% |  |  | 482.4h | 482.4h |
| 227 | 1.3.1 | **Code Review checklist** |  | 2.3d | 2015-07-14 13:00 A | 2015-07-16 15:24 A |  | 100% |  |  | 18.4h | 18.4h |
| 228 | 1.3.1.1 | Develop review checklist |  | 1.2d | 2015-07-14 13:00 A | 2015-07-15 14:36 A | 225 | 100% | finish no earlier than 2015-07-10 17:00 | MaiTTT | 9.6h | 9.6h |
| 229 | 1.3.1.2 | Review review checklist |  | 0.6d | 2015-07-15 14:36 A | 2015-07-16 10:24 A | 228 | 100% |  | AnhTT | 4.8h | 4.8h |
| 230 | 1.3.1.3 | Update review checklist |  | 0.5d | 2015-07-16 10:24 A | 2015-07-16 15:24 A | 229 | 100% |  | MaiTTT | 4h | 4h |
| 231 | 1.3.1.4 | Complete review checklist | milestone | 0d | 2015-07-16 15:24 A | 2015-07-16 15:24 A | 230 | 100% |  | MaiTTT |  |  |
| 232 | 1.3.2 | **Coding & Unit testing (continue)** |  | 27.8d | 2015-07-14 13:00 A | 2015-08-21 10:24 A |  | 100% |  |  | 256h | 256h |
| 233 | 1.3.2.1 | **Bus Rider Module** |  | 27.8d | 2015-07-14 13:00 A | 2015-08-21 10:24 A |  | 100% |  |  | 224h | 224h |
| 234 | 1.3.2.1.1 | **Common module** |  | 1d | 2015-08-03 15:24 A | 2015-08-04 15:24 A |  | 100% |  |  | 8h | 8h |
| 235 | 1.3.2.1.1.1 | Change app setting |  | 1d | 2015-08-03 15:24 A | 2015-08-04 15:24 A | 225 | 100% | finish no earlier than 2015-07-08 17:00 | NamNT | 8h | 8h |

| ID | WBS | Task | Duration | Start | Finish | Predecessors | Complete | Resources | Work | Actual work |
| --- | --- | --- | --- | --- | --- | --- | --- | --- | --- | --- |
| 236 | 1.3.2.1.2 | **Account Management module** | 7.2d | 2015-07-23 13:48 A | 2015-08-03 15:24 A |  | 100% |  | 20h | 20h |
| 237 | 1.3.2.1.2.1 | Log in | 0.6d | 2015-07-23 13:48 A | 2015-07-24 09:36 A | 225 | 100% | NamNT | 4.8h | 4.8h |
| 238 | 1.3.2.1.2.2 | Sign up | 0.8d | 2015-07-24 09:36 A | 2015-07-24 17:00 A | 237 | 100% | Nam' | 6.4h | 6.4h |
| 239 | 1.3.2.1.2.3 | Log out | 0.3d | 2015-07-24 09:36 A | 2015-07-24 12:00 A | 237 | 100% | NamNT | 2.4h | 2.4h |
| 240 | 1.3.2.1.2.4 | Change password | 0.4d | 2015-07-28 13:00 A | 2015-07-28 16:12 A | 239 | 100% | NamNT | 3.2h | 3.2h |
| 241 | 1.3.2.1.2.5 | Forgot password | 0.4d | 2015-08-03 11:12 A | 2015-08-03 15:24 A | 240 | 100% | NamNT | 3.2h | 3.2h |
| 242 | 1.3.2.1.3 | **Bus module** | 12.7d | 2015-07-15 14:36 A | 2015-08-03 11:12 A |  | 100% |  | 49.6h | 49.6h |
| 243 | 1.3.2.1.3.1 | View bus list | 0.7d | 2015-07-15 14:36 A | 2015-07-16 16:12 A | 225 | 100% | MaiTTT | 5.6h | 5.6h |
| 244 | 1.3.2.1.3.2 | View bus info | 0.6d | 2015-07-16 16:12 A | 2015-07-17 12:00 A | 243 | 100% | MaiTTT | 4.8h | 4.8h |
| 245 | 1.3.2.1.3.3 | View bus route | 0.8d | 2015-07-17 13:00 A | 2015-07-20 10:24 A | 244 | 100% | MaiTTT | 6.4h | 6.4h |
| 246 | 1.3.2.1.3.4 | View nearest bus | 1.4d | 2015-07-20 10:24 A | 2015-07-21 14:36 A | 245 | 100% | NamNT | 11.2h | 11.2h |
| 247 | 1.3.2.1.3.5 | View bus map | 1.2d | 2015-07-22 11:12 A | 2015-07-23 13:48 A | 246 | 100% | NamNT | 9.6h | 9.6h |
| 248 | 1.3.2.1.3.6 | View bus near me | 1.5d | 2015-07-30 16:12 A | 2015-08-03 11:12 A | 247 | 100% | NamNT | 12h | 12h |
| 249 | 1.3.2.1.4 | **Path Finder module** | 12.4d | 2015-07-14 13:00 A | 2015-07-30 16:12 A |  | 100% |  | 52h | 52h |
| 250 | 1.3.2.1.4.1 | Find path | 2.2d | 2015-07-14 13:00 A | 2015-07-16 14:36 A | 225 | 100% | NamNT | 17.6h | 17.6h |
| 251 | 1.3.2.1.4.2 | View paths found | 1d | 2015-07-16 14:36 A | 2015-07-17 14:36 A | 250 | 100% | NamNT | 8h | 8h |
| 252 | 1.3.2.1.4.3 | View path detail | 1.3d | 2015-07-17 14:36 A | 2015-07-22 11:12 A | 251 | 100% | NamNT | 10.4h | 10.4h |
| 253 | 1.3.2.1.4.4 | View direction | 2d | 2015-07-28 16:12 A | 2015-07-30 16:12 A | 252 | 100% | NamNT | 16h | 16h |
| 254 | 1.3.2.1.5 | **Reminder module** | 6.6d | 2015-07-20 10:24 A | 2015-07-28 16:12 A |  | 100% |  | 41.6h | 41.6h |
| 255 | 1.3.2.1.5.1 | View bus reminder | 2d | 2015-07-20 10:24 A | 2015-07-23 14:36 A | 225 | 100% | MaiTTT | 16h | 16h |
| 256 | 1.3.2.1.5.2 | Add reminder | 0.5d | 2015-07-23 14:36 A | 2015-07-24 09:36 A | 255 | 100% | MaiTTT | 4h | 4h |
| 257 | 1.3.2.1.5.3 | Edit reminder | 0.6d | 2015-07-24 09:36 A | 2015-07-24 15:24 A | 256 | 100% | MaiTTT | 4.8h | 4.8h |
| 258 | 1.3.2.1.5.4 | Delete reminder | 1.1d | 2015-07-24 15:24 A | 2015-07-27 16:12 A | 257 | 100% | MaiTTT | 8.8h | 8.8h |
| 259 | 1.3.2.1.5.5 | Suspend/Unsuspend a chosen reminder | 1d | 2015-07-27 16:12 A | 2015-07-28 16:12 A | 258 | 100% | MaiTTT | 8h | 8h |

| ID | WBS | Task | Type | Duration | Start | Finish | Predecessors | Complete | Constraint | Resources | Work | Actual work |
| --- | --- | --- | --- | --- | --- | --- | --- | --- | --- | --- | --- | --- |
| 260 | 1.3.2.1.6 | **Track module** |  | 11.8d | 2015-07-24 13:00 A | 2015-08-11 10:24 A |  | 100% |  |  | 20h | 20h |
| 261 | 1.3.2.1.6.1 | Tracking |  | 2d | 2015-07-24 13:00 A | 2015-07-28 12:00 A | 225 | 100% |  | NamNT | 16h | 16h |
| 262 | 1.3.2.1.6.2 | Cancel track |  | 0.5d | 2015-08-10 15:24 A | 2015-08-11 10:24 A | 261 | 100% | start no earlier than 2015-07-27 08:00 | NamNT | 4h | 4h |
| 263 | 1.3.2.1.7 | **Favorite module** |  | 8d | 2015-08-11 10:24 A | 2015-08-21 10:24 A |  | 100% |  |  | 32.8h | 32.8h |
| 264 | 1.3.2.1.7.1 | View favorite places |  | 0.5d | 2015-08-11 10:24 A | 2015-08-11 15:24 A | 262 | 100% |  | MaiTTT | 4h | 4h |
| 265 | 1.3.2.1.7.2 | Add favorite places |  | 0.5d | 2015-08-11 15:24 A | 2015-08-13 10:24 A | 264 | 100% |  | MaiTTT | 4h | 4h |
| 266 | 1.3.2.1.7.3 | Edit favorite places |  | 0.7d | 2015-08-13 10:24 A | 2015-08-14 12:00 A | 265 | 100% |  | MaiTTT | 5.6h | 5.6h |
| 267 | 1.3.2.1.7.4 | Delete favorite places |  | 0.3d | 2015-08-14 13:00 A | 2015-08-14 15:24 A | 266 | 100% |  | MaiTTT | 2.4h | 2.4h |
| 268 | 1.3.2.1.7.5 | Search favorite places |  | 0.4d | 2015-08-14 15:24 A | 2015-08-17 14:36 A | 267 | 100% |  | MaiTTT | 3.2h | 3.2h |
| 269 | 1.3.2.1.7.6 | View favorite buses |  | 0.5d | 2015-08-17 14:36 A | 2015-08-18 16:12 A | 268 | 100% |  | MaiTTT | 4h | 4h |
| 270 | 1.3.2.1.7.7 | Add favorite buses |  | 0.5d | 2015-08-18 16:12 A | 2015-08-19 17:00 A | 269 | 100% |  | MaiTTT | 4h | 4h |
| 271 | 1.3.2.1.7.8 | Delete favorite buses |  | 0.3d | 2015-08-20 08:00 A | 2015-08-20 16:12 A | 270 | 100% |  | MaiTTT | 2.4h | 2.4h |
| 272 | 1.3.2.1.7.9 | Search favorite buses |  | 0.4d | 2015-08-20 16:12 A | 2015-08-21 10:24 A | 271 | 100% |  | MaiTTT | 3.2h | 3.2h |
| 273 | 1.3.2.2 | Web service |  | 4d | 2015-08-04 15:24 A | 2015-08-10 15:24 A | 225 | 100% |  | NamNT | 32h | 32h |
| 274 | 1.3.2.3 | Complete coding | milestone | 0d | 2015-08-11 10:24 A | 2015-08-11 10:24 A | 273, 176, 235, 241, 253, 259, 262 | 100% | start no earlier than 2015-07-29 08:00 | NamNT; MaiTTT |  |  |
| 275 | 1.3.3 | **Progress report 4** |  | 0.5d | 2015-08-11 10:24 A | 2015-08-11 15:24 A |  | 100% |  |  | 4h | 4h |
| 276 | 1.3.3.1 | Develop Progress Report 4 |  | 0.3d | 2015-08-11 10:24 A | 2015-08-11 13:48 A | 231, 274 | 100% |  | NamNT | 2.4h | 2.4h |
| 277 | 1.3.3.2 | Review Progress Report 4 |  | 0.1d | 2015-08-11 13:48 A | 2015-08-11 14:36 A | 276 | 100% |  | MaiTTT | 0.8h | 0.8h |
| 278 | 1.3.3.3 | Update Progress Report 4 |  | 0.1d | 2015-08-11 14:36 A | 2015-08-11 15:24 A | 277 | 100% |  | NamNT | 0.8h | 0.8h |
| 279 | 1.3.3.4 | Complete Progress Report 4 | milestone | 0d | 2015-08-11 15:24 A | 2015-08-11 15:24 A | 278 | 100% |  | NamNT |  |  |
| 280 | 1.3.4 | **Report no.4** |  | 4.2d | 2015-08-11 13:48 A | 2015-08-17 15:24 A |  | 100% |  |  | 32h | 32h |
| 281 | 1.3.4.1 | Develop Report no.4 (draft version) |  | 1d | 2015-08-11 13:48 A | 2015-08-12 15:24 A | 231, 274, 276 | 100% |  | PhuongBB | 8h | 8h |
| 282 | 1.3.4.2 | Review Report no.4 (draft version) |  | 1d | 2015-08-12 15:24 A | 2015-08-13 15:24 A | 281 | 100% |  | AnhTT | 8h | 8h |
| 283 | 1.3.4.3 | Update Report no.4 (draft version) |  | 1d | 2015-08-13 15:24 A | 2015-08-14 15:24 A | 282 | 100% |  | PhuongBB; AnhTT | 8h | 8h |
| 284 | 1.3.4.4 | Submit Report no.4 (first version) | milestone | 0d | 2015-08-14 15:24 A | 2015-08-14 15:24 A | 283 | 100% |  | NamNT |  |  |
| 285 | 1.3.4.5 | Revise after got comments for Report no.4 |  | 1d | 2015-08-14 15:24 A | 2015-08-17 15:24 A | 284 | 100% |  | AnhTT; PhuongBB | 8h | 8h |
| 286 | 1.3.4.6 | Submit Report no.4 (final version) | milestone | 0d | 2015-08-17 15:24 A | 2015-08-17 15:24 A | 285 | 100% |  | NamNT |  |  |

| ID | WBS | Task | Type | Duration | Start | Finish | Predecessors | Complete | Constraint | Resources | Work | Actual work |
| --- | --- | --- | --- | --- | --- | --- | --- | --- | --- | --- | --- | --- |
| 287 | 1.3.5 | **Testing** |  | 29d | 2015-07-14 13:00 A | 2015-08-24 12:00 A |  | 100% |  |  | 158.4h | 158.4h |
| 288 | 1.3.5.1 | **Execute test & fix bugs** |  | 28.2d | 2015-07-14 13:00 A | 2015-08-21 14:36 A |  | 100% |  |  | 152h | 152h |
| 289 | 1.3.5.1.1 | **Round 1** |  | 25.2d | 2015-07-14 13:00 A | 2015-08-18 14:36 A |  | 100% |  |  | 84.8h | 84.8h |
| 290 | 1.3.5.1.1.1 | **Execute unit test** |  | 25.2d | 2015-07-14 13:00 A | 2015-08-18 14:36 A |  | 100% |  |  | 36h | 36h |
| 291 | 1.3.5.1.1.1.1 | Bus driver module |  | 0.7d | 2015-07-14 13:00 A | 2015-07-15 09:36 A | 176, 203, 225 | 100% |  | AnhTT | 5.6h | 5.6h |
| 292 | 1.3.5.1.1.1.2 | Common module |  | 0.3d | 2015-08-04 15:24 A | 2015-08-05 08:48 A | 203, 235 | 100% | start no earlier than 2015-07-16 08:00 | AnhTT | 2.4h | 2.4h |
| 293 | 1.3.5.1.1.1.3 | Account Management module |  | 0.4d | 2015-08-03 15:24 A | 2015-08-04 09:36 A | 203, 241 | 100% | start no earlier than 2015-07-20 08:00 | AnhTT | 3.2h | 3.2h |
| 294 | 1.3.5.1.1.1.4 | Bus module |  | 0.6d | 2015-08-03 11:12 A | 2015-08-03 17:00 A | 203, 248 | 100% | start no earlier than 2015-07-21 08:00 | AnhTT | 4.8h | 4.8h |
| 295 | 1.3.5.1.1.1.5 | Path Finder module |  | 0.6d | 2015-07-30 16:12 A | 2015-07-31 12:00 A | 203, 253 | 100% | start no earlier than 2015-07-20 08:00 | AnhTT | 4.8h | 4.8h |
| 296 | 1.3.5.1.1.1.6 | Reminder module |  | 0.5d | 2015-07-28 16:12 A | 2015-07-29 11:12 A | 203, 259 | 100% | start no earlier than 2015-07-15 08:00 | AnhTT | 4h | 4h |
| 297 | 1.3.5.1.1.1.7 | Track module |  | 1d | 2015-08-11 10:24 A | 2015-08-12 10:24 A | 203, 262 | 100% | finish no earlier than 2015-07-21 17:00 | AnhTT | 8h | 8h |
| 298 | 1.3.5.1.1.1.8 | Favorite module |  | 0.4d | 2015-08-12 10:24 A | 2015-08-18 14:36 A | 203, 297 | 100% | start no earlier than 2015-08-03 08:00 | AnhTT | 3.2h | 3.2h |
| 299 | 1.3.5.1.1.2 | Fix bugs unit test |  | 2d | 2015-08-05 08:48 A | 2015-08-07 08:48 A | 291, 292, 293, 294, 295, 296 | 100% |  | NamNT; MaiTTT | 16h | 16h |
| 300 | 1.3.5.1.1.3 | Execute integration test |  | 0.6d | 2015-08-11 10:24 A | 2015-08-11 16:12 A | 299, 274 | 100% |  | PhuongBB | 4.8h | 4.8h |
| 301 | 1.3.5.1.1.4 | Fix bugs integration test |  | 1d | 2015-08-11 16:12 A | 2015-08-12 16:12 A | 300 | 100% |  | NamNT; MaiTTT | 16h | 16h |
| 302 | 1.3.5.1.1.5 | Execute system test |  | 0.5d | 2015-08-12 16:12 A | 2015-08-13 11:12 A | 301 | 100% |  | PhuongBB | 4h | 4h |
| 303 | 1.3.5.1.1.6 | Fix bugs system test |  | 0.5d | 2015-08-13 11:12 A | 2015-08-13 16:12 A | 302 | 100% |  | NamNT; MaiTTT | 8h | 8h |
| 304 | 1.3.5.1.2 | **Round 2** |  | 4.8d | 2015-08-13 16:12 A | 2015-08-20 14:36 A |  | 100% |  |  | 59.2h | 59.2h |
| 305 | 1.3.5.1.2.1 | **Execute unit test** |  | 2.8d | 2015-08-13 16:12 A | 2015-08-18 14:36 A |  | 100% |  |  | 22.4h | 22.4h |
| 306 | 1.3.5.1.2.1.1 | Bus driver module |  | 0.4d | 2015-08-14 13:00 A | 2015-08-14 16:12 A | 303 | 100% |  | AnhTT | 3.2h | 3.2h |
| 307 | 1.3.5.1.2.1.2 | Common module |  | 0.2d | 2015-08-17 13:48 A | 2015-08-17 15:24 A | 303 | 100% |  | AnhTT | 1.6h | 1.6h |
| 308 | 1.3.5.1.2.1.3 | Account Management module |  | 0.1d | 2015-08-17 15:24 A | 2015-08-17 16:12 A | 303 | 100% |  | AnhTT | 0.8h | 0.8h |
| 309 | 1.3.5.1.2.1.4 | Bus module |  | 0.4d | 2015-08-14 16:12 A | 2015-08-17 10:24 A | 303 | 100% |  | AnhTT | 3.2h | 3.2h |
| 310 | 1.3.5.1.2.1.5 | Path Finder module |  | 0.6d | 2015-08-13 16:12 A | 2015-08-14 12:00 A | 303 | 100% |  | AnhTT | 4.8h | 4.8h |
| 311 | 1.3.5.1.2.1.6 | Reminder module |  | 0.3d | 2015-08-18 11:12 A | 2015-08-18 14:36 A | 303 | 100% |  | AnhTT | 2.4h | 2.4h |
| 312 | 1.3.5.1.2.1.7 | Track module |  | 0.5d | 2015-08-17 16:12 A | 2015-08-18 11:12 A | 303 | 100% |  | AnhTT | 4h | 4h |
| 313 | 1.3.5.1.2.1.8 | Favorite module |  | 0.3d | 2015-08-17 10:24 A | 2015-08-17 13:48 A | 303 | 100% |  | AnhTT | 2.4h | 2.4h |
| 314 | 1.3.5.1.2.2 | Fix bugs unit test |  | 0.5d | 2015-08-17 16:12 A | 2015-08-18 11:12 A | 306, 307, 308, 309, 310, 313 | 100% |  | NamNT; MaiTTT | 8h | 8h |
| 315 | 1.3.5.1.2.3 | Execute integration test |  | 0.5d | 2015-08-18 11:12 A | 2015-08-18 16:12 A | 314 | 100% |  | PhuongBB | 4h | 4h |
| 316 | 1.3.5.1.2.4 | Fix bugs integration test |  | 0.7d | 2015-08-18 16:12 A | 2015-08-19 13:48 A | 315 | 100% |  | NamNT; MaiTTT | 11.2h | 11.2h |
| 317 | 1.3.5.1.2.5 | Execute system test |  | 0.5d | 2015-08-19 13:48 A | 2015-08-20 08:48 A | 316 | 100% |  | PhuongBB | 4h | 4h |
| 318 | 1.3.5.1.2.6 | Fix bugs system test |  | 0.6d | 2015-08-20 08:48 A | 2015-08-20 14:36 A | 317 | 100% |  | NamNT; MaiTTT | 9.6h | 9.6h |
| 319 | 1.3.5.1.3 | Execute acceptance test & collect data |  | 1d | 2015-08-20 14:36 A | 2015-08-21 14:36 A | 318 | 100% |  | PhuongBB | 8h | 8h |
| 320 | 1.3.5.2 | Complete execute test | milestone | 0d | 2015-08-21 14:36 A | 2015-08-21 14:36 A | 319 | 100% |  | NamNT |  |  |

| ID | WBS | Task | Type | Duration | Start | Finish | Predecessors | Complete | Resources | Work | Actual work |
| --- | --- | --- | --- | --- | --- | --- | --- | --- | --- | --- | --- |
| 321 | 1.3.5.3 | **Test Report** |  | 0.8d | 2015-08-21 14:36 A | 2015-08-24 12:00 A |  | 100% |  | 6.4h | 6.4h |
| 322 | 1.3.5.3.1 | Develop test report |  | 0.4d | 2015-08-21 14:36 A | 2015-08-24 08:48 A | 320 | 100% | PhuongBB | 3.2h | 3.2h |
| 323 | 1.3.5.3.2 | Review test report |  | 0.2d | 2015-08-24 08:48 A | 2015-08-24 10:24 A | 322 | 100% | NamNT | 1.6h | 1.6h |
| 324 | 1.3.5.3.3 | Update test report |  | 0.2d | 2015-08-24 10:24 A | 2015-08-24 12:00 A | 323 | 100% | PhuongBB | 1.6h | 1.6h |
| 325 | 1.3.5.3.4 | Complete test report | milestone | 0d | 2015-08-24 12:00 A | 2015-08-24 12:00 A | 324 | 100% | PhuongBB |  |  |
| 326 | 1.3.6 | **Quality report** |  | 0.7d | 2015-08-24 13:00 A | 2015-08-25 09:36 A |  | 100% |  | 5.6h | 5.6h |
| 327 | 1.3.6.1 | Develop quality report |  | 0.3d | 2015-08-24 13:00 A | 2015-08-24 15:24 A | 325 | 100% | NamNT | 2.4h | 2.4h |
| 328 | 1.3.6.2 | Review quality report |  | 0.2d | 2015-08-24 15:24 A | 2015-08-24 17:00 A | 327 | 100% | PhuongBB | 1.6h | 1.6h |
| 329 | 1.3.6.3 | Update quality report |  | 0.2d | 2015-08-25 08:00 A | 2015-08-25 09:36 A | 328 | 100% | NamNT | 1.6h | 1.6h |
| 330 | 1.3.6.4 | Complete quality report | milestone | 0d | 2015-08-25 09:36 A | 2015-08-25 09:36 A | 329 | 100% | NamNT |  |  |
| 331 | 1.3.7 | **Progress report 5** |  | 0.5d | 2015-08-25 09:36 A | 2015-08-25 14:36 A |  | 100% |  | 4h | 4h |
| 332 | 1.3.7.1 | Develop Progress Report 5 |  | 0.3d | 2015-08-25 09:36 A | 2015-08-25 12:00 A | 330, 273 | 100% | NamNT | 2.4h | 2.4h |
| 333 | 1.3.7.2 | Review Progress Report 5 |  | 0.1d | 2015-08-25 13:00 A | 2015-08-25 13:48 A | 332 | 100% | NamNT | 0.8h | 0.8h |
| 334 | 1.3.7.3 | Update Progress Report 5 |  | 0.1d | 2015-08-25 13:48 A | 2015-08-25 14:36 A | 333 | 100% | NamNT | 0.8h | 0.8h |
| 335 | 1.3.7.4 | Complete Progress Report 5 | milestone | 0d | 2015-08-25 14:36 A | 2015-08-25 14:36 A | 334 | 100% | NamNT |  |  |
| 336 | 1.3.8 | **Report no.5** |  | 0.5d | 2015-08-25 14:36 A | 2015-08-26 09:36 A |  | 100% |  | 4h | 4h |
| 337 | 1.3.8.1 | Develop Report no.5 (draft version) |  | 0.1d | 2015-08-25 14:36 A | 2015-08-25 15:24 A | 325, 330, 335 | 100% | NamNT | 0.8h | 0.8h |
| 338 | 1.3.8.2 | Review Report no.5 (draft version) |  | 0.2d | 2015-08-25 15:24 A | 2015-08-25 17:00 A | 337 | 100% | NamNT | 1.6h | 1.6h |
| 339 | 1.3.8.3 | Update Report no.5 (draft version) |  | 0.1d | 2015-08-26 08:00 A | 2015-08-26 08:48 A | 338 | 100% | PhuongBB | 0.8h | 0.8h |
| 340 | 1.3.8.4 | Submit Report no.5 (first version) | milestone | 0d | 2015-08-26 08:48 A | 2015-08-26 08:48 A | 339 | 100% | NamNT |  |  |
| 341 | 1.3.8.5 | Revise after got comments for Report no.5 |  | 0.1d | 2015-08-26 08:48 A | 2015-08-26 09:36 A | 340 | 100% | PhuongBB | 0.8h | 0.8h |
| 342 | 1.3.8.6 | Submit Report no.5 (final version) | milestone | 0d | 2015-08-26 09:36 A | 2015-08-26 09:36 A | 341 | 100% | NamNT |  |  |
| 343 | 1.4 | **Termination** |  | 7.8d | 2015-08-26 09:36 A | 2015-09-04 17:00 A |  | 100% |  | 86.4h | 86.4h |
| 344 | 1.4.1 | **Report no.6** |  | 6.8d | 2015-08-26 09:36 A | 2015-09-03 17:00 A |  | 100% |  | 54.4h | 54.4h |
| 345 | 1.4.1.1 | Complete source code & final report |  | 2.5d | 2015-08-26 09:36 A | 2015-08-28 14:36 A | 342 | 100% | MaiTTT | 20h | 20h |
| 346 | 1.4.1.2 | Develop installation guide |  | 0.2d | 2015-08-28 14:36 A | 2015-08-28 16:12 A | 345 | 100% | AnhTT | 1.6h | 1.6h |
| 347 | 1.4.1.3 | Develop user guideline |  | 0.8d | 2015-08-28 16:12 A | 2015-08-31 14:36 A | 346 | 100% | AnhTT | 6.4h | 6.4h |
| 348 | 1.4.1.4 | Complete Project Result Assessment |  | 0.5d | 2015-08-31 14:36 A | 2015-09-01 09:36 A | 347 | 100% | PhuongBB | 4h | 4h |
| 349 | 1.4.1.5 | Conduct lessons learned |  | 0.4d | 2015-09-01 09:36 A | 2015-09-01 13:48 A | 348 | 100% | PhuongBB | 3.2h | 3.2h |
| 350 | 1.4.1.6 | Complete Presentation slide |  | 1d | 2015-09-01 13:48 A | 2015-09-02 13:48 A | 349 | 100% | NamNT | 8h | 8h |
| 351 | 1.4.1.7 | Review Report no.6 (draft version) |  | 0.7d | 2015-09-02 13:48 A | 2015-09-03 10:24 A | 350 | 100% | NamNT | 5.6h | 5.6h |
| 352 | 1.4.1.8 | Update Report no.6 (draft version) |  | 0.5d | 2015-09-03 10:24 A | 2015-09-03 15:24 A | 351 | 100% | NamNT | 4h | 4h |
| 353 | 1.4.1.9 | Submit Report no.6 (first version) | milestone | 0d | 2015-09-03 15:24 A | 2015-09-03 15:24 A | 352 | 100% | NamNT |  |  |
| 354 | 1.4.1.10 | Revise after got comments for Report no.6 |  | 0.2d | 2015-09-03 15:24 A | 2015-09-03 17:00 A | 353 | 100% | NamNT | 1.6h | 1.6h |
| 355 | 1.4.1.11 | Submit Report no.6 (final version) | milestone | 0d | 2015-09-03 17:00 A | 2015-09-03 17:00 A | 354 | 100% | NamNT |  |  |
| 356 | 1.4.1.12 | Submit Final report & CD source code | milestone | 0d | 2015-09-03 17:00 A | 2015-09-03 17:00 A | 355 | 100% | NamNT |  |  |

| ID | WBS | Task | Duration | Start | Finish | Predecessors | Complete | Resources | Work | Actual work |
| --- | --- | --- | --- | --- | --- | --- | --- | --- | --- | --- |
| 357 | 1.4.2 | **Pre-closing** | 0.5d | 2015-09-04 08:00 A | 2015-09-04 12:00 A |  | 100% |  | 16h | 16h |
| 358 | 1.4.2.1 | Training presentation | 0.5d | 2015-09-04 08:00 A | 2015-09-04 12:00 A | 356 | 100% | NamNT; MaiTTT; AnhTT; PhuongBB | 16h | 16h |
| 359 | 1.4.3 | **Closing** | 0.5d | 2015-09-04 13:00 A | 2015-09-04 17:00 A |  | 100% |  | 16h | 16h |
| 360 | 1.4.3.1 | Present Capstone Project & Completed | 0.5d | 2015-09-04 13:00 A | 2015-09-04 17:00 A | 358 | 100% | NamNT; MaiTTT; AnhTT; PhuongBB | 16h | 16h |
