Schedule from MS Project, 2015-05-11 to 2015-08-28.

## Calendars

- Standard: Mon-Fri 08:00-12:00, 13:00-17:00; Sat-Sun off.

## Resources

| Resource |
| --- |
| NamNT |
| CuongNLT |
| MaiTTT |
| PhuongBB |
| AnhTT |
| SangNV |

## Schedule

| ID | WBS | Task | Type | Duration | Start | Finish | Predecessors | Total slack | Free slack | Resources | Work |
| --- | --- | --- | --- | --- | --- | --- | --- | --- | --- | --- | --- |
| 1 | 1 | **BL** |  | 79.5d | 2015-05-11 08:00 | 2015-08-28 12:00 |  | 0d |  |  | 2396.8h |
| 2 | 1.1 | **Initiation** |  | 8.5d | 2015-05-11 08:00 | 2015-05-21 12:00 |  | 0d |  |  | 288.8h |
| 3 | 1.1.1 | System feasible study |  | 0.2d | 2015-05-11 08:00 | 2015-05-11 09:36 |  | 0d |  | AnhTT; CuongNLT; MaiTTT; NamNT; PhuongBB; SangNV | 9.6h |
| 4 | 1.1.2 | Define business situation |  | 0.3d | 2015-05-11 09:36 | 2015-05-11 12:00 | 3 | 0d |  | CuongNLT; NamNT; AnhTT; MaiTTT; PhuongBB | 12h |
| 5 | 1.1.3 | Develop project idea |  | 1d | 2015-05-11 13:00 | 2015-05-12 12:00 | 4 | 0d |  | CuongNLT; MaiTTT; NamNT; AnhTT; PhuongBB | 40h |
| 6 | 1.1.4 | Define project and system scope |  | 0.2d | 2015-05-12 13:00 | 2015-05-12 14:36 | 5 | 0d |  | CuongNLT; MaiTTT; NamNT; AnhTT; PhuongBB | 8h |
| 7 | 1.1.5 | Prepare project |  | 0.5d | 2015-05-12 14:36 | 2015-05-13 09:36 | 6 | 0d |  | AnhTT; CuongNLT; MaiTTT; NamNT; PhuongBB | 20h |
| 8 | 1.1.6 | Kick-off meeting | milestone | 0.2d | 2015-05-13 09:36 | 2015-05-13 11:12 | 7 | 0d |  | AnhTT; CuongNLT; MaiTTT; NamNT; PhuongBB; SangNV | 9.6h |
| 9 | 1.1.7 | Q & A Management |  | 0.5d | 2015-05-13 11:12 | 2015-05-13 16:12 | 8 | 0d |  | MaiTTT; NamNT | 8h |
| 10 | 1.1.8 | **Technologies** |  | 5d | 2015-05-13 16:12 | 2015-05-20 16:12 |  | 0.2d |  |  | 50.4h |
| 11 | 1.1.8.1 | Research development technologies |  | 1.2d | 2015-05-13 16:12 | 2015-05-15 08:48 | 9 | 0.2d | 0d | AnhTT; MaiTTT; CuongNLT | 18.4h |
| 12 | 1.1.8.2 | Install and configure Eclipse IDE and Android SDK |  | 0.5d | 2015-05-15 08:48 | 2015-05-15 13:48 | 11 | 0.2d | 0d | AnhTT | 4h |
| 13 | 1.1.8.3 | Training Java, Android SDK & Eclipse IDE |  | 2d | 2015-05-15 13:48 | 2015-05-20 16:12 | 12 | 0.2d |  | AnhTT | 16h |
| 14 | 1.1.8.4 | Install and configure Visual Studio, SQL Server |  | 0.5d | 2015-05-15 15:24 | 2015-05-18 10:24 | 11 | 1.5d | 0d | MaiTTT | 4h |
| 15 | 1.1.8.5 | Study web service using .NET & SQL Server |  | 1d | 2015-05-18 10:24 | 2015-05-19 13:48 | 14 | 1.5d |  | MaiTTT | 8h |
| 16 | 1.1.9 | **SRS/PP/Concept design Review checklist** |  | 3.7d | 2015-05-13 16:12 | 2015-05-19 13:48 |  | 0.3d |  |  | 16h |
| 17 | 1.1.9.1 | Develop review checklist |  | 1.5d | 2015-05-13 16:12 | 2015-05-18 11:12 | 9 | 0.3d | 0d | MaiTTT; PhuongBB | 12h |
| 18 | 1.1.9.2 | Review review checklist |  | 0.1d | 2015-05-18 11:12 | 2015-05-18 12:00 | 17 | 0.3d | 0d | MaiTTT; PhuongBB | 1.6h |
| 19 | 1.1.9.3 | Update review checklist |  | 0.3d | 2015-05-18 13:00 | 2015-05-19 13:48 | 18 | 0.3d | 0d | MaiTTT; PhuongBB | 2.4h |
| 20 | 1.1.9.4 | Complete review checklist | milestone | 0d | 2015-05-19 13:48 | 2015-05-19 13:48 | 19 | 0.3d | 0d | MaiTTT; PhuongBB |  |
| 21 | 1.1.10 | **Requirements** |  | 5.2d | 2015-05-13 16:12 | 2015-05-21 08:48 |  | 0d |  |  | 60h |
| 22 | 1.1.10.1 | **User Requirements Specification** |  | 4d | 2015-05-13 16:12 | 2015-05-19 16:12 |  | 0d |  |  | 55.2h |
| 23 | 1.1.10.1.1 | Collect business requirements and processes |  | 1d | 2015-05-13 16:12 | 2015-05-14 16:12 | 9 | 0d |  | CuongNLT; PhuongBB | 16h |
| 24 | 1.1.10.1.2 | Create draft requirements |  | 1d | 2015-05-14 16:12 | 2015-05-15 16:12 | 23 | 0d |  | CuongNLT; PhuongBB | 10.4h |
| 25 | 1.1.10.1.3 | Complete draft requirements | milestone | 0.5d | 2015-05-15 16:12 | 2015-05-18 11:12 | 24 | 0d |  | CuongNLT; PhuongBB; NamNT | 8h |
| 26 | 1.1.10.1.4 | Develop main function and processes |  | 1.3d | 2015-05-18 11:12 | 2015-05-19 16:12 | 25 | 0d |  | CuongNLT; MaiTTT; PhuongBB; AnhTT | 20.8h |
| 27 | 1.1.10.2 | Review User Requirement Specification with checklist |  | 0.2d | 2015-05-19 16:12 | 2015-05-20 08:48 | 26, 20 | 0d |  | NamNT; MaiTTT; PhuongBB | 2.4h |
| 28 | 1.1.10.3 | Update User Requirement Specification |  | 0.3d | 2015-05-20 08:48 | 2015-05-21 08:48 | 27 | 0d |  | CuongNLT; MaiTTT; PhuongBB; AnhTT; NamNT | 2.4h |
| 29 | 1.1.10.4 | Complete User Requirement Specification | milestone | 0d | 2015-05-21 08:48 | 2015-05-21 08:48 | 28 | 0d |  | NamNT |  |

| ID | WBS | Task | Type | Duration | Start | Finish | Predecessors | Total slack | Free slack | Resources | Work |
| --- | --- | --- | --- | --- | --- | --- | --- | --- | --- | --- | --- |
| 30 | 1.1.11 | **Concept design** |  | 2.2d | 2015-05-18 11:12 | 2015-05-20 13:48 |  | 0.5d |  |  | 16h |
| 31 | 1.1.11.1 | Create draft concept design |  | 1d | 2015-05-18 11:12 | 2015-05-19 11:12 | 25 | 0.7d | 0.2d | CuongNLT | 8h |
| 32 | 1.1.11.2 | Review concept design with checklist |  | 0.5d | 2015-05-19 13:48 | 2015-05-20 08:48 | 31, 20 | 0.5d | 0d | MaiTTT | 4h |
| 33 | 1.1.11.3 | Update concept design |  | 0.5d | 2015-05-20 08:48 | 2015-05-20 13:48 | 32 | 0.5d | 0d | CuongNLT | 4h |
| 34 | 1.1.11.4 | Complete concept design | milestone | 0d | 2015-05-20 13:48 | 2015-05-20 13:48 | 33 | 0.5d |  | CuongNLT |  |
| 35 | 1.1.12 | **Project plan** |  | 4.5d | 2015-05-13 16:12 | 2015-05-20 11:12 |  | 0.1d |  |  | 28h |
| 36 | 1.1.12.1 | Develop project definition |  | 0.5d | 2015-05-13 16:12 | 2015-05-14 11:12 | 8 | 0.1d | 0d | NamNT | 4h |
| 37 | 1.1.12.2 | Develop Work Breakdown Structure |  | 0.7d | 2015-05-14 11:12 | 2015-05-15 08:48 | 36 | 0.1d | 0d | NamNT | 5.6h |
| 38 | 1.1.12.3 | Create Project Schedule |  | 0.7d | 2015-05-15 08:48 | 2015-05-15 15:24 | 37 | 0.1d | 0d | NamNT | 5.6h |
| 39 | 1.1.12.4 | Create Configuration Management Plan version 1.0 |  | 0.3d | 2015-05-15 15:24 | 2015-05-18 13:48 | 38 | 0.4d | 0d | NamNT | 2.4h |
| 40 | 1.1.12.5 | Create Project Plan (first version) |  | 1d | 2015-05-18 13:48 | 2015-05-19 13:48 | 39 | 0.4d | 0d | NamNT | 8h |
| 41 | 1.1.12.6 | Review Project Plan (first version) |  | 0.3d | 2015-05-20 08:48 | 2015-05-20 11:12 | 40 | 0.7d | 0d | MaiTTT | 2.4h |
| 42 | 1.1.12.7 | Complete Project Plan (final version) | milestone | 0d | 2015-05-20 11:12 | 2015-05-20 11:12 | 41 | 0.7d |  | NamNT |  |
| 43 | 1.1.13 | **Progress Report 1** |  | 0.7d | 2015-05-19 13:48 | 2015-05-20 10:24 |  | 0.1d |  |  | 4h |
| 44 | 1.1.13.1 | Develop Progress Report 1 |  | 0.3d | 2015-05-19 13:48 | 2015-05-19 16:12 | 38 | 0.1d | 0d | NamNT | 2.4h |
| 45 | 1.1.13.2 | Review Progress Report 1 |  | 0.1d | 2015-05-20 08:48 | 2015-05-20 09:36 | 44 | 0.8d | 0d | MaiTTT | 0.8h |
| 46 | 1.1.13.3 | Update Progress Report 1 |  | 0.1d | 2015-05-20 09:36 | 2015-05-20 10:24 | 45 | 0.8d | 0d | NamNT | 0.8h |
| 47 | 1.1.13.4 | Complete Progress Report 1 | milestone | 0d | 2015-05-20 10:24 | 2015-05-20 10:24 | 46 | 0.8d |  | NamNT |  |
| 48 | 1.1.14 | Review Report no.1 (draft version) |  | 0.2d | 2015-05-21 08:48 | 2015-05-21 10:24 | 13, 15, 29, 34, 42, 47, 20 | 0d |  | CuongNLT; MaiTTT | 3.2h |
| 49 | 1.1.15 | Update Report no.1 (draft version) |  | 0.1d | 2015-05-21 10:24 | 2015-05-21 11:12 | 48 | 0d |  | CuongNLT; MaiTTT; NamNT | 2.4h |
| 50 | 1.1.16 | Submit Report no.1 (first version) | milestone | 0d | 2015-05-21 11:12 | 2015-05-21 11:12 | 49 | 0d |  | NamNT |  |
| 51 | 1.1.17 | Revise after got comments for Report no.1 |  | 0.1d | 2015-05-21 11:12 | 2015-05-21 12:00 | 50 | 0d |  | CuongNLT; NamNT | 1.6h |
| 52 | 1.1.18 | Submit Report no.1 (final version) | milestone | 0d | 2015-05-21 12:00 | 2015-05-21 12:00 | 51 | 0d |  | NamNT |  |
| 53 | 1.2 | **Solution** |  | 35.9d | 2015-05-21 13:00 | 2015-07-10 11:12 |  | 0d |  |  | 565.6h |
| 54 | 1.2.1 | **Requirements** |  | 3.4d | 2015-05-21 13:00 | 2015-05-26 16:12 |  | 0d |  |  | 84.8h |
| 55 | 1.2.1.1 | **Software Requirements Specification** |  | 3.4d | 2015-05-21 13:00 | 2015-05-26 16:12 |  | 0d |  |  | 84.8h |
| 56 | 1.2.1.1.1 | **Functional Requirement Specification** |  | 1.7d | 2015-05-21 13:00 | 2015-05-25 09:36 |  | 0d |  |  | 27.2h |
| 57 | 1.2.1.1.1.1 | **Bus Driver Module** |  | 0.4d | 2015-05-21 13:00 | 2015-05-21 16:12 |  | 0d |  |  | 3.2h |
| 58 | 1.2.1.1.1.1.1 | Send bus info module |  | 0.4d | 2015-05-21 13:00 | 2015-05-21 16:12 | 52 | 0d |  | AnhTT | 3.2h |

| ID | WBS | Task | Duration | Start | Finish | Predecessors | Total slack | Free slack | Resources | Work |
| --- | --- | --- | --- | --- | --- | --- | --- | --- | --- | --- |
| 59 | 1.2.1.1.1.2 | **Bus Rider Module** | 1.3d | 2015-05-21 16:12 | 2015-05-25 09:36 |  | 0d |  |  | 24h |
| 60 | 1.2.1.1.1.2.1 | **Sync module** | 1.3d | 2015-05-21 16:12 | 2015-05-25 09:36 |  | 0.2d |  |  | 6.4h |
| 61 | 1.2.1.1.1.2.1.1 | PhoneNumberSync module | 0.3d | 2015-05-21 16:12 | 2015-05-22 09:36 | 58 | 0.2d | 0d | AnhTT | 2.4h |
| 62 | 1.2.1.1.1.2.1.2 | Connect Facebook module | 0.1d | 2015-05-22 09:36 | 2015-05-22 10:24 | 61 | 0.2d | 0d | AnhTT | 0.8h |
| 63 | 1.2.1.1.1.2.1.3 | Show Favorite place module | 0.1d | 2015-05-22 10:24 | 2015-05-22 11:12 | 62 | 0.2d | 0d | AnhTT | 0.8h |
| 64 | 1.2.1.1.1.2.1.4 | Show Favorite bus module | 0.1d | 2015-05-22 11:12 | 2015-05-22 12:00 | 63 | 0.2d | 0d | AnhTT | 0.8h |
| 65 | 1.2.1.1.1.2.1.5 | Add/remove Favorite place module | 0.1d | 2015-05-25 08:00 | 2015-05-25 08:48 | 64 | 0.2d | 0d | AnhTT | 0.8h |
| 66 | 1.2.1.1.1.2.1.6 | About module | 0.1d | 2015-05-25 08:48 | 2015-05-25 09:36 | 65 | 0.2d |  | AnhTT | 0.8h |
| 67 | 1.2.1.1.1.2.2 | **Bus module** | 0.5d | 2015-05-21 16:12 | 2015-05-22 11:12 |  | 1d |  |  | 8h |
| 68 | 1.2.1.1.1.2.2.1 | Bus list module | 0.1d | 2015-05-21 16:12 | 2015-05-21 17:00 | 58 | 70.1d | 0d | MaiTTT | 0.8h |
| 69 | 1.2.1.1.1.2.2.2 | Bus info module | 0.1d | 2015-05-22 08:00 | 2015-05-22 08:48 | 68 | 70.1d | 0d | MaiTTT | 0.8h |
| 70 | 1.2.1.1.1.2.2.3 | Bus route module | 0.1d | 2015-05-22 08:48 | 2015-05-22 09:36 | 69 | 70.1d | 0d | MaiTTT | 0.8h |
| 71 | 1.2.1.1.1.2.2.4 | Bus nearest module | 0.1d | 2015-05-22 09:36 | 2015-05-22 10:24 | 70 | 70.1d | 0d | MaiTTT | 0.8h |
| 72 | 1.2.1.1.1.2.2.5 | Bus map module | 0.1d | 2015-05-22 10:24 | 2015-05-22 11:12 | 71 | 70.1d |  | MaiTTT | 0.8h |
| 73 | 1.2.1.1.1.2.2.6 | Set/unset favorite bus module | 0.1d | 2015-05-21 16:12 | 2015-05-21 17:00 | 58 | 1d | 0d | CuongNLT | 0.8h |
| 74 | 1.2.1.1.1.2.2.7 | Remind module | 0.1d | 2015-05-22 08:00 | 2015-05-22 08:48 | 73 | 1d | 0d | CuongNLT | 0.8h |
| 75 | 1.2.1.1.1.2.2.8 | Track module | 0.1d | 2015-05-22 08:48 | 2015-05-22 09:36 | 74 | 1d | 0d | CuongNLT | 0.8h |
| 76 | 1.2.1.1.1.2.2.9 | Get notification module | 0.1d | 2015-05-22 09:36 | 2015-05-22 10:24 | 75 | 1d | 0d | CuongNLT | 0.8h |
| 77 | 1.2.1.1.1.2.2.10 | Swap direction module | 0.1d | 2015-05-22 10:24 | 2015-05-22 11:12 | 76 | 1d |  | CuongNLT | 0.8h |
| 78 | 1.2.1.1.1.2.3 | **Shigeki module** | 0.6d | 2015-05-21 16:12 | 2015-05-22 12:00 |  | 0.9d |  |  | 4.8h |
| 79 | 1.2.1.1.1.2.3.1 | Achievement module | 0.1d | 2015-05-21 16:12 | 2015-05-21 17:00 | 58 | 0.9d | 0d | NamNT | 0.8h |
| 80 | 1.2.1.1.1.2.3.2 | Collection module | 0.1d | 2015-05-22 08:00 | 2015-05-22 08:48 | 79 | 0.9d | 0d | NamNT | 0.8h |
| 81 | 1.2.1.1.1.2.3.3 | Mission module | 0.1d | 2015-05-22 08:48 | 2015-05-22 09:36 | 80 | 0.9d | 0d | NamNT | 0.8h |
| 82 | 1.2.1.1.1.2.3.4 | Statistic module | 0.1d | 2015-05-22 09:36 | 2015-05-22 10:24 | 81 | 0.9d | 0d | NamNT | 0.8h |
| 83 | 1.2.1.1.1.2.3.5 | Rank module | 0.1d | 2015-05-22 10:24 | 2015-05-22 11:12 | 82 | 0.9d | 0d | NamNT | 0.8h |
| 84 | 1.2.1.1.1.2.3.6 | Scan QR code module | 0.1d | 2015-05-22 11:12 | 2015-05-22 12:00 | 83 | 0.9d |  | NamNT | 0.8h |

| ID | WBS | Task | Type | Duration | Start | Finish | Predecessors | Total slack | Free slack | Resources | Work |
| --- | --- | --- | --- | --- | --- | --- | --- | --- | --- | --- | --- |
| 85 | 1.2.1.1.1.2.4 | **Search module** |  | 0.4d | 2015-05-21 16:12 | 2015-05-22 10:24 |  | 0d |  |  | 3.2h |
| 86 | 1.2.1.1.1.2.4.1 | Search bus module |  | 0.1d | 2015-05-21 16:12 | 2015-05-21 17:00 | 58 | 0d |  | PhuongBB | 0.8h |
| 87 | 1.2.1.1.1.2.4.2 | Search route module |  | 0.1d | 2015-05-22 08:00 | 2015-05-22 08:48 | 86 | 0d |  | PhuongBB | 0.8h |
| 88 | 1.2.1.1.1.2.4.3 | Search Favorite bus module |  | 0.1d | 2015-05-22 08:48 | 2015-05-22 09:36 | 87 | 0d |  | PhuongBB | 0.8h |
| 89 | 1.2.1.1.1.2.4.4 | Search Favorite place module |  | 0.1d | 2015-05-22 09:36 | 2015-05-22 10:24 | 88 | 0d |  | PhuongBB | 0.8h |
| 90 | 1.2.1.1.1.2.5 | Setting module |  | 0.2d | 2015-05-22 10:24 | 2015-05-22 12:00 | 89 | 0d |  | PhuongBB | 1.6h |
| 91 | 1.2.1.1.2 | **Non-functional Requirement Specification** |  | 0.9d | 2015-05-22 13:00 | 2015-05-25 11:12 |  | 0d |  |  | 21.6h |
| 92 | 1.2.1.1.2.1 | Develop User Interface Requirement |  | 0.5d | 2015-05-22 13:00 | 2015-05-22 17:00 | 90 | 0d |  | NamNT; CuongNLT; AnhTT | 12h |
| 93 | 1.2.1.1.2.2 | Develop Performance Requirement |  | 0.4d | 2015-05-25 08:00 | 2015-05-25 11:12 | 92 | 0d |  | CuongNLT; NamNT; AnhTT | 9.6h |
| 94 | 1.2.1.1.3 | Review Software Requirement Specification with checklist |  | 1d | 2015-05-25 11:12 | 2015-05-26 11:12 | 66, 77, 84, 89, 90, 93 | 0d |  | MaiTTT; PhuongBB | 16h |
| 95 | 1.2.1.1.4 | Update Software Requirement Specification |  | 0.5d | 2015-05-26 11:12 | 2015-05-26 16:12 | 94 | 0d |  | NamNT; CuongNLT; MaiTTT; PhuongBB; AnhTT | 20h |
| 96 | 1.2.1.1.5 | Complete Software Requirement Specification | milestone | 0d | 2015-05-26 16:12 | 2015-05-26 16:12 | 95 | 0d |  | NamNT |  |
| 97 | 1.2.2 | **Design** |  | 32.5d | 2015-05-26 16:12 | 2015-07-10 11:12 |  | 0d |  |  | 191.2h |
| 98 | 1.2.2.1 | **Design Review checklist** |  | 2.4d | 2015-05-26 16:12 | 2015-05-29 10:24 |  | 0d |  |  | 28.8h |
| 99 | 1.2.2.1.1 | Develop review checklist |  | 2.1d | 2015-05-26 16:12 | 2015-05-28 17:00 | 96 | 0d |  | MaiTTT; PhuongBB | 24h |
| 100 | 1.2.2.1.2 | Review review checklist |  | 0.1d | 2015-05-29 08:00 | 2015-05-29 08:48 | 99 | 0d |  | MaiTTT; PhuongBB | 1.6h |
| 101 | 1.2.2.1.3 | Update review checklist |  | 0.2d | 2015-05-29 08:48 | 2015-05-29 10:24 | 100 | 0d |  | MaiTTT; PhuongBB | 3.2h |
| 102 | 1.2.2.1.4 | Complete review checklist | milestone | 0d | 2015-05-29 10:24 | 2015-05-29 10:24 | 101 | 0d |  | MaiTTT; PhuongBB |  |
| 103 | 1.2.2.2 | **Architecture design** |  | 3d | 2015-05-26 16:12 | 2015-05-29 16:12 |  | 0d |  |  | 48h |
| 104 | 1.2.2.2.1 | Define system structure and collect system features |  | 1d | 2015-05-26 16:12 | 2015-05-27 16:12 | 96 | 0.9d | 0d | AnhTT; NamNT; CuongNLT | 24h |
| 105 | 1.2.2.2.2 | Study & choose System Architecture |  | 0.5d | 2015-05-27 16:12 | 2015-05-28 11:12 | 104 | 0.9d |  | AnhTT; NamNT; CuongNLT | 12h |
| 106 | 1.2.2.2.3 | Review Architecture Design with checklist |  | 0.3d | 2015-05-29 10:24 | 2015-05-29 13:48 | 102, 105 | 0d |  | MaiTTT; PhuongBB | 4.8h |
| 107 | 1.2.2.2.4 | Update Architecture Design |  | 0.3d | 2015-05-29 13:48 | 2015-05-29 16:12 | 106 | 0d |  | AnhTT; NamNT; CuongNLT | 7.2h |
| 108 | 1.2.2.2.5 | Complete System Architecture version 1.0 | milestone | 0d | 2015-05-29 16:12 | 2015-05-29 16:12 | 107 | 0d |  | AnhTT; NamNT; CuongNLT |  |

| ID | WBS | Task | Duration | Start | Finish | Predecessors | Total slack | Free slack | Resources | Work |
| --- | --- | --- | --- | --- | --- | --- | --- | --- | --- | --- |
| 109 | 1.2.2.3 | **Detailed design** | 29.5d | 2015-05-29 16:12 | 2015-07-10 11:12 |  | 3.5d |  |  | 77.6h |
| 110 | 1.2.2.3.1 | **User Interface design** | 26.1d | 2015-05-29 16:12 | 2015-07-06 17:00 |  | 3.5d |  |  | 48h |
| 111 | 1.2.2.3.1.1 | **Bus Driver Module** | 1.3d | 2015-05-29 16:12 | 2015-06-02 09:36 |  | 35.8d |  |  | 3.2h |
| 112 | 1.2.2.3.1.1.1 | Send bus info module | 0.4d | 2015-05-29 16:12 | 2015-06-02 09:36 | 108 | 35.8d | 0d | AnhTT | 3.2h |
| 113 | 1.2.2.3.1.2 | **Bus Rider Module** | 26.1d | 2015-05-29 16:12 | 2015-07-06 17:00 |  | 3.5d |  |  | 44.8h |
| 114 | 1.2.2.3.1.2.1 | **Sync module** | 24.8d | 2015-06-02 09:36 | 2015-07-06 17:00 |  | 35.1d |  |  | 6.4h |
| 115 | 1.2.2.3.1.2.1.1 | PhoneNumberSync module | 0.3d | 2015-06-02 09:36 | 2015-06-04 15:24 | 112 | 35.8d | 0d | AnhTT | 2.4h |
| 116 | 1.2.2.3.1.2.1.2 | Connect Facebook module | 0.1d | 2015-06-04 15:24 | 2015-06-04 16:12 | 115 | 35.8d | 0d | AnhTT | 0.8h |
| 117 | 1.2.2.3.1.2.1.3 | Show Favorite place module | 0.1d | 2015-06-04 16:12 | 2015-06-04 17:00 | 116 | 35.8d | 0d | AnhTT | 0.8h |
| 118 | 1.2.2.3.1.2.1.4 | Show Favorite bus module | 0.1d | 2015-06-05 08:00 | 2015-06-05 08:48 | 117 | 35.8d | 0d | AnhTT | 0.8h |
| 119 | 1.2.2.3.1.2.1.5 | Add/remove Favorite place module | 0.1d | 2015-06-05 08:48 | 2015-06-05 09:36 | 118 | 35.8d | 0d | AnhTT | 0.8h |
| 120 | 1.2.2.3.1.2.1.6 | About module | 0.1d | 2015-07-06 16:12 | 2015-07-06 17:00 | 119 | 35.1d | 0d | AnhTT | 0.8h |
| 121 | 1.2.2.3.1.2.2 | **Bus module** | 22.1d | 2015-05-29 16:12 | 2015-06-30 17:00 |  | 42.5d |  |  | 16.8h |
| 122 | 1.2.2.3.1.2.2.1 | Bus list module | 0.1d | 2015-05-29 16:12 | 2015-05-29 17:00 | 108 | 42.5d | 0d | MaiTTT | 0.8h |
| 123 | 1.2.2.3.1.2.2.2 | Bus info module | 0.3d | 2015-06-03 09:36 | 2015-06-23 08:48 | 122 | 42.5d | 0d | MaiTTT | 2.4h |
| 124 | 1.2.2.3.1.2.2.3 | Bus route module | 0.2d | 2015-06-23 09:36 | 2015-06-23 16:12 | 123 | 42.5d | 0d | MaiTTT | 1.6h |
| 125 | 1.2.2.3.1.2.2.4 | Bus nearest module | 0.3d | 2015-06-23 16:12 | 2015-06-30 15:24 | 124 | 42.5d | 0d | MaiTTT | 2.4h |
| 126 | 1.2.2.3.1.2.2.5 | Bus map module | 0.2d | 2015-06-30 15:24 | 2015-06-30 17:00 | 125 | 42.5d |  | MaiTTT | 1.6h |
| 127 | 1.2.2.3.1.2.2.6 | Set/unset favorite bus module | 0.1d | 2015-05-29 16:12 | 2015-05-29 17:00 | 108 | 60.2d | 0d | CuongNLT | 0.8h |
| 128 | 1.2.2.3.1.2.2.7 | Remind module | 0.3d | 2015-06-01 08:00 | 2015-06-01 10:24 | 127 | 60.2d | 0d | CuongNLT | 2.4h |
| 129 | 1.2.2.3.1.2.2.8 | Track module | 0.2d | 2015-06-01 10:24 | 2015-06-01 12:00 | 128 | 60.2d | 0d | CuongNLT | 1.6h |
| 130 | 1.2.2.3.1.2.2.9 | Get notification module | 0.3d | 2015-06-01 13:00 | 2015-06-01 15:24 | 129 | 60.2d | 0d | CuongNLT | 2.4h |
| 131 | 1.2.2.3.1.2.2.10 | Swap direction module | 0.1d | 2015-06-01 15:24 | 2015-06-01 16:12 | 130 | 60.2d | 25.1d | CuongNLT | 0.8h |
| 132 | 1.2.2.3.1.2.3 | **Shigeki module** | 2.1d | 2015-05-29 16:12 | 2015-06-02 17:00 |  | 59.1d |  |  | 12.8h |
| 133 | 1.2.2.3.1.2.3.1 | Achievement module | 0.3d | 2015-05-29 16:12 | 2015-06-01 09:36 | 108 | 59.1d | 0d | NamNT | 2.4h |
| 134 | 1.2.2.3.1.2.3.2 | Collection module | 0.3d | 2015-06-01 09:36 | 2015-06-01 12:00 | 133 | 59.1d | 0d | NamNT | 2.4h |
| 135 | 1.2.2.3.1.2.3.3 | Mission module | 0.3d | 2015-06-01 13:00 | 2015-06-01 15:24 | 134 | 59.1d | 0d | NamNT | 2.4h |
| 136 | 1.2.2.3.1.2.3.4 | Statistic module | 0.3d | 2015-06-01 15:24 | 2015-06-02 13:48 | 135 | 59.1d | 0d | NamNT | 2.4h |
| 137 | 1.2.2.3.1.2.3.5 | Rank module | 0.1d | 2015-06-02 13:48 | 2015-06-02 14:36 | 136 | 59.1d | 0d | NamNT | 0.8h |
| 138 | 1.2.2.3.1.2.3.6 | Scan QR code module | 0.3d | 2015-06-02 14:36 | 2015-06-02 17:00 | 137 | 59.1d | 24d | NamNT | 2.4h |

| ID | WBS | Task | Type | Duration | Start | Finish | Predecessors | Total slack | Free slack | Resources | Work |
| --- | --- | --- | --- | --- | --- | --- | --- | --- | --- | --- | --- |
| 139 | 1.2.2.3.1.2.4 | **Search module** |  | 0.6d | 2015-05-29 16:12 | 2015-06-01 12:00 |  | 3.5d |  |  | 4.8h |
| 140 | 1.2.2.3.1.2.4.1 | Search bus module |  | 0.1d | 2015-05-29 16:12 | 2015-05-29 17:00 | 108 | 3.5d | 0d | PhuongBB | 0.8h |
| 141 | 1.2.2.3.1.2.4.2 | Search route module |  | 0.3d | 2015-06-01 08:00 | 2015-06-01 10:24 | 140 | 3.5d | 0d | PhuongBB | 2.4h |
| 142 | 1.2.2.3.1.2.4.3 | Search Favorite bus module |  | 0.1d | 2015-06-01 10:24 | 2015-06-01 11:12 | 141 | 3.5d | 0d | PhuongBB | 0.8h |
| 143 | 1.2.2.3.1.2.4.4 | Search Favorite place module |  | 0.1d | 2015-06-01 11:12 | 2015-06-01 12:00 | 142 | 3.5d | 0d | PhuongBB | 0.8h |
| 144 | 1.2.2.3.1.2.5 | Setting module |  | 0.5d | 2015-06-01 13:00 | 2015-06-01 17:00 | 143 | 3.5d | 0d | PhuongBB | 4h |
| 145 | 1.2.2.3.2 | Review Detailed Design with checklist |  | 1d | 2015-07-06 17:00 | 2015-07-08 16:12 | 102, 112, 120, 131, 138, 144 | 35.1d | 0d | MaiTTT; PhuongBB | 8h |
| 146 | 1.2.2.3.3 | Update Detailed Design |  | 1.5d | 2015-07-08 16:12 | 2015-07-10 11:12 | 145 | 35.1d |  | NamNT; CuongNLT; MaiTTT; PhuongBB; AnhTT | 21.6h |
| 147 | 1.2.2.3.4 | Complete Detailed Design version 1.0 | milestone | 0d | 2015-06-01 17:00 | 2015-06-01 17:00 | 144 | 3.5d |  | NamNT |  |
| 148 | 1.2.2.4 | **Database design** |  | 1.8d | 2015-05-29 16:12 | 2015-06-02 14:36 |  | 0d |  |  | 14.4h |
| 149 | 1.2.2.4.1 | Create Databse Design draft version |  | 1d | 2015-05-29 16:12 | 2015-06-01 16:12 | 108 | 0d |  | AnhTT | 8h |
| 150 | 1.2.2.4.2 | Review Database Design with checklist |  | 0.5d | 2015-06-01 16:12 | 2015-06-02 11:12 | 101, 149 | 0d |  | MaiTTT; PhuongBB | 4h |
| 151 | 1.2.2.4.3 | Update Database Design |  | 0.3d | 2015-06-02 11:12 | 2015-06-02 14:36 | 150 | 0d |  | AnhTT | 2.4h |
| 152 | 1.2.2.4.4 | Complete Database Design version 1.0 | milestone | 0d | 2015-06-02 14:36 | 2015-06-02 14:36 | 151 | 0d |  | AnhTT |  |
| 153 | 1.2.2.5 | **Class design** |  | 2.8d | 2015-06-02 14:36 | 2015-06-05 12:00 |  | 0d |  |  | 22.4h |
| 154 | 1.2.2.5.1 | Define class/component |  | 2d | 2015-06-02 14:36 | 2015-06-04 14:36 | 152 | 0d |  | AnhTT | 16h |
| 155 | 1.2.2.5.2 | Review Class Design with checklist |  | 0.5d | 2015-06-04 14:36 | 2015-06-05 09:36 | 154 | 0d |  | MaiTTT; PhuongBB | 4h |
| 156 | 1.2.2.5.3 | Update Class Design |  | 0.3d | 2015-06-05 09:36 | 2015-06-05 12:00 | 155 | 0d |  | AnhTT | 2.4h |
| 157 | 1.2.2.5.4 | Complete Class Design version 1.0 | milestone | 0d | 2015-06-05 12:00 | 2015-06-05 12:00 | 156 | 0d |  | AnhTT |  |
| 158 | 1.2.3 | Complete design | milestone | 0d | 2015-06-05 12:00 | 2015-06-05 12:00 | 108, 147, 152, 157 | 60d |  | NamNT |  |
| 159 | 1.2.4 | **Progress Report 2** |  | 15.6d | 2015-06-05 13:00 | 2015-06-29 08:48 |  | 35.2d |  |  | 4h |
| 160 | 1.2.4.1 | Develop Progress Report 2 |  | 0.3d | 2015-06-05 13:00 | 2015-06-05 15:24 | 147, 152, 157 | 35.2d | 0d | NamNT | 2.4h |
| 161 | 1.2.4.2 | Review Progress Report 2 |  | 0.1d | 2015-06-22 15:24 | 2015-06-22 16:12 | 160 | 36.1d | 0d | MaiTTT | 0.8h |
| 162 | 1.2.4.3 | Update Progress Report 2 |  | 0.1d | 2015-06-29 08:00 | 2015-06-29 08:48 | 161 | 36.1d | 0d | NamNT | 0.8h |
| 163 | 1.2.4.4 | Complete Progress Report 2 | milestone | 0d | 2015-06-29 08:48 | 2015-06-29 08:48 | 162 | 36.1d | 0d | NamNT |  |
| 164 | 1.2.5 | Q & A Management (update) |  | 0.5d | 2015-05-28 11:12 | 2015-05-28 16:12 | 96 | 57.3d | 21.2d | MaiTTT | 4h |

| ID | WBS | Task | Type | Duration | Start | Finish | Predecessors | Total slack | Free slack | Resources | Work |
| --- | --- | --- | --- | --- | --- | --- | --- | --- | --- | --- | --- |
| 165 | 1.2.6 | **Report no.2** |  | 8.3d | 2015-06-29 08:48 | 2015-07-09 11:12 |  | 36.1d |  |  | 44.8h |
| 166 | 1.2.6.1 | Develop Report no.2 (draft version) |  | 0.1d | 2015-06-29 08:48 | 2015-06-29 09:36 | 96, 108, 147, 152, 157, 163, 164, 102 | 36.1d | 0d | NamNT | 0.8h |
| 167 | 1.2.6.2 | Review Report no.2 (draft version) |  | 1d | 2015-06-30 14:36 | 2015-07-02 17:00 | 166 | 36.1d | 0d | NamNT; CuongNLT | 8h |
| 168 | 1.2.6.3 | Update Report no.2 (draft version) |  | 1.2d | 2015-07-03 08:00 | 2015-07-06 16:12 | 167 | 36.1d | 0d | NamNT; CuongNLT; MaiTTT; PhuongBB; AnhTT | 16h |
| 169 | 1.2.6.4 | Submit Report no.2 (first version) | milestone | 0d | 2015-07-06 16:12 | 2015-07-06 16:12 | 168 | 36.1d | 0d | NamNT |  |
| 170 | 1.2.6.5 | Revise after got comments for Report no.2 |  | 1.5d | 2015-07-06 16:12 | 2015-07-09 11:12 | 169 | 36.1d | 0d | NamNT; CuongNLT; MaiTTT; PhuongBB; AnhTT | 20h |
| 171 | 1.2.6.6 | Submit Report no.2 (final version) | milestone | 0d | 2015-07-09 11:12 | 2015-07-09 11:12 | 170 | 36.1d |  | NamNT |  |
| 172 | 1.2.7 | **Coding & Unit Testing** |  | 1d | 2015-06-05 13:00 | 2015-06-08 12:00 |  | 0d |  |  | 8h |
| 173 | 1.2.7.1 | **Bus Driver Module** |  | 1d | 2015-06-05 13:00 | 2015-06-08 12:00 |  | 0d |  |  | 8h |
| 174 | 1.2.7.1.1 | Send bus info module |  | 1d | 2015-06-05 13:00 | 2015-06-08 12:00 | 108, 147, 152, 157 | 0d |  | AnhTT | 8h |
| 175 | 1.2.8 | **Testing** |  | 15.9d | 2015-05-29 16:12 | 2015-06-22 15:24 |  | 18.4d |  |  | 187.2h |
| 176 | 1.2.8.1 | **Test review checklist** |  | 13.3d | 2015-05-29 16:12 | 2015-06-18 09:36 |  | 18.5d |  |  | 12.8h |
| 177 | 1.2.8.1.1 | **Test plan review checklist** |  | 1.8d | 2015-05-29 16:12 | 2015-06-02 14:36 |  | 18.5d |  |  | 4.8h |
| 178 | 1.2.8.1.1.1 | Develop test plan review checklist |  | 0.3d | 2015-05-29 16:12 | 2015-06-02 09:36 | 108 | 18.5d | 0d | PhuongBB | 2.4h |
| 179 | 1.2.8.1.1.2 | Review test plan review checklist |  | 0.2d | 2015-06-02 11:12 | 2015-06-02 13:48 | 178 | 18.5d | 0d | MaiTTT | 1.6h |
| 180 | 1.2.8.1.1.3 | Update test plan review checklist |  | 0.1d | 2015-06-02 13:48 | 2015-06-02 14:36 | 179 | 18.5d | 0d | PhuongBB | 0.8h |
| 181 | 1.2.8.1.1.4 | Complete test plan review checklist | milestone | 0d | 2015-06-02 14:36 | 2015-06-02 14:36 | 180 | 18.5d | 0.1d | PhuongBB |  |
| 182 | 1.2.8.1.2 | **Test case review checklist** |  | 13.3d | 2015-05-29 16:12 | 2015-06-18 09:36 |  | 34.5d |  |  | 8h |
| 183 | 1.2.8.1.2.1 | Develop test case review checklist |  | 0.5d | 2015-05-29 16:12 | 2015-06-03 09:36 | 108 | 34.5d | 0d | MaiTTT | 4h |
| 184 | 1.2.8.1.2.2 | Review test case review checklist |  | 0.3d | 2015-06-03 09:36 | 2015-06-03 12:00 | 183 | 34.5d | 0d | PhuongBB | 2.4h |
| 185 | 1.2.8.1.2.3 | Update test case review checklist |  | 0.2d | 2015-06-18 08:00 | 2015-06-18 09:36 | 184 | 34.6d | 0d | MaiTTT | 1.6h |
| 186 | 1.2.8.1.2.4 | Complete test case review checklist | milestone | 0d | 2015-06-18 09:36 | 2015-06-18 09:36 | 185 | 34.6d | 0d | MaiTTT |  |
| 187 | 1.2.8.1.3 | Complete review checklist | milestone | 0d | 2015-06-18 09:36 | 2015-06-18 09:36 | 181, 186 | 34.6d | 2.6d | MaiTTT; PhuongBB |  |
| 188 | 1.2.8.2 | **Test plan** |  | 2.7d | 2015-05-29 16:12 | 2015-06-03 13:48 |  | 18.4d |  |  | 14.4h |
| 189 | 1.2.8.2.1 | Develop test plan |  | 1d | 2015-05-29 16:12 | 2015-06-02 15:24 | 108 | 18.4d | 0d | MaiTTT | 8h |
| 190 | 1.2.8.2.2 | Review test plan |  | 0.5d | 2015-06-02 15:24 | 2015-06-03 10:24 | 189, 181 | 18.4d | 0d | NamNT | 4h |
| 191 | 1.2.8.2.3 | Update test plan |  | 0.3d | 2015-06-03 10:24 | 2015-06-03 13:48 | 190 | 18.4d | 0d | MaiTTT | 2.4h |
| 192 | 1.2.8.2.4 | Complete test plan | milestone | 0d | 2015-06-03 13:48 | 2015-06-03 13:48 | 191 | 18.4d | 0d | MaiTTT |  |

| ID | WBS | Task | Type | Duration | Start | Finish | Predecessors | Total slack | Free slack | Resources | Work |
| --- | --- | --- | --- | --- | --- | --- | --- | --- | --- | --- | --- |
| 193 | 1.2.8.3 | **Test case** |  | 13.2d | 2015-06-03 13:48 | 2015-06-22 15:24 |  | 18.4d |  |  | 160h |
| 194 | 1.2.8.3.1 | **Unit test** |  | 4.6d | 2015-06-03 13:48 | 2015-06-10 09:36 |  | 18.3d |  |  | 64h |
| 195 | 1.2.8.3.1.1 | **Develop unit test case** |  | 2.6d | 2015-06-03 13:48 | 2015-06-08 09:36 |  | 18.3d |  |  | 32h |
| 196 | 1.2.8.3.1.1.1 | Bus driver module |  | 0.5d | 2015-06-03 13:48 | 2015-06-04 08:48 | 192 | 18.4d | 0d | MaiTTT | 4h |
| 197 | 1.2.8.3.1.1.2 | Sync module |  | 0.5d | 2015-06-04 08:48 | 2015-06-04 13:48 | 196 | 18.4d | 0d | MaiTTT | 4h |
| 198 | 1.2.8.3.1.1.3 | Bus module |  | 1d | 2015-06-05 09:36 | 2015-06-08 09:36 | 197 | 18.3d | 0d | MaiTTT | 8h |
| 199 | 1.2.8.3.1.1.4 | Shigeki module |  | 0.8d | 2015-06-03 13:48 | 2015-06-04 11:12 | 192 | 18.9d | 0d | PhuongBB | 6.4h |
| 200 | 1.2.8.3.1.1.5 | Search module |  | 0.5d | 2015-06-04 11:12 | 2015-06-04 16:12 | 199 | 18.9d | 0d | PhuongBB | 4h |
| 201 | 1.2.8.3.1.1.6 | Setting module |  | 0.7d | 2015-06-04 16:12 | 2015-06-05 13:48 | 200 | 18.9d | 0.6d | PhuongBB | 5.6h |
| 202 | 1.2.8.3.1.2 | Review unit test case |  | 1d | 2015-06-08 09:36 | 2015-06-09 09:36 | 198, 201 | 18.3d | 0d | MaiTTT; PhuongBB | 16h |
| 203 | 1.2.8.3.1.3 | Update unit test case |  | 1d | 2015-06-09 09:36 | 2015-06-10 09:36 | 202 | 18.3d | 0d | MaiTTT; PhuongBB | 16h |
| 204 | 1.2.8.3.1.4 | Complete unit test case | milestone | 0d | 2015-06-10 09:36 | 2015-06-10 09:36 | 203 | 18.3d | 0d | MaiTTT; PhuongBB |  |
| 205 | 1.2.8.3.2 | **Integration test** |  | 3d | 2015-06-11 08:00 | 2015-06-15 17:00 |  | 32d |  |  | 48h |
| 206 | 1.2.8.3.2.1 | Develop integration test case |  | 1d | 2015-06-11 08:00 | 2015-06-11 17:00 | 204 | 32d | 0d | MaiTTT; PhuongBB | 16h |
| 207 | 1.2.8.3.2.2 | Review integration test case |  | 1d | 2015-06-12 08:00 | 2015-06-12 17:00 | 206 | 32d | 0d | MaiTTT; PhuongBB | 16h |
| 208 | 1.2.8.3.2.3 | Update integration test case |  | 1d | 2015-06-15 08:00 | 2015-06-15 17:00 | 207 | 32d | 0d | MaiTTT; PhuongBB | 16h |
| 209 | 1.2.8.3.2.4 | Complete integration test case | milestone | 0d | 2015-06-15 17:00 | 2015-06-15 17:00 | 208 | 32d | 0d | MaiTTT; PhuongBB |  |
| 210 | 1.2.8.3.3 | **System test** |  | 4.8d | 2015-06-16 08:00 | 2015-06-22 15:24 |  | 32d |  |  | 48h |
| 211 | 1.2.8.3.3.1 | Develop system test case |  | 1d | 2015-06-16 08:00 | 2015-06-16 17:00 | 209 | 32d | 0d | MaiTTT; PhuongBB | 16h |
| 212 | 1.2.8.3.3.2 | Review system test case |  | 1d | 2015-06-17 08:00 | 2015-06-17 17:00 | 211 | 32d | 0d | MaiTTT; PhuongBB | 16h |
| 213 | 1.2.8.3.3.3 | Update system test case |  | 1.2d | 2015-06-18 08:00 | 2015-06-22 15:24 | 212 | 32d | 0d | MaiTTT; PhuongBB | 16h |
| 214 | 1.2.8.3.3.4 | Complete system test case | milestone | 0d | 2015-06-22 15:24 | 2015-06-22 15:24 | 213 | 32d | 0d | MaiTTT; PhuongBB |  |
| 215 | 1.2.9 | **Progress report 3** |  | 0.5d | 2015-06-22 15:24 | 2015-06-23 10:24 |  | 32d |  |  | 4h |
| 216 | 1.2.9.1 | Develop Progress Report 3 |  | 0.3d | 2015-06-22 15:24 | 2015-06-23 08:48 | 187, 204, 209, 214 | 32d | 0d | NamNT | 2.4h |
| 217 | 1.2.9.2 | Review Progress Report 3 |  | 0.1d | 2015-06-23 08:48 | 2015-06-23 09:36 | 216 | 32d | 0d | MaiTTT | 0.8h |
| 218 | 1.2.9.3 | Update Progress Report 3 |  | 0.1d | 2015-06-23 09:36 | 2015-06-23 10:24 | 217 | 32d | 0d | NamNT | 0.8h |
| 219 | 1.2.9.4 | Complete Progress Report 3 | milestone | 0d | 2015-06-23 10:24 | 2015-06-23 10:24 | 218 | 32d | 0d | NamNT |  |
| 220 | 1.2.10 | Q & A Management (update) |  | 0.5d | 2015-06-23 10:24 | 2015-06-23 15:24 | 219 | 32d | 0d | MaiTTT | 4h |

| ID | WBS | Task | Type | Duration | Start | Finish | Predecessors | Total slack | Free slack | Resources | Work |
| --- | --- | --- | --- | --- | --- | --- | --- | --- | --- | --- | --- |
| 221 | 1.2.11 | **Report no.3** |  | 2.2d | 2015-06-23 15:24 | 2015-06-25 17:00 |  | 32d |  |  | 33.6h |
| 222 | 1.2.11.1 | Develop Report no.3 (draft version) |  | 0.2d | 2015-06-23 15:24 | 2015-06-23 17:00 | 192, 204, 209, 214, 220 | 32d | 0d | NamNT | 1.6h |
| 223 | 1.2.11.2 | Review Report no.3 (draft version) |  | 1d | 2015-06-24 08:00 | 2015-06-24 17:00 | 222 | 32d | 0d | MaiTTT; PhuongBB | 16h |
| 224 | 1.2.11.3 | Update Report no.3 (draft version) |  | 0.5d | 2015-06-25 08:00 | 2015-06-25 12:00 | 223 | 32d | 0d | MaiTTT; PhuongBB | 8h |
| 225 | 1.2.11.4 | Submit Report no.3 (first version) | milestone | 0d | 2015-06-25 12:00 | 2015-06-25 12:00 | 224 | 32d | 0d | NamNT |  |
| 226 | 1.2.11.5 | Revise after got comments for Report no.3 |  | 0.5d | 2015-06-25 13:00 | 2015-06-25 17:00 | 225 | 32d | 0d | MaiTTT; PhuongBB | 8h |
| 227 | 1.2.11.6 | Submit Report no.3 (final version) | milestone | 0d | 2015-06-25 17:00 | 2015-06-25 17:00 | 226 | 32d | 0d | NamNT |  |
| 228 | 1.3 | **Construction** |  | 52.4d | 2015-06-08 13:00 | 2015-08-19 16:12 |  | 0d |  |  | 1278.4h |
| 229 | 1.3.1 | **Code Review checklist** |  | 1.6d | 2015-06-26 08:00 | 2015-06-29 13:48 |  | 32d |  |  | 22.4h |
| 230 | 1.3.1.1 | Develop review checklist |  | 0.9d | 2015-06-26 08:00 | 2015-06-26 16:12 | 227 | 32d | 0d | MaiTTT; PhuongBB | 11.2h |
| 231 | 1.3.1.2 | Review review checklist |  | 0.4d | 2015-06-26 16:12 | 2015-06-29 10:24 | 230 | 32d | 0d | MaiTTT; PhuongBB | 6.4h |
| 232 | 1.3.1.3 | Update review checklist |  | 0.3d | 2015-06-29 10:24 | 2015-06-29 13:48 | 231 | 32d | 0d | MaiTTT; PhuongBB | 4.8h |
| 233 | 1.3.1.4 | Complete review checklist | milestone | 0d | 2015-06-29 13:48 | 2015-06-29 13:48 | 232 | 32d | 0d | MaiTTT; PhuongBB |  |
| 234 | 1.3.2 | **Coding & Unit testing (continue)** |  | 20d | 2015-06-08 13:00 | 2015-07-06 12:00 |  | 0d |  |  | 412h |
| 235 | 1.3.2.1 | **Bus Rider Module** |  | 20d | 2015-06-08 13:00 | 2015-07-06 12:00 |  | 0d |  |  | 372h |
| 236 | 1.3.2.1.1 | **Sync module** |  | 9d | 2015-06-08 13:00 | 2015-06-19 12:00 |  | 0d |  |  | 72h |
| 237 | 1.3.2.1.1.1 | PhoneNumberSync module |  | 3d | 2015-06-08 13:00 | 2015-06-11 12:00 | 174 | 0d |  | AnhTT | 24h |
| 238 | 1.3.2.1.1.2 | Connect Facebook module |  | 2d | 2015-06-11 13:00 | 2015-06-15 12:00 | 237 | 0d |  | AnhTT | 16h |
| 239 | 1.3.2.1.1.3 | Show Favorite place module |  | 1d | 2015-06-15 13:00 | 2015-06-16 12:00 | 238 | 0d |  | AnhTT | 8h |
| 240 | 1.3.2.1.1.4 | Show Favorite bus module |  | 1d | 2015-06-16 13:00 | 2015-06-17 12:00 | 239 | 0d |  | AnhTT | 8h |
| 241 | 1.3.2.1.1.5 | Add/remove Favorite place module |  | 1d | 2015-06-17 13:00 | 2015-06-18 12:00 | 240 | 0d |  | AnhTT | 8h |
| 242 | 1.3.2.1.1.6 | About module |  | 1d | 2015-06-18 13:00 | 2015-06-19 12:00 | 241 | 0d |  | AnhTT | 8h |
| 243 | 1.3.2.1.2 | **Bus module** |  | 18d | 2015-06-08 13:00 | 2015-07-02 12:00 |  | 3.5d |  |  | 144h |
| 244 | 1.3.2.1.2.1 | Bus list module |  | 1d | 2015-06-08 13:00 | 2015-06-09 12:00 | 174 | 3.5d | 0d | CuongNLT | 8h |
| 245 | 1.3.2.1.2.2 | Bus info module |  | 3d | 2015-06-09 13:00 | 2015-06-12 12:00 | 244 | 3.5d | 0d | CuongNLT | 24h |
| 246 | 1.3.2.1.2.3 | Bus route module |  | 2d | 2015-06-12 13:00 | 2015-06-16 12:00 | 245 | 3.5d | 0d | CuongNLT | 16h |
| 247 | 1.3.2.1.2.4 | Bus nearest module |  | 3d | 2015-06-16 13:00 | 2015-06-19 12:00 | 246 | 3.5d | 0d | CuongNLT | 24h |
| 248 | 1.3.2.1.2.5 | Bus map module |  | 1.5d | 2015-06-19 13:00 | 2015-06-22 17:00 | 247 | 3.5d | 0d | CuongNLT | 12h |
| 249 | 1.3.2.1.2.6 | Set/unset favorite bus module |  | 1d | 2015-06-23 08:00 | 2015-06-23 17:00 | 248 | 3.5d | 0d | CuongNLT | 8h |
| 250 | 1.3.2.1.2.7 | Remind module |  | 2.5d | 2015-06-24 08:00 | 2015-06-26 12:00 | 249 | 3.5d | 0d | CuongNLT | 20h |
| 251 | 1.3.2.1.2.8 | Track module |  | 1.5d | 2015-06-26 13:00 | 2015-06-29 17:00 | 250 | 3.5d | 0d | CuongNLT | 12h |
| 252 | 1.3.2.1.2.9 | Get notification module |  | 2d | 2015-06-30 08:00 | 2015-07-01 17:00 | 251 | 3.5d | 0d | CuongNLT | 16h |
| 253 | 1.3.2.1.2.10 | Swap direction module |  | 0.5d | 2015-07-02 08:00 | 2015-07-02 12:00 | 252 | 3.5d | 0d | CuongNLT | 4h |

| ID | WBS | Task | Type | Duration | Start | Finish | Predecessors | Total slack | Free slack | Resources | Work |
| --- | --- | --- | --- | --- | --- | --- | --- | --- | --- | --- | --- |
| 254 | 1.3.2.1.3 | **Shigeki module** |  | 8.5d | 2015-06-08 13:00 | 2015-06-18 17:00 |  | 15.4d |  |  | 68h |
| 255 | 1.3.2.1.3.1 | Achievement module |  | 1.5d | 2015-06-08 13:00 | 2015-06-09 17:00 | 174 | 15.4d | 0d | NamNT | 12h |
| 256 | 1.3.2.1.3.2 | Collection module |  | 1.5d | 2015-06-10 08:00 | 2015-06-11 12:00 | 255 | 15.4d | 0d | NamNT | 12h |
| 257 | 1.3.2.1.3.3 | Mission module |  | 1.5d | 2015-06-11 13:00 | 2015-06-12 17:00 | 256 | 15.4d | 0d | NamNT | 12h |
| 258 | 1.3.2.1.3.4 | Statistic module |  | 1.5d | 2015-06-15 08:00 | 2015-06-16 12:00 | 257 | 15.4d | 0d | NamNT | 12h |
| 259 | 1.3.2.1.3.5 | Rank module |  | 1d | 2015-06-16 13:00 | 2015-06-17 12:00 | 258 | 15.4d | 0d | NamNT | 8h |
| 260 | 1.3.2.1.3.6 | Scan QR code module |  | 1.5d | 2015-06-17 13:00 | 2015-06-18 17:00 | 259 | 15.4d | 0d | NamNT | 12h |
| 261 | 1.3.2.1.4 | **Search module** |  | 8d | 2015-06-19 13:00 | 2015-07-01 12:00 |  | 0d |  |  | 64h |
| 262 | 1.3.2.1.4.1 | Search bus module |  | 1d | 2015-06-19 13:00 | 2015-06-22 12:00 | 242 | 0d |  | AnhTT | 8h |
| 263 | 1.3.2.1.4.2 | Search route module |  | 5d | 2015-06-22 13:00 | 2015-06-29 12:00 | 262 | 0d |  | AnhTT | 40h |
| 264 | 1.3.2.1.4.3 | Search Favorite bus module |  | 1d | 2015-06-29 13:00 | 2015-06-30 12:00 | 263 | 0d |  | AnhTT | 8h |
| 265 | 1.3.2.1.4.4 | Search Favorite place module |  | 1d | 2015-06-30 13:00 | 2015-07-01 12:00 | 264 | 0d |  | AnhTT | 8h |
| 266 | 1.3.2.1.5 | Setting module |  | 3d | 2015-07-01 13:00 | 2015-07-06 12:00 | 265 | 0d |  | AnhTT | 24h |
| 267 | 1.3.2.2 | Web service |  | 5d | 2015-06-19 08:00 | 2015-06-26 17:00 | 260 | 33.3d | 5.5d | NamNT | 40h |
| 268 | 1.3.2.3 | Complete coding | milestone | 0d | 2015-07-06 12:00 | 2015-07-06 12:00 | 174, 242, 253, 260, 265, 267, 266 | 27.8d | 0d | NamNT |  |
| 269 | 1.3.3 | Q & A Management (update) |  | 1d | 2015-06-29 13:48 | 2015-06-30 13:48 | 233 | 32d | 4.2d | MaiTTT | 8h |
| 270 | 1.3.4 | **Progress report 4** |  | 9.6d | 2015-07-06 13:00 | 2015-07-20 08:48 |  | 27.8d |  |  | 4h |
| 271 | 1.3.4.1 | Develop Progress Report 4 |  | 0.3d | 2015-07-06 13:00 | 2015-07-06 15:24 | 233, 268 | 27.8d | 0d | NamNT | 2.4h |
| 272 | 1.3.4.2 | Review Progress Report 4 |  | 0.1d | 2015-07-14 09:36 | 2015-07-14 10:24 | 271 | 29.2d | 1.8d | MaiTTT | 0.8h |
| 273 | 1.3.4.3 | Update Progress Report 4 |  | 0.1d | 2015-07-20 08:00 | 2015-07-20 08:48 | 272 | 29.4d | 0d | NamNT | 0.8h |
| 274 | 1.3.4.4 | Complete Progress Report 4 | milestone | 0d | 2015-07-20 08:48 | 2015-07-20 08:48 | 273 | 29.4d |  | NamNT |  |
| 275 | 1.3.5 | **Report no.4** |  | 10.9d | 2015-07-06 15:24 | 2015-07-21 14:36 |  | 27.8d |  |  | 120h |
| 276 | 1.3.5.1 | Develop Report no.4 (draft version) |  | 1d | 2015-07-06 15:24 | 2015-07-07 15:24 | 233, 268, 269, 271 | 27.8d | 0d | NamNT | 8h |
| 277 | 1.3.5.2 | Review Report no.4 (draft version) |  | 2.1d | 2015-07-07 15:24 | 2015-07-10 11:12 | 276 | 27.8d | 0d | MaiTTT; PhuongBB; CuongNLT; AnhTT | 32h |
| 278 | 1.3.5.3 | Update Report no.4 (draft version) |  | 2d | 2015-07-10 11:12 | 2015-07-17 11:12 | 277 | 27.8d | 0d | MaiTTT; PhuongBB; CuongNLT; AnhTT; NamNT | 40h |
| 279 | 1.3.5.4 | Submit Report no.4 (first version) | milestone | 0d | 2015-07-17 11:12 | 2015-07-17 11:12 | 278 | 27.8d | 0d | NamNT |  |
| 280 | 1.3.5.5 | Revise after got comments for Report no.4 |  | 2d | 2015-07-17 11:12 | 2015-07-21 14:36 | 279 | 27.8d | 0d | MaiTTT; PhuongBB; CuongNLT; AnhTT; NamNT | 40h |
| 281 | 1.3.5.6 | Submit Report no.4 (final version) | milestone | 0d | 2015-07-21 14:36 | 2015-07-21 14:36 | 280 | 27.8d |  | NamNT |  |

| ID | WBS | Task | Type | Duration | Start | Finish | Predecessors | Total slack | Resources | Work |
| --- | --- | --- | --- | --- | --- | --- | --- | --- | --- | --- |
| 282 | 1.3.6 | **Testing** |  | 43.8d | 2015-06-10 09:36 | 2015-08-10 17:00 |  | 0d |  | 524h |
| 283 | 1.3.6.1 | **Execute test & fix bugs** |  | 41.8d | 2015-06-10 09:36 | 2015-08-06 17:00 |  | 0d |  | 504h |
| 284 | 1.3.6.1.1 | **Round 1** |  | 31.5d | 2015-06-10 09:36 | 2015-07-23 14:36 |  | 0d |  | 296.8h |
| 285 | 1.3.6.1.1.1 | **Execute unit test** |  | 23d | 2015-06-10 09:36 | 2015-07-13 09:36 |  | 0d |  | 115.2h |
| 286 | 1.3.6.1.1.1.1 | Bus driver module |  | 0.8d | 2015-06-10 09:36 | 2015-06-10 17:00 | 174, 204 | 22.2d | MaiTTT; PhuongBB | 12.8h |
| 287 | 1.3.6.1.1.1.2 | Sync module |  | 0.8d | 2015-06-19 15:24 | 2015-06-22 13:48 | 204, 242 | 14.6d | MaiTTT; PhuongBB | 12.8h |
| 288 | 1.3.6.1.1.1.3 | Bus module |  | 2d | 2015-07-03 16:12 | 2015-07-07 16:12 | 204, 253 | 3.3d | MaiTTT; PhuongBB | 32h |
| 289 | 1.3.6.1.1.1.4 | Shigeki module |  | 0.8d | 2015-06-19 08:00 | 2015-06-19 15:24 | 204, 260 | 15.4d | MaiTTT; PhuongBB | 12.8h |
| 290 | 1.3.6.1.1.1.5 | Search module |  | 2d | 2015-07-01 13:00 | 2015-07-03 12:00 | 204, 265 | 5.7d | MaiTTT; PhuongBB | 32h |
| 291 | 1.3.6.1.1.1.6 | Setting module |  | 0.8d | 2015-07-10 11:12 | 2015-07-13 09:36 | 204, 266 | 0d | MaiTTT; PhuongBB | 12.8h |
| 292 | 1.3.6.1.1.2 | Fix bugs unit test |  | 4d | 2015-07-13 09:36 | 2015-07-17 09:36 | 286, 287, 288, 289, 290, 291 | 0d | NamNT; CuongNLT; AnhTT | 96h |
| 293 | 1.3.6.1.1.3 | Execute integration test |  | 1.5d | 2015-07-17 09:36 | 2015-07-20 14:36 | 292 | 0d | MaiTTT; PhuongBB | 24h |
| 294 | 1.3.6.1.1.4 | Fix bugs integration test |  | 1d | 2015-07-20 14:36 | 2015-07-21 14:36 | 293 | 0d | NamNT; CuongNLT; AnhTT | 21.6h |
| 295 | 1.3.6.1.1.5 | Execute system test |  | 1d | 2015-07-21 14:36 | 2015-07-22 14:36 | 294 | 0d | MaiTTT; PhuongBB | 16h |
| 296 | 1.3.6.1.1.6 | Fix bugs system test |  | 1d | 2015-07-22 14:36 | 2015-07-23 14:36 | 295 | 0d | NamNT; CuongNLT; AnhTT | 24h |
| 297 | 1.3.6.1.2 | **Round 2** |  | 9.3d | 2015-07-23 14:36 | 2015-08-05 17:00 |  | 0d |  | 183.2h |
| 298 | 1.3.6.1.2.1 | **Execute unit test** |  | 3.8d | 2015-07-23 14:36 | 2015-07-29 12:00 |  | 0d |  | 63.2h |
| 299 | 1.3.6.1.2.1.1 | Bus driver module |  | 0.5d | 2015-07-28 13:00 | 2015-07-28 17:00 | 296 | 0.5d | MaiTTT; PhuongBB | 8h |
| 300 | 1.3.6.1.2.1.2 | Sync module |  | 0.6d | 2015-07-23 14:36 | 2015-07-24 17:00 | 296 | 2.5d | MaiTTT; PhuongBB | 7.2h |
| 301 | 1.3.6.1.2.1.3 | Bus module |  | 1d | 2015-07-23 14:36 | 2015-07-24 14:36 | 296 | 2.8d | MaiTTT; PhuongBB | 16h |
| 302 | 1.3.6.1.2.1.4 | Shigeki module |  | 0.5d | 2015-07-29 08:00 | 2015-07-29 12:00 | 296 | 0d | MaiTTT; PhuongBB | 8h |
| 303 | 1.3.6.1.2.1.5 | Search module |  | 1d | 2015-07-27 13:00 | 2015-07-28 12:00 | 296 | 1d | MaiTTT; PhuongBB | 16h |
| 304 | 1.3.6.1.2.1.6 | Setting module |  | 0.8d | 2015-07-23 14:36 | 2015-07-27 12:00 | 296 | 2d | MaiTTT; PhuongBB | 8h |
| 305 | 1.3.6.1.2.2 | Fix bugs unit test |  | 2d | 2015-07-29 13:00 | 2015-07-31 12:00 | 299, 300, 301, 302, 303, 304 | 0d | NamNT; CuongNLT; AnhTT | 48h |
| 306 | 1.3.6.1.2.3 | Execute integration test |  | 1d | 2015-07-31 13:00 | 2015-08-03 12:00 | 305 | 0d | MaiTTT; PhuongBB | 16h |
| 307 | 1.3.6.1.2.4 | Fix bugs integration test |  | 1d | 2015-08-03 13:00 | 2015-08-04 12:00 | 306 | 0d | NamNT; CuongNLT; AnhTT | 24h |
| 308 | 1.3.6.1.2.5 | Execute system test |  | 0.5d | 2015-08-04 13:00 | 2015-08-04 17:00 | 307 | 0d | MaiTTT; PhuongBB | 8h |
| 309 | 1.3.6.1.2.6 | Fix bugs system test |  | 1d | 2015-08-05 08:00 | 2015-08-05 17:00 | 308 | 0d | NamNT; CuongNLT; AnhTT | 24h |
| 310 | 1.3.6.1.3 | Execute acceptance test & collect data |  | 1d | 2015-08-06 08:00 | 2015-08-06 17:00 | 309 | 0d | MaiTTT; PhuongBB; NamNT | 24h |
| 311 | 1.3.6.2 | Complete execute test | milestone | 0d | 2015-08-06 17:00 | 2015-08-06 17:00 | 310 | 0d | NamNT |  |

| ID | WBS | Task | Type | Duration | Start | Finish | Predecessors | Total slack | Resources | Work |
| --- | --- | --- | --- | --- | --- | --- | --- | --- | --- | --- |
| 312 | 1.3.6.3 | **Test Report** |  | 2d | 2015-08-07 08:00 | 2015-08-10 17:00 |  | 0d |  | 20h |
| 313 | 1.3.6.3.1 | Develop test report |  | 1d | 2015-08-07 08:00 | 2015-08-07 17:00 | 311 | 0d | MaiTTT | 8h |
| 314 | 1.3.6.3.2 | Review test report |  | 0.5d | 2015-08-10 08:00 | 2015-08-10 12:00 | 313 | 0d | NamNT; PhuongBB | 8h |
| 315 | 1.3.6.3.3 | Update test report |  | 0.5d | 2015-08-10 13:00 | 2015-08-10 17:00 | 314 | 0d | MaiTTT | 4h |
| 316 | 1.3.6.3.4 | Complete test report | milestone | 0d | 2015-08-10 17:00 | 2015-08-10 17:00 | 315 | 0d | MaiTTT |  |
| 317 | 1.3.7 | **Quality report** |  | 2.5d | 2015-08-11 08:00 | 2015-08-13 12:00 |  | 0d |  | 60h |
| 318 | 1.3.7.1 | Develop quality report |  | 1d | 2015-08-11 08:00 | 2015-08-11 17:00 | 316 | 0d | NamNT; MaiTTT; PhuongBB | 24h |
| 319 | 1.3.7.2 | Review quality report |  | 1d | 2015-08-12 08:00 | 2015-08-12 17:00 | 318 | 0d | NamNT; MaiTTT; PhuongBB | 24h |
| 320 | 1.3.7.3 | Update quality report |  | 0.5d | 2015-08-13 08:00 | 2015-08-13 12:00 | 319 | 0d | NamNT; MaiTTT; PhuongBB | 12h |
| 321 | 1.3.7.4 | Complete quality report | milestone | 0d | 2015-08-13 12:00 | 2015-08-13 12:00 | 320 | 0d | NamNT |  |
| 322 | 1.3.8 | **Progress report 5** |  | 0.5d | 2015-08-13 13:00 | 2015-08-13 17:00 |  | 0d |  | 4h |
| 323 | 1.3.8.1 | Develop Progress Report 5 |  | 0.3d | 2015-08-13 13:00 | 2015-08-13 15:24 | 321 | 0d | NamNT | 2.4h |
| 324 | 1.3.8.2 | Review Progress Report 5 |  | 0.1d | 2015-08-13 15:24 | 2015-08-13 16:12 | 323 | 0d | MaiTTT | 0.8h |
| 325 | 1.3.8.3 | Update Progress Report 5 |  | 0.1d | 2015-08-13 16:12 | 2015-08-13 17:00 | 324 | 0d | NamNT | 0.8h |
| 326 | 1.3.8.4 | Complete Progress Report 5 | milestone | 0d | 2015-08-13 17:00 | 2015-08-13 17:00 | 325 | 0d | NamNT |  |
| 327 | 1.3.9 | **Report no.5** |  | 3.9d | 2015-08-14 08:00 | 2015-08-19 16:12 |  | 0d |  | 124h |
| 328 | 1.3.9.1 | Develop Report no.5 (draft version) |  | 1d | 2015-08-14 08:00 | 2015-08-14 17:00 | 316, 321, 326 | 0d | NamNT | 8h |
| 329 | 1.3.9.2 | Review Report no.5 (draft version) |  | 1d | 2015-08-17 08:00 | 2015-08-17 17:00 | 328 | 0d | NamNT; MaiTTT; PhuongBB; CuongNLT; AnhTT | 40h |
| 330 | 1.3.9.3 | Update Report no.5 (draft version) |  | 1d | 2015-08-18 08:00 | 2015-08-18 17:00 | 329 | 0d | NamNT; MaiTTT; PhuongBB; CuongNLT; AnhTT | 40h |
| 331 | 1.3.9.4 | Submit Report no.5 (first version) | milestone | 0d | 2015-08-18 17:00 | 2015-08-18 17:00 | 330 | 0d | NamNT |  |
| 332 | 1.3.9.5 | Revise after got comments for Report no.5 |  | 0.9d | 2015-08-19 08:00 | 2015-08-19 16:12 | 331 | 0d | NamNT; MaiTTT; PhuongBB; CuongNLT; AnhTT | 36h |
| 333 | 1.3.9.6 | Submit Report no.5 (final version) | milestone | 0d | 2015-08-19 16:12 | 2015-08-19 16:12 | 332 | 0d | NamNT |  |
| 334 | 1.4 | **Termination** |  | 6.6d | 2015-08-19 16:12 | 2015-08-28 12:00 |  | 0d |  | 264h |
| 335 | 1.4.1 | **Report no.6** |  | 5.1d | 2015-08-19 16:12 | 2015-08-26 17:00 |  | 0d |  | 204h |
| 336 | 1.4.1.1 | Complete source code & final report |  | 1d | 2015-08-19 16:12 | 2015-08-20 16:12 | 333 | 0d | NamNT; MaiTTT; PhuongBB; CuongNLT; AnhTT | 40h |
| 337 | 1.4.1.2 | Develop installation guide |  | 0.3d | 2015-08-20 16:12 | 2015-08-21 09:36 | 336 | 0d | NamNT; MaiTTT; PhuongBB; CuongNLT; AnhTT | 12h |
| 338 | 1.4.1.3 | Develop user guideline |  | 0.4d | 2015-08-21 09:36 | 2015-08-21 13:48 | 337 | 0d | NamNT; MaiTTT; PhuongBB; CuongNLT; AnhTT | 16h |
| 339 | 1.4.1.4 | Complete Project Result Assessment |  | 1d | 2015-08-21 13:48 | 2015-08-24 13:48 | 338 | 0d | NamNT; MaiTTT; PhuongBB; CuongNLT; AnhTT | 40h |
| 340 | 1.4.1.5 | Conduct lessons learned |  | 0.5d | 2015-08-24 13:48 | 2015-08-25 08:48 | 339 | 0d | NamNT; MaiTTT; PhuongBB; CuongNLT; AnhTT | 20h |
| 341 | 1.4.1.6 | Complete Presentation slide |  | 0.8d | 2015-08-25 08:48 | 2015-08-25 16:12 | 340 | 0d | NamNT; MaiTTT; PhuongBB; CuongNLT; AnhTT | 32h |
| 342 | 1.4.1.7 | Review Report no.6 (draft version) |  | 0.5d | 2015-08-25 16:12 | 2015-08-26 11:12 | 341 | 0d | NamNT; MaiTTT; PhuongBB; CuongNLT; AnhTT | 20h |
| 343 | 1.4.1.8 | Update Report no.6 (draft version) |  | 0.3d | 2015-08-26 11:12 | 2015-08-26 14:36 | 342 | 0d | NamNT; MaiTTT; PhuongBB; CuongNLT; AnhTT | 12h |
| 344 | 1.4.1.9 | Submit Report no.6 (first version) | milestone | 0d | 2015-08-26 14:36 | 2015-08-26 14:36 | 343 | 0d | NamNT |  |
| 345 | 1.4.1.10 | Revise after got comments for Report no.6 |  | 0.3d | 2015-08-26 14:36 | 2015-08-26 17:00 | 344 | 0d | NamNT; MaiTTT; PhuongBB; CuongNLT; AnhTT | 12h |
| 346 | 1.4.1.11 | Submit Report no.6 (final version) | milestone | 0d | 2015-08-26 17:00 | 2015-08-26 17:00 | 345 | 0d | NamNT |  |
| 347 | 1.4.1.12 | Submit Final report & CD source code | milestone | 0d | 2015-08-26 17:00 | 2015-08-26 17:00 | 346 | 0d | NamNT |  |

| ID | WBS | Task | Duration | Start | Finish | Predecessors | Total slack | Resources | Work |
| --- | --- | --- | --- | --- | --- | --- | --- | --- | --- |
| 348 | 1.4.2 | **Pre-closing** | 1d | 2015-08-27 08:00 | 2015-08-27 17:00 |  | 0d |  | 40h |
| 349 | 1.4.2.1 | Training presentation | 1d | 2015-08-27 08:00 | 2015-08-27 17:00 | 347 | 0d | NamNT; MaiTTT; PhuongBB; CuongNLT; AnhTT | 40h |
| 350 | 1.4.3 | **Closing** | 0.5d | 2015-08-28 08:00 | 2015-08-28 12:00 |  | 0d |  | 20h |
| 351 | 1.4.3.1 | Present Capstone Project & Completed | 0.5d | 2015-08-28 08:00 | 2015-08-28 12:00 | 349 | 0d | NamNT; MaiTTT; PhuongBB; CuongNLT; AnhTT | 20h |
