# ProjectDemo

Schedule from MS Project, 2015-05-04 to 2015-07-07.

## Calendars

- Standard: Mon-Fri 08:00-12:00, 13:00-17:00; Sat-Sun off.

## Resources

| Resource | Rate |
| --- | --- |
| Nguyễn Thành Nam | 1.2 |
| Trịnh Thị Tuyết Mai | 1 |
| Nguyễn Lê Tuấn Cường | 1 |
| Bùi Bích Phương | 1 |
| Trần Tú Anh | 1 |
| Server PC |  |
| Smartphone |  |
| Internet |  |
| Nguyễn Văn Sang |  |

## Schedule

| ID | WBS | Task | Type | Duration | Start | Finish | Predecessors | Total slack |
| --- | --- | --- | --- | --- | --- | --- | --- | --- |
| 1 | 1 | **Initiation phase** |  | 1.2d | 2015-05-04 | 2015-05-05 |  |  |
| 2 | 1.1 | Develop project charter |  | 0.6d | 2015-05-04 | 2015-05-04 |  | 0d |
| 3 | 1.2 | Project charter approved | milestone | 0h | 2015-05-05 | 2015-05-05 | 121 | 0d |
| 4 | 2 | **Planning phase** |  | 9.35d | 2015-05-05 | 2015-05-18 |  | 0d |
| 5 | 2.1 | **Product activities** |  | 3.5d | 2015-05-05 | 2015-05-08 |  | 0d |
| 6 | 2.1.1 | **Manage scope definition** |  | 0.2d | 2015-05-05 | 2015-05-05 |  | 0d |
| 7 | 2.1.1.1 | Create scope document |  | 0.2d | 2015-05-05 | 2015-05-05 | 3 | 0d |
| 8 | 2.1.1.2 | Scope document approved | milestone | 0h | 2015-05-05 | 2015-05-05 | 7 | 0d |
| 9 | 2.1.2 | **Manage requirements gathering** |  | 1.5d | 2015-05-05 | 2015-05-06 |  | 0d |
| 10 | 2.1.2.1 | Prepare research instruments |  | 0.1d | 2015-05-05 | 2015-05-05 | 8 | 0d |
| 11 | 2.1.2.2 | Interview users |  | 0.3d | 2015-05-05 | 2015-05-05 | 10 | 0d |
| 12 | 2.1.2.3 | Interview SHs |  | 0.3d | 2015-05-05 | 2015-05-06 | 11 | 0d |
| 13 | 2.1.2.4 | Interview SMEs |  | 0.2d | 2015-05-06 | 2015-05-06 | 12 | 0d |
| 14 | 2.1.2.5 | Draft requirements document |  | 0.25d | 2015-05-06 | 2015-05-06 | 13 | 0d |
| 15 | 2.1.2.6 | Review requirements document |  | 0.1d | 2015-05-06 | 2015-05-06 | 14 | 0d |
| 16 | 2.1.2.7 | Revise requirements document |  | 0.25d | 2015-05-06 | 2015-05-06 | 15 | 0d |
| 17 | 2.1.2.8 | Requirements document approved | milestone | 0d | 2015-05-06 | 2015-05-06 | 16 | 0d |
| 18 | 2.1.3 | **Manage development planning** |  | 0.5d | 2015-05-06 | 2015-05-07 |  | 0d |
| 19 | 2.1.3.1 | Create development plan |  | 0.5d | 2015-05-06 | 2015-05-07 | 17 | 0d |
| 20 | 2.1.3.2 | Development plan approved | milestone | 0d | 2015-05-07 | 2015-05-07 | 19 | 42.75d |
| 21 | 2.1.4 | **Manage test planning** |  | 0.5d | 2015-05-07 | 2015-05-07 |  | 0d |
| 22 | 2.1.4.1 | Create test plan |  | 0.5d | 2015-05-07 | 2015-05-07 | 19 | 0d |
| 23 | 2.1.4.2 | Test plan approved | milestone | 0d | 2015-05-07 | 2015-05-07 | 22 | 42.25d |
| 24 | 2.1.5 | **Manage deployment planning** |  | 0.4d | 2015-05-07 | 2015-05-08 |  | 0d |
| 25 | 2.1.5.1 | Create deployment plan |  | 0.4d | 2015-05-07 | 2015-05-08 | 22 | 0d |
| 26 | 2.1.5.2 | Deployment plan approved | milestone | 0d | 2015-05-08 | 2015-05-08 | 25 | 41.85d |

| ID | WBS | Task | Type | Duration | Start | Finish | Predecessors | Total slack |
| --- | --- | --- | --- | --- | --- | --- | --- | --- |
| 27 | 2.1.6 | **Manage maintenance planning** |  | 0.2d | 2015-05-08 | 2015-05-08 |  | 0d |
| 28 | 2.1.6.1 | Create maintenance plan |  | 0.2d | 2015-05-08 | 2015-05-08 | 25 | 0d |
| 29 | 2.1.6.2 | Maintenance plan approved | milestone | 0d | 2015-05-08 | 2015-05-08 | 28 | 0d |
| 30 | 2.1.7 | **Manage acceptance** |  | 0.2d | 2015-05-08 | 2015-05-08 |  | 0d |
| 31 | 2.1.7.1 | Create acceptance criteria |  | 0.2d | 2015-05-08 | 2015-05-08 | 29 | 0d |
| 32 | 2.1.7.2 | Acceptance criteria approved | milestone | 0d | 2015-05-08 | 2015-05-08 | 31 | 0d |
| 33 | 2.2 | **Project activities** |  | 5.85d | 2015-05-08 | 2015-05-18 |  | 0d |
| 34 | 2.2.1 | **Manage scope / cost / schedule planning** |  | 4.6d | 2015-05-08 | 2015-05-15 |  | 0d |
| 35 | 2.2.1.1 | **Develop project plan** |  | 4.6d | 2015-05-08 | 2015-05-15 |  | 0d |
| 36 | 2.2.1.1.1 | Create task list |  | 0.3d | 2015-05-08 | 2015-05-08 | 32 | 0d |
| 37 | 2.2.1.1.2 | Create estimates |  | 0.7d | 2015-05-11 | 2015-05-11 | 36 | 0d |
| 38 | 2.2.1.1.3 | Create network diagram (PERT) |  | 0.4d | 2015-05-11 | 2015-05-12 | 37 | 0d |
| 39 | 2.2.1.1.4 | Create work breakdown structure (WBS) |  | 1d | 2015-05-12 | 2015-05-13 | 38 | 0d |
| 40 | 2.2.1.1.5 | Create schedule (GANTT) |  | 1.2d | 2015-05-13 | 2015-05-14 | 39 | 0d |
| 41 | 2.2.1.1.6 | Create milestone plan |  | 0.3d | 2015-05-14 | 2015-05-14 | 40 | 0d |
| 42 | 2.2.1.1.7 | Create organization plan |  | 1d | 2015-05-14 | 2015-05-15 | 41SS | 0d |
| 43 | 2.2.1.1.8 | Create resource assignments |  | 1d | 2015-05-14 | 2015-05-15 | 42SS | 0d |
| 44 | 2.2.1.1.9 | Create budget |  | 0.8d | 2015-05-14 | 2015-05-15 | 43SS | 0.2d |
| 45 | 2.2.1.2 | Project plan approved | milestone | 0d | 2015-05-15 | 2015-05-15 | 44, 40, 41, 42, 43 | 0d |
| 46 | 2.2.2 | **Manage communications planning** |  | 0.25d | 2015-05-15 | 2015-05-15 |  | 0d |
| 47 | 2.2.2.1 | Develop communications plan |  | 0.25d | 2015-05-15 | 2015-05-15 | 45SS | 0d |
| 48 | 2.2.2.2 | Communications plan approved | milestone | 0d | 2015-05-15 | 2015-05-15 | 47 | 36.6d |
| 49 | 2.2.3 | **Manage quality planning** |  | 1.05d | 2015-05-15 | 2015-05-18 |  | 0d |
| 50 | 2.2.3.1 | Develop quality plan |  | 1.05d | 2015-05-15 | 2015-05-18 | 47SS | 0d |
| 51 | 2.2.3.2 | Quality plan approved | milestone | 0d | 2015-05-18 | 2015-05-18 | 50 | 0.2d |

| ID | WBS | Task | Type | Duration | Start | Finish | Predecessors | Total slack | Free slack |
| --- | --- | --- | --- | --- | --- | --- | --- | --- | --- |
| 52 | 2.2.4 | **Manage risk planning** |  | 0.95d | 2015-05-15 | 2015-05-18 |  | 0d |  |
| 53 | 2.2.4.1 | Develop risk management plan |  | 0.95d | 2015-05-15 | 2015-05-18 | 50SS | 0d |  |
| 54 | 2.2.4.2 | Risk management plan approved | milestone | 0d | 2015-05-18 | 2015-05-18 | 53 | 0.3d |  |
| 55 | 2.2.5 | **Manage procurement planning** |  | 1.25d | 2015-05-15 | 2015-05-18 |  | 0d |  |
| 56 | 2.2.5.1 | Develop procurement plan |  | 1.25d | 2015-05-15 | 2015-05-18 | 53SS | 0d |  |
| 57 | 2.2.5.2 | Procurement plan approved | milestone | 0d | 2015-05-18 | 2015-05-18 | 56 | 0d |  |
| 58 | 2.2.6 | **Manage HR planning** |  | 1.15d | 2015-05-15 | 2015-05-18 |  | 0.1d |  |
| 59 | 2.2.6.1 | Develop HR plan |  | 1.15d | 2015-05-15 | 2015-05-18 | 56SS | 0.1d | 0d |
| 60 | 2.2.6.2 | HR plan approved | milestone | 0d | 2015-05-18 | 2015-05-18 | 59 | 0.1d |  |
| 61 | 2.2.7 | **Manage integration planning** |  | 1.25d | 2015-05-15 | 2015-05-18 |  | 0d |  |
| 62 | 2.2.7.1 | Coordinate plans |  | 1.25d | 2015-05-15 | 2015-05-18 | 51FF, 54FF, 57FF, 60FF | 0d |  |
| 63 | 3 | **Execution phase** |  | 42.65d | 2015-05-04 | 2015-07-01 |  | 0d |  |
| 64 | 3.1 | **Product activities** |  | 32.1d | 2015-05-18 | 2015-07-01 |  | 0d |  |
| 65 | 3.1.1 | **Manage design** |  | 13.3d | 2015-05-18 | 2015-06-04 |  | 0d |  |
| 66 | 3.1.1.1 | Develop use cases |  | 1d | 2015-05-18 | 2015-05-19 | 62 | 0d |  |
| 67 | 3.1.1.2 | Create data architecture |  | 1.5d | 2015-05-19 | 2015-05-21 | 66 | 0d |  |
| 68 | 3.1.1.3 | **Design product** |  | 4.6d | 2015-05-21 | 2015-05-27 |  | 0d |  |
| 69 | 3.1.1.3.1 | Design UI |  | 1.5d | 2015-05-21 | 2015-05-22 | 67 | 0d |  |
| 70 | 3.1.1.3.2 | Design objects |  | 0.8d | 2015-05-22 | 2015-05-25 | 69 | 0d |  |
| 71 | 3.1.1.3.3 | Design workflow |  | 0.5d | 2015-05-25 | 2015-05-25 | 70 | 0d |  |
| 72 | 3.1.1.3.4 | Design database |  | 0.6d | 2015-05-25 | 2015-05-26 | 71 | 0d |  |
| 73 | 3.1.1.3.5 | Design connectivity with other systems |  | 1.2d | 2015-05-26 | 2015-05-27 | 72 | 0d |  |
| 74 | 3.1.1.4 | Product design approved | milestone | 0d | 2015-05-27 | 2015-05-27 | 73 | 0d |  |
| 75 | 3.1.1.5 | **Design tests** |  | 3.2d | 2015-05-27 | 2015-06-01 |  | 12.1d |  |
| 76 | 3.1.1.5.1 | **Design manual tests** |  | 3.2d | 2015-05-27 | 2015-06-01 |  | 12.1d |  |
| 77 | 3.1.1.5.1.1 | Design UI tests |  | 0.6d | 2015-05-27 | 2015-05-28 | 74 | 12.1d | 0d |
| 78 | 3.1.1.5.1.2 | Design object tests |  | 0.8d | 2015-05-28 | 2015-05-29 | 77 | 12.1d | 0d |
| 79 | 3.1.1.5.1.3 | Design workflow tests |  | 0.5d | 2015-05-29 | 2015-05-29 | 78 | 12.1d | 0d |
| 80 | 3.1.1.5.1.4 | Design database tests |  | 0.6d | 2015-05-29 | 2015-06-01 | 79 | 12.1d | 0d |
| 81 | 3.1.1.5.1.5 | Design connectivity tests |  | 0.7d | 2015-06-01 | 2015-06-01 | 80 | 12.1d | 0d |
| 82 | 3.1.1.6 | Test design approved | milestone | 0d | 2015-06-01 | 2015-06-01 | 81 | 12.1d | 0d |
| 83 | 3.1.1.7 | Create design documentation |  | 3d | 2015-06-01 | 2015-06-04 | 82 | 19.6d | 0d |

| ID | WBS | Task | Type | Duration | Start | Finish | Predecessors | Total slack | Free slack |
| --- | --- | --- | --- | --- | --- | --- | --- | --- | --- |
| 84 | 3.1.2 | **Manage development** |  | 22.3d | 2015-05-27 | 2015-06-26 |  | 0d |  |
| 85 | 3.1.2.1 | Build prototype |  | 2d | 2015-05-27 | 2015-05-29 | 74 | 0d |  |
| 86 | 3.1.2.2 | **Develop product** |  | 12.8d | 2015-05-29 | 2015-06-17 |  | 0d |  |
| 87 | 3.1.2.2.1 | Develop UI |  | 3.2d | 2015-05-29 | 2015-06-03 | 85, 117 | 0d |  |
| 88 | 3.1.2.2.2 | Develop objects |  | 1.6d | 2015-06-03 | 2015-06-05 | 87 | 0d |  |
| 89 | 3.1.2.2.3 | Develop workflow |  | 1.8d | 2015-06-05 | 2015-06-09 | 88 | 0d |  |
| 90 | 3.1.2.2.4 | Develop database |  | 1.2d | 2015-06-09 | 2015-06-10 | 89 | 0d |  |
| 91 | 3.1.2.2.5 | Develop connections with other systems |  | 3.5d | 2015-06-10 | 2015-06-15 | 90 | 0d |  |
| 92 | 3.1.2.2.6 | Create system documentation |  | 1.5d | 2015-06-15 | 2015-06-17 | 91 | 0d |  |
| 93 | 3.1.2.3 | Product development complete |  | 2d | 2015-06-17 | 2015-06-19 | 92 | 0d |  |
| 94 | 3.1.2.4 | **Develop tests** |  | 2d | 2015-06-01 | 2015-06-03 |  | 12.1d |  |
| 95 | 3.1.2.4.1 | Create test documentation |  | 2d | 2015-06-01 | 2015-06-03 | 82 | 12.1d | 0d |
| 96 | 3.1.2.5 | Test development complete |  | 0.5d | 2015-06-03 | 2015-06-04 | 95 | 12.1d |  |
| 97 | 3.1.2.6 | Create build |  | 1d | 2015-06-19 | 2015-06-22 | 93 | 0d |  |
| 98 | 3.1.2.7 | Build approved for testing | milestone | 0d | 2015-06-22 | 2015-06-22 | 97 | 0d |  |
| 99 | 3.1.2.8 | **Execute tests** |  | 4d | 2015-06-22 | 2015-06-26 |  | 0d |  |
| 100 | 3.1.2.8.1 | Execute manual tests |  | 4d | 2015-06-22 | 2015-06-26 | 98, 96, 118 | 0d |  |
| 101 | 3.1.2.9 | Version finalized and approved for deployment |  | 0.5d | 2015-06-26 | 2015-06-26 | 100 | 0d |  |
| 102 | 3.1.3 | **Manage deployment** |  | 2.7d | 2015-06-26 | 2015-07-01 |  | 0d |  |
| 103 | 3.1.3.1 | Schedule release |  | 0.5d | 2015-06-26 | 2015-06-29 | 101 | 0d |  |
| 104 | 3.1.3.2 | Notify Change Control |  | 0.2d | 2015-06-29 | 2015-06-29 | 103 | 0d |  |
| 105 | 3.1.3.3 | **Rollout** |  | 1d | 2015-06-29 | 2015-06-30 |  | 0d |  |
| 106 | 3.1.3.3.1 | Confirm successful rollout |  | 1d | 2015-06-29 | 2015-06-30 | 104 | 0d |  |
| 107 | 3.1.3.4 | Announce launch |  | 0.5d | 2015-06-30 | 2015-07-01 | 106 | 0d |  |
| 108 | 3.1.3.5 | Publish press release |  | 0.5d | 2015-07-01 | 2015-07-01 | 107 | 0.1d | 0d |

| ID | WBS | Task | Duration | Start | Finish | Predecessors | Total slack | Free slack |
| --- | --- | --- | --- | --- | --- | --- | --- | --- |
| 109 | 3.2 | **Project activities** | 24.25d | 2015-05-04 | 2015-06-05 |  | 0d |  |
| 110 | 3.2.1 | **Manage quality assurance** | 6.6d | 2015-05-27 | 2015-06-05 |  | 1.8d |  |
| 111 | 3.2.1.1 | **Establish product standards and procedures** | 1.4d | 2015-06-01 | 2015-06-03 |  | 23.9d |  |
| 112 | 3.2.1.1.1 | Define quality criteria and assessment methods | 1.4d | 2015-06-01 | 2015-06-03 | 82 | 23.9d |  |
| 113 | 3.2.1.2 | **Design technical infrastructure** | 1d | 2015-05-29 | 2015-06-01 |  | 25.5d |  |
| 114 | 3.2.1.2.1 | Build change management repository | 1d | 2015-05-29 | 2015-06-01 | 85 | 25.5d |  |
| 115 | 3.2.1.3 | Configure project environment | 0.4d | 2015-06-04 | 2015-06-05 | 83 | 21.9d |  |
| 116 | 3.2.1.4 | **Select tools** | 3.6d | 2015-05-27 | 2015-06-02 |  | 1.8d |  |
| 117 | 3.2.1.4.1 | Select development tools | 0.2d | 2015-05-27 | 2015-05-27 | 74 | 1.8d |  |
| 118 | 3.2.1.4.2 | Select testing tools | 0.4d | 2015-06-01 | 2015-06-02 | 82 | 14.2d |  |
| 119 | 3.2.2 | **Manage HR** | 2.4d | 2015-05-04 | 2015-05-06 |  | 0d |  |
| 120 | 3.2.2.1 | Form project team | 0.2d | 2015-05-04 | 2015-05-04 | 2SS | 0d |  |
| 121 | 3.2.2.2 | Train project team | 1d | 2015-05-04 | 2015-05-05 | 120 | 0d |  |
| 122 | 3.2.2.3 | Adapt team | 1.2d | 2015-05-05 | 2015-05-06 | 121 | 43.75d |  |
| 123 | 4 | **Monitoring and Controlling phase** | 34.3d | 2015-05-15 | 2015-07-02 |  | 2.3d |  |
| 124 | 4.1 | **Manage scope / cost / schedule** | 1.5d | 2015-05-18 | 2015-05-20 |  | 34.1d |  |
| 125 | 4.1.1 | Monitor product changes | 0.5d | 2015-05-18 | 2015-05-19 | 62 | 34.1d | 0d |
| 126 | 4.1.2 | Monitor project changes | 0.5d | 2015-05-18 | 2015-05-19 | 62 | 34.1d | 0d |
| 127 | 4.1.3 | Renegotiate scope / cost / schedule commitments | 1d | 2015-05-19 | 2015-05-20 | 125, 126 | 34.1d |  |
| 128 | 4.2 | **Manage communications** | 34.3d | 2015-05-15 | 2015-07-02 |  | 2.3d |  |
| 129 | 4.2.1 | **Implement communications methods and strategies** | 0.7d | 2015-05-15 | 2015-05-18 |  | 34.9d |  |
| 130 | 4.2.1.1 | Select tools | 0.4d | 2015-05-15 | 2015-05-15 | 47 | 34.9d | 0d |
| 131 | 4.2.1.2 | Specify protocols | 0.3d | 2015-05-15 | 2015-05-18 | 130 | 34.9d | 0d |
| 132 | 4.2.2 | **Distribute information** | 20d | 2015-06-04 | 2015-07-02 |  | 2.3d |  |
| 133 | 4.2.2.1 | **Attend status meetings** | 2d | 2015-06-04 | 2015-06-08 |  | 19.6d |  |
| 134 | 4.2.2.1.1 | Attend team meeting | 1.8d | 2015-06-04 | 2015-06-08 | 83 | 20.5d |  |
| 135 | 4.2.2.1.2 | Attend SH / SME meeting | 2d | 2015-06-04 | 2015-06-08 | 83 | 19.6d | 17.3d |
| 136 | 4.2.2.2 | Create status reports | 0.5d | 2015-07-01 | 2015-07-02 | 60, 108 | 2.3d | 0d |
| 137 | 4.2.2.3 | Document project procedures | 0.7d | 2015-07-02 | 2015-07-02 | 135, 136 | 2.3d |  |
| 138 | 4.2.3 | Resolve communications problems | 1d | 2015-05-18 | 2015-05-19 | 131 | 34.9d |  |

| ID | WBS | Task | Type | Duration | Start | Finish | Predecessors | Total slack | Free slack |
| --- | --- | --- | --- | --- | --- | --- | --- | --- | --- |
| 139 | 4.3 | **Manage quality control** |  | 13.2d | 2015-06-03 | 2015-06-23 |  | 10.1d |  |
| 140 | 4.3.1 | Monitor product quality |  | 1d | 2015-06-03 | 2015-06-04 | 87 | 22.3d |  |
| 141 | 4.3.2 | **Monitor project quality** |  | 1.6d | 2015-06-19 | 2015-06-23 |  | 10.1d |  |
| 142 | 4.3.2.1 | Perform audits |  | 1d | 2015-06-19 | 2015-06-22 | 93 | 10.1d | 0d |
| 143 | 4.3.2.2 | Implement process improvements |  | 0.6d | 2015-06-22 | 2015-06-23 | 142 | 10.1d |  |
| 144 | 4.4 | **Manage risk** |  | 1.3d | 2015-05-21 | 2015-05-22 |  | 30.8d |  |
| 145 | 4.4.1 | Monitor risks |  | 0.5d | 2015-05-21 | 2015-05-21 | 67 | 30.8d | 0d |
| 146 | 4.4.2 | Specify responses |  | 0.8d | 2015-05-21 | 2015-05-22 | 145 | 30.8d | 0d |
| 147 | 4.5 | Manage integration |  | 1d | 2015-05-22 | 2015-05-25 | 146 | 30.8d |  |
| 148 | 5 | **Closing phase** |  | 4d | 2015-07-01 | 2015-07-07 |  | 0d |  |
| 149 | 5.1 | **Product activities** |  | 0.6d | 2015-07-01 | 2015-07-01 |  | 0d |  |
| 150 | 5.1.1 | **Manage acceptance** |  | 0.6d | 2015-07-01 | 2015-07-01 |  | 0d |  |
| 151 | 5.1.1.1 | Demo product to SHs and SMEs |  | 0.3d | 2015-07-01 | 2015-07-01 | 107 | 0d |  |
| 152 | 5.1.1.2 | Obtain confirmation of acceptance criteria |  | 0.3d | 2015-07-01 | 2015-07-01 | 151 | 0d |  |
| 153 | 5.1.1.3 | Acceptance confirmed | milestone | 0d | 2015-07-01 | 2015-07-01 | 152 | 0d |  |
| 154 | 5.2 | **Project activities** |  | 3.4d | 2015-07-01 | 2015-07-07 |  | 0d |  |
| 155 | 5.2.1 | **Manage scope / cost / schedule closure** |  | 0.5d | 2015-07-01 | 2015-07-02 |  | 0d |  |
| 156 | 5.2.1.1 | Create final version of project plan |  | 0.5d | 2015-07-01 | 2015-07-02 | 108, 153 | 0d |  |
| 157 | 5.2.2 | **Manage communications closure** |  | 0.5d | 2015-07-02 | 2015-07-02 |  | 2.4d |  |
| 158 | 5.2.2.1 | Create final status reports |  | 0.5d | 2015-07-02 | 2015-07-02 | 108, 156 | 2.4d |  |
| 159 | 5.2.3 | **Manage quality closure** |  | 0.7d | 2015-07-02 | 2015-07-02 |  | 0d |  |
| 160 | 5.2.3.1 | Evaluate product quality |  | 0.3d | 2015-07-02 | 2015-07-02 | 156 | 0d |  |
| 161 | 5.2.3.2 | Evaluate project quality |  | 0.4d | 2015-07-02 | 2015-07-02 | 160 | 0d |  |
| 162 | 5.2.4 | **Manage risk closure** |  | 0.5d | 2015-07-02 | 2015-07-03 |  | 0d |  |
| 163 | 5.2.4.1 | Identify future risks |  | 0.3d | 2015-07-02 | 2015-07-03 | 161 | 0d |  |
| 164 | 5.2.4.2 | Specify risk responses |  | 0.2d | 2015-07-03 | 2015-07-03 | 163 | 0d |  |

| ID | WBS | Task | Type | Duration | Start | Finish | Predecessors | Total slack |
| --- | --- | --- | --- | --- | --- | --- | --- | --- |
| 165 | 5.2.5 | **Manage procurement closure** |  | 0.5d | 2015-07-03 | 2015-07-03 |  | 0d |
| 166 | 5.2.5.1 | Close out contracts |  | 0.5d | 2015-07-03 | 2015-07-03 | 164 | 0d |
| 167 | 5.2.5.2 | All contracts closed out | milestone | 0d | 2015-07-03 | 2015-07-03 | 166 | 0d |
| 168 | 5.2.6 | **Manage HR closure** |  | 0.3d | 2015-07-03 | 2015-07-06 |  | 0d |
| 169 | 5.2.6.1 | Provide PE feedback |  | 0.3d | 2015-07-03 | 2015-07-06 | 167 | 0d |
| 170 | 5.2.6.2 | Project team disbanded | milestone | 0d | 2015-07-06 | 2015-07-06 | 169 | 0d |
| 171 | 5.2.7 | **Manage integration closure** |  | 0.9d | 2015-07-06 | 2015-07-07 |  | 0d |
| 172 | 5.2.7.1 | Consolidate and index documentation |  | 0.5d | 2015-07-06 | 2015-07-06 | 170 | 0d |
| 173 | 5.2.7.2 | Create summary statistics for historical reference |  | 0.4d | 2015-07-06 | 2015-07-07 | 172 | 0d |
