Schedule from MS Project, 2015-05-11 to 2015-09-01, A marks actual dates.

## Calendars

- Standard: Mon-Fri 08:00-12:00, 13:00-17:00; Sat-Sun off. Exceptions (off unless hours are given): 2015-06-22 to 2015-06-26 (Nghỉ hè).

## Resources

| Resource |
| --- |
| NamNT |
| MaiTTT |
| PhuongBB |
| AnhTT |
| SangNV |
| Phuog |

## Schedule

| ID | WBS | Task | Type | Duration | Start | Finish | Predecessors | Complete | Remaining | Total slack | Free slack | Resources | Work | Actual work |
| --- | --- | --- | --- | --- | --- | --- | --- | --- | --- | --- | --- | --- | --- | --- |
| 1 | 1 | **BL** |  | 76.8d | 2015-05-11 08:00 A | 2015-09-01 15:24 |  | 24% | 58.01d | 0d |  |  | 575.2h | 467.52h |
| 2 | 1.1 | **Initiation** |  | 21.3d | 2015-05-11 08:00 A | 2015-06-09 10:24 |  | 95% | 1.13d | 55.5d |  |  | 294.4h | 283.52h |
| 3 | 1.1.1 | System feasible study |  | 0.3d | 2015-05-11 08:00 A | 2015-05-11 10:24 A |  | 100% |  |  |  | NamNT; MaiTTT; PhuongBB; AnhTT | 9.6h | 9.6h |
| 4 | 1.1.2 | Define business situation |  | 0.4d | 2015-05-11 10:24 A | 2015-05-11 14:36 A | 3 | 100% |  |  |  | NamNT; MaiTTT; PhuongBB; AnhTT | 12.8h | 12.8h |
| 5 | 1.1.3 | Develop project idea |  | 0.8d | 2015-05-11 14:36 A | 2015-05-12 12:00 A | 4 | 100% |  |  |  | NamNT; MaiTTT; PhuongBB; AnhTT | 25.6h | 25.6h |
| 6 | 1.1.4 | Define project and system scope |  | 0.5d | 2015-05-12 13:00 A | 2015-05-12 17:00 A | 5 | 100% |  |  |  | NamNT; MaiTTT; PhuongBB; AnhTT | 16h | 16h |
| 7 | 1.1.5 | Prepare project |  | 1d | 2015-05-13 08:00 A | 2015-05-13 17:00 A | 6 | 100% |  |  |  | NamNT; MaiTTT; PhuongBB; AnhTT | 32h | 32h |
| 8 | 1.1.6 | Kick-off meeting | milestone | 0.4d | 2015-05-14 08:00 A | 2015-05-14 11:12 A | 7 | 100% |  |  |  | NamNT; MaiTTT; PhuongBB; AnhTT | 12.8h | 12.8h |
| 9 | 1.1.7 | Q & A Management |  | 0.5d | 2015-05-14 11:12 A | 2015-05-14 16:12 A | 8 | 100% |  |  |  | MaiTTT | 4h | 4h |
| 10 | 1.1.8 | **Technologies** |  | 17.9d | 2015-05-14 11:12 A | 2015-06-09 10:24 |  | 79% | 3.8d | 55.5d |  |  | 56.8h | 45.92h |
| 11 | 1.1.8.1 | Research development technologies |  | 1.3d | 2015-05-14 11:12 A | 2015-05-28 17:00 A | 8 | 100% |  |  |  | NamNT; AnhTT | 16h | 16h |
| 12 | 1.1.8.2 | Install and configure Eclipse IDE and Android SDK |  | 0.6d | 2015-05-29 08:00 A | 2015-06-02 08:48 A | 11 | 100% |  |  |  | NamNT; AnhTT | 4.8h | 4.8h |
| 13 | 1.1.8.3 | Training Java, Android SDK & Eclipse IDE |  | 2d | 2015-06-02 08:48 A | 2015-06-04 08:48 | 12 | 95% | 0.11d | 58.7d |  | AnhTT | 16h | 15.12h |
| 14 | 1.1.8.4 | Install and configure Visual Studio, SQL Server |  | 1d | 2015-05-29 08:00 A | 2015-06-04 09:36 | 11 | 50% | 0.5d | 57.85d | 1.6d | NamNT; MaiTTT | 8h | 4h |
| 15 | 1.1.8.5 | Study web service |  | 1.5d | 2015-06-05 15:24 A | 2015-06-09 10:24 | 14 | 50% | 0.75d | 55.5d |  | MaiTTT | 12h | 6h |
| 16 | 1.1.9 | **SRS/PP/Concept design Review checklist** |  | 3d | 2015-05-14 16:12 A | 2015-05-19 16:12 A |  | 100% |  |  |  |  | 32h | 32h |
| 17 | 1.1.9.1 | Develop review checklist |  | 2.5d | 2015-05-14 16:12 A | 2015-05-19 11:12 A | 9 | 100% |  |  |  | MaiTTT; PhuongBB | 24h | 24h |
| 18 | 1.1.9.2 | Review review checklist |  | 0.2d | 2015-05-19 11:12 A | 2015-05-19 13:48 A | 17 | 100% |  |  |  | MaiTTT; PhuongBB | 3.2h | 3.2h |
| 19 | 1.1.9.3 | Update review checklist |  | 0.3d | 2015-05-19 13:48 A | 2015-05-19 16:12 A | 18 | 100% |  |  |  | MaiTTT; PhuongBB | 4.8h | 4.8h |
| 20 | 1.1.9.4 | Complete review checklist | milestone | 0d | 2015-05-19 16:12 A | 2015-05-19 16:12 A | 19 | 100% |  |  |  | MaiTTT; PhuongBB |  |  |
| 21 | 1.1.10 | **Requirements** |  | 5.2d | 2015-05-14 11:12 A | 2015-05-21 13:48 A |  | 100% |  |  |  |  | 25.6h | 25.6h |
| 22 | 1.1.10.1 | **User Requirements Specification** |  | 4.5d | 2015-05-14 11:12 A | 2015-05-20 16:12 A |  | 100% |  |  |  |  | 20h | 20h |
| 23 | 1.1.10.1.1 | Collect business requirements and processes |  | 0.5d | 2015-05-14 11:12 A | 2015-05-14 16:12 A | 8 | 100% |  |  |  | PhuongBB | 4h | 4h |
| 24 | 1.1.10.1.2 | Create draft requirements |  | 1d | 2015-05-14 16:12 A | 2015-05-15 16:12 A | 23 | 100% |  |  |  | PhuongBB | 8h | 8h |
| 25 | 1.1.10.1.3 | Complete draft requirements | milestone | 0d | 2015-05-15 16:12 A | 2015-05-15 16:12 A | 24 | 100% |  |  |  | NamNT |  |  |
| 26 | 1.1.10.1.4 | Develop main function and processes |  | 1d | 2015-05-19 16:12 A | 2015-05-20 16:12 A | 25 | 100% |  |  |  | PhuongBB | 8h | 8h |
| 27 | 1.1.10.2 | Review User Requirement Specification with checklist |  | 0.3d | 2015-05-20 16:12 A | 2015-05-21 09:36 A | 26, 20 | 100% |  |  |  | MaiTTT | 2.4h | 2.4h |
| 28 | 1.1.10.3 | Update User Requirement Specification |  | 0.4d | 2015-05-21 09:36 A | 2015-05-21 13:48 A | 27 | 100% |  |  |  | PhuongBB | 3.2h | 3.2h |
| 29 | 1.1.10.4 | Complete User Requirement Specification | milestone | 0d | 2015-05-21 13:48 A | 2015-05-21 13:48 A | 28 | 100% |  |  |  | NamNT |  |  |

| ID | WBS | Task | Type | Duration | Start | Finish | Predecessors | Complete | Remaining | Total slack | Resources | Work | Actual work |
| --- | --- | --- | --- | --- | --- | --- | --- | --- | --- | --- | --- | --- | --- |
| 30 | 1.1.11 | **Concept design** |  | 3d | 2015-05-15 16:12 A | 2015-05-20 16:12 A |  | 100% |  |  |  | 16h | 16h |
| 31 | 1.1.11.1 | Create draft concept design |  | 1d | 2015-05-15 16:12 A | 2015-05-19 11:12 A | 25 | 100% |  |  | AnhTT | 8h | 8h |
| 32 | 1.1.11.2 | Review concept design with checklist |  | 0.5d | 2015-05-19 16:12 A | 2015-05-20 11:12 A | 31, 20 | 100% |  |  | MaiTTT | 4h | 4h |
| 33 | 1.1.11.3 | Update concept design |  | 0.5d | 2015-05-20 11:12 A | 2015-05-20 16:12 A | 32 | 100% |  |  | AnhTT | 4h | 4h |
| 34 | 1.1.11.4 | Complete concept design | milestone | 0d | 2015-05-20 16:12 A | 2015-05-20 16:12 A | 33 | 100% |  |  | NamNT |  |  |
| 35 | 1.1.12 | **Project plan** |  | 6.4d | 2015-05-14 11:12 A | 2015-05-22 15:24 A |  | 100% |  |  |  | 45.6h | 45.6h |
| 36 | 1.1.12.1 | Develop project definition |  | 0.7d | 2015-05-14 11:12 A | 2015-05-15 08:48 A | 8 | 100% |  |  |  |  |  |
| 37 | 1.1.12.2 | Develop Work Breakdown Structure |  | 0.9d | 2015-05-15 08:48 A | 2015-05-15 17:00 A | 36 | 100% |  |  | NamNT | 7.2h | 7.2h |
| 38 | 1.1.12.3 | Create Project Schedule |  | 2d | 2015-05-18 08:00 A | 2015-05-19 17:00 A | 37 | 100% |  |  | NamNT | 16h | 16h |
| 39 | 1.1.12.4 | Create Configuration Management Plan version 1.0 |  | 0.8d | 2015-05-20 08:00 A | 2015-05-20 15:24 A | 38 | 100% |  |  | NamNT | 6.4h | 6.4h |
| 40 | 1.1.12.5 | Create Project Plan (first version) |  | 1.5d | 2015-05-20 15:24 A | 2015-05-22 10:24 A | 39 | 100% |  |  | NamNT | 12h | 12h |
| 41 | 1.1.12.6 | Review Project Plan (first version) |  | 0.5d | 2015-05-22 10:24 A | 2015-05-22 15:24 A | 40 | 100% |  |  | MaiTTT; PhuongBB | 4h | 4h |
| 42 | 1.1.12.7 | Complete Project Plan (final version) | milestone | 0d | 2015-05-22 15:24 A | 2015-05-22 15:24 A | 41 | 100% |  |  | NamNT |  |  |
| 43 | 1.1.13 | **Progress Report 1** |  | 0.7d | 2015-05-22 10:24 A | 2015-05-22 17:00 A |  | 100% |  |  |  | 5.6h | 5.6h |
| 44 | 1.1.13.1 | Develop Progress Report 1 |  | 0.4d | 2015-05-22 10:24 A | 2015-05-22 14:36 A | 38 | 100% |  |  | NamNT | 3.2h | 3.2h |
| 45 | 1.1.13.2 | Review Progress Report 1 |  | 0.2d | 2015-05-22 14:36 A | 2015-05-22 16:12 A | 44 | 100% |  |  | MaiTTT | 1.6h | 1.6h |
| 46 | 1.1.13.3 | Update Progress Report 1 |  | 0.1d | 2015-05-22 16:12 A | 2015-05-22 17:00 A | 45 | 100% |  |  | NamNT | 0.8h | 0.8h |
| 47 | 1.1.13.4 | Complete Progress Report 1 | milestone | 0d | 2015-05-22 17:00 A | 2015-05-22 17:00 A | 46 | 100% |  |  | NamNT |  |  |
| 48 | 1.1.14 | Submit PP, URS, Concept Design | milestone | 0d | 2015-05-22 17:00 A | 2015-05-22 17:00 A | 42, 47, 29, 34 | 100% |  |  | NamNT |  |  |
| 49 | 1.2 | **Solution** |  | 28.5d | 2015-05-25 08:00 A | 2015-07-09 12:00 |  | 35% | 18.54d | 38.3d |  | 280.8h | 184h |
| 50 | 1.2.1 | **Requirements** |  | 10.1d | 2015-05-25 08:00 A | 2015-06-08 08:48 |  | 89% | 1.12d | 0d |  | 220.8h | 184h |
| 51 | 1.2.1.1 | **Software Requirements Specification** |  | 10.1d | 2015-05-25 08:00 A | 2015-06-08 08:48 |  | 89% | 1.12d | 0d |  | 220.8h | 184h |
| 52 | 1.2.1.1.1 | **Functional Requirement Specification** |  | 5.6d | 2015-05-25 08:00 A | 2015-06-01 13:48 A |  | 100% |  |  |  | 144.8h | 144.8h |
| 53 | 1.2.1.1.1.1 | **Bus Driver Module** |  | 0.6d | 2015-05-25 08:00 A | 2015-05-25 13:48 A |  | 100% |  |  |  | 4.8h | 4.8h |
| 54 | 1.2.1.1.1.1.1 | Send bus info module |  | 0.6d | 2015-05-25 08:00 A | 2015-05-25 13:48 A | 48 | 100% |  |  | AnhTT | 4.8h | 4.8h |

| ID | WBS | Task | Duration | Start | Finish | Predecessors | Complete | Resources | Work | Actual work |
| --- | --- | --- | --- | --- | --- | --- | --- | --- | --- | --- |
| 55 | 1.2.1.1.1.2 | **Bus Rider Module** | 5.6d | 2015-05-25 08:00 A | 2015-06-01 13:48 A |  | 100% |  | 140h | 140h |
| 56 | 1.2.1.1.1.2.1 | **Common module** | 5.2d | 2015-05-25 08:00 A | 2015-06-01 09:36 A |  | 100% |  | 27.2h | 27.2h |
| 57 | 1.2.1.1.1.2.1.1 | Turn on/off Snooze mode | 1d | 2015-05-25 08:00 A | 2015-05-25 17:00 A | 48 | 100% | NamNT | 8h | 8h |
| 58 | 1.2.1.1.1.2.1.2 | Change app setting | 1.4d | 2015-05-26 13:48 A | 2015-05-27 17:00 A | 57 | 100% | NamNT | 11.2h | 11.2h |
| 59 | 1.2.1.1.1.2.1.3 | View dashboard | 1d | 2015-05-29 09:36 A | 2015-06-01 09:36 A | 58 | 100% | NamNT | 8h | 8h |
| 60 | 1.2.1.1.1.2.2 | **Account Management module** | 3.2d | 2015-05-26 08:00 A | 2015-05-29 09:36 A |  | 100% |  | 12.8h | 12.8h |
| 61 | 1.2.1.1.1.2.2.1 | Log in | 0.6d | 2015-05-26 08:00 A | 2015-05-26 13:48 A | 48 | 100% | NamNT | 4.8h | 4.8h |
| 62 | 1.2.1.1.1.2.2.2 | Log out | 0.3d | 2015-05-28 08:00 A | 2015-05-28 10:24 A | 61 | 100% | NamNT | 2.4h | 2.4h |
| 63 | 1.2.1.1.1.2.2.3 | View account profile | 0.2d | 2015-05-28 10:24 A | 2015-05-28 12:00 A | 62 | 100% | NamNT | 1.6h | 1.6h |
| 64 | 1.2.1.1.1.2.2.4 | Change account info | 0.2d | 2015-05-28 13:00 A | 2015-05-28 14:36 A | 63 | 100% | NamNT | 1.6h | 1.6h |
| 65 | 1.2.1.1.1.2.2.5 | Forgot password | 0.3d | 2015-05-28 14:36 A | 2015-05-29 09:36 A | 64 | 100% | NamNT | 2.4h | 2.4h |
| 66 | 1.2.1.1.1.2.3 | **Bus module** | 4d | 2015-05-25 08:00 A | 2015-05-28 17:00 A |  | 100% |  | 32h | 32h |
| 67 | 1.2.1.1.1.2.3.1 | View bus list | 0.3d | 2015-05-25 08:00 A | 2015-05-25 10:24 A | 48 | 100% | PhuongBB | 2.4h | 2.4h |
| 68 | 1.2.1.1.1.2.3.2 | View bus info | 0.3d | 2015-05-25 10:24 A | 2015-05-25 13:48 A | 67 | 100% | PhuongBB | 2.4h | 2.4h |
| 69 | 1.2.1.1.1.2.3.3 | View bus route | 0.6d | 2015-05-25 13:48 A | 2015-05-26 09:36 A | 68 | 100% | PhuongBB | 4.8h | 4.8h |
| 70 | 1.2.1.1.1.2.3.4 | View nearest bus | 1d | 2015-05-26 09:36 A | 2015-05-27 09:36 A | 69 | 100% | PhuongBB | 8h | 8h |
| 71 | 1.2.1.1.1.2.3.5 | View bus map | 0.8d | 2015-05-27 09:36 A | 2015-05-27 17:00 A | 70 | 100% | PhuongBB | 6.4h | 6.4h |
| 72 | 1.2.1.1.1.2.3.6 | View bus near me | 1d | 2015-05-28 08:00 A | 2015-05-28 17:00 A | 71 | 100% | PhuongBB | 8h | 8h |
| 73 | 1.2.1.1.1.2.4 | **Path Finder module** | 3.2d | 2015-05-25 13:48 A | 2015-05-28 15:24 A |  | 100% |  | 25.6h | 25.6h |
| 74 | 1.2.1.1.1.2.4.1 | Find path | 1.5d | 2015-05-25 13:48 A | 2015-05-27 08:48 A | 54 | 100% | AnhTT | 12h | 12h |
| 75 | 1.2.1.1.1.2.4.2 | View paths found | 0.4d | 2015-05-27 08:48 A | 2015-05-27 12:00 A | 74 | 100% | AnhTT | 3.2h | 3.2h |
| 76 | 1.2.1.1.1.2.4.3 | View path detail | 0.7d | 2015-05-27 13:00 A | 2015-05-28 09:36 A | 75 | 100% | AnhTT | 5.6h | 5.6h |
| 77 | 1.2.1.1.1.2.4.4 | View direction | 0.6d | 2015-05-28 09:36 A | 2015-05-28 15:24 A | 76 | 100% | AnhTT | 4.8h | 4.8h |
| 78 | 1.2.1.1.1.2.5 | **Reminder module** | 1.8d | 2015-05-28 15:24 A | 2015-06-01 13:48 A |  | 100% |  | 14.4h | 14.4h |
| 79 | 1.2.1.1.1.2.5.1 | View bus reminder | 0.5d | 2015-05-28 15:24 A | 2015-05-29 10:24 A | 77 | 100% | AnhTT | 4h | 4h |
| 80 | 1.2.1.1.1.2.5.2 | Add reminder | 0.2d | 2015-05-29 10:24 A | 2015-05-29 12:00 A | 79 | 100% | AnhTT | 1.6h | 1.6h |
| 81 | 1.2.1.1.1.2.5.3 | Edit reminder | 0.3d | 2015-05-29 13:00 A | 2015-05-29 15:24 A | 80 | 100% | AnhTT | 2.4h | 2.4h |
| 82 | 1.2.1.1.1.2.5.4 | Delete reminder | 0.1d | 2015-05-29 15:24 A | 2015-05-29 16:12 A | 81 | 100% | AnhTT | 0.8h | 0.8h |
| 83 | 1.2.1.1.1.2.5.5 | Suspend/Unsuspend all reminder | 0.5d | 2015-05-29 16:12 A | 2015-06-01 11:12 A | 82 | 100% | AnhTT | 4h | 4h |
| 84 | 1.2.1.1.1.2.5.6 | Suspend/Unsuspend a chosen reminder | 0.2d | 2015-06-01 11:12 A | 2015-06-01 13:48 A | 83 | 100% | AnhTT | 1.6h | 1.6h |

| ID | WBS | Task | Type | Duration | Start | Finish | Predecessors | Complete | Remaining | Total slack | Free slack | Resources | Work | Actual work |
| --- | --- | --- | --- | --- | --- | --- | --- | --- | --- | --- | --- | --- | --- | --- |
| 85 | 1.2.1.1.1.2.6 | **Track module** |  | 1.2d | 2015-05-25 08:00 A | 2015-05-26 09:36 A |  | 100% |  |  |  |  | 9.6h | 9.6h |
| 86 | 1.2.1.1.1.2.6.1 | Tracking |  | 1d | 2015-05-25 08:00 A | 2015-05-25 17:00 A | 48 | 100% |  |  |  | MaiTTT | 8h | 8h |
| 87 | 1.2.1.1.1.2.6.2 | Cancel track |  | 0.2d | 2015-05-26 08:00 A | 2015-05-26 09:36 A | 86 | 100% |  |  |  | MaiTTT | 1.6h | 1.6h |
| 88 | 1.2.1.1.1.2.7 | **Favorite module** |  | 2.3d | 2015-05-26 09:36 A | 2015-05-28 12:00 A |  | 100% |  |  |  |  | 18.4h | 18.4h |
| 89 | 1.2.1.1.1.2.7.1 | View favorite places |  | 0.4d | 2015-05-26 09:36 A | 2015-05-26 13:48 A | 87 | 100% |  |  |  | MaiTTT | 3.2h | 3.2h |
| 90 | 1.2.1.1.1.2.7.2 | Add favorite places |  | 0.2d | 2015-05-26 13:48 A | 2015-05-26 15:24 A | 89 | 100% |  |  |  | MaiTTT | 1.6h | 1.6h |
| 91 | 1.2.1.1.1.2.7.3 | Edit favorite places |  | 0.3d | 2015-05-26 15:24 A | 2015-05-27 08:48 A | 90 | 100% |  |  |  | MaiTTT | 2.4h | 2.4h |
| 92 | 1.2.1.1.1.2.7.4 | Delete favorite places |  | 0.2d | 2015-05-27 08:48 A | 2015-05-27 10:24 A | 91 | 100% |  |  |  | MaiTTT | 1.6h | 1.6h |
| 93 | 1.2.1.1.1.2.7.5 | Search favorite places |  | 0.2d | 2015-05-27 10:24 A | 2015-05-27 12:00 A | 92 | 100% |  |  |  | MaiTTT | 1.6h | 1.6h |
| 94 | 1.2.1.1.1.2.7.6 | View favorite buses |  | 0.4d | 2015-05-27 13:00 A | 2015-05-27 16:12 A | 93 | 100% |  |  |  | MaiTTT | 3.2h | 3.2h |
| 95 | 1.2.1.1.1.2.7.7 | Add favorite buses |  | 0.2d | 2015-05-27 16:12 A | 2015-05-28 08:48 A | 94 | 100% |  |  |  | MaiTTT | 1.6h | 1.6h |
| 96 | 1.2.1.1.1.2.7.8 | Delete favorite buses |  | 0.2d | 2015-05-28 08:48 A | 2015-05-28 10:24 A | 95 | 100% |  |  |  | MaiTTT | 1.6h | 1.6h |
| 97 | 1.2.1.1.1.2.7.9 | Search favorite buses |  | 0.2d | 2015-05-28 10:24 A | 2015-05-28 12:00 A | 96 | 100% |  |  |  | MaiTTT | 1.6h | 1.6h |
| 98 | 1.2.1.1.2 | **Non-functional Requirement Specification** |  | 2.5d | 2015-05-28 13:00 A | 2015-06-01 17:00 A |  | 100% |  |  |  |  | 17.6h | 17.6h |
| 99 | 1.2.1.1.2.1 | Develop User Interface Requirement |  | 1.4d | 2015-05-28 13:00 A | 2015-05-29 16:12 A | 97 | 100% |  |  |  | MaiTTT | 11.2h | 11.2h |
| 100 | 1.2.1.1.2.2 | Develop Performance Requirement |  | 0.8d | 2015-06-01 09:36 A | 2015-06-01 17:00 A | 99 | 100% |  |  |  | NamNT | 6.4h | 6.4h |
| 101 | 1.2.1.1.3 | Review Software Requirement Specification with checklist |  | 2d | 2015-06-02 08:00 A | 2015-06-03 17:00 | 54, 59, 65, 72, 77, 84, 87, 97, 100 | 70% | 0.6d | 0d |  | PhuongBB; MaiTTT | 26.4h | 21.6h |
| 102 | 1.2.1.1.4 | Update Software Requirement Specification |  | 2.1d | 2015-06-04 08:00 | 2015-06-08 08:48 | 101 |  |  | 0d |  | AnhTT; NamNT | 32h |  |
| 103 | 1.2.1.1.5 | Complete Software Requirement Specification | milestone | 0d | 2015-06-08 08:48 | 2015-06-08 08:48 | 102 |  |  | 0d |  | NamNT |  |  |
| 104 | 1.2.2 | **Design** |  | 12.2d | 2015-05-29 16:12 | 2015-06-17 08:48 |  |  |  | 2.4d |  |  | 60h |  |
| 105 | 1.2.2.1 | **Design Review checklist** |  | 4.6d | 2015-05-29 16:12 | 2015-06-05 12:00 |  |  |  | 2.4d |  |  | 38.4h |  |
| 106 | 1.2.2.1.1 | Develop review checklist |  | 2.3d | 2015-05-29 16:12 | 2015-06-05 09:36 | 99 |  |  | 2.4d | 0d | MaiTTT; PhuongBB | 33.6h |  |
| 107 | 1.2.2.1.2 | Review review checklist |  | 0.1d | 2015-06-05 09:36 | 2015-06-05 10:24 | 106 |  |  | 2.4d | 0d | MaiTTT; PhuongBB | 1.6h |  |
| 108 | 1.2.2.1.3 | Update review checklist |  | 0.2d | 2015-06-05 10:24 | 2015-06-05 12:00 | 107 |  |  | 2.4d | 0d | MaiTTT; PhuongBB | 3.2h |  |
| 109 | 1.2.2.1.4 | Complete review checklist | milestone | 0d | 2015-06-05 12:00 | 2015-06-05 12:00 | 108 |  |  | 2.4d |  | MaiTTT; PhuongBB |  |  |

| ID | WBS | Task | Type | Duration | Start | Finish | Predecessors | Total slack | Free slack | Resources | Work |
| --- | --- | --- | --- | --- | --- | --- | --- | --- | --- | --- | --- |
| 110 | 1.2.2.2 | **Architecture design** |  | 2.4d | 2015-06-08 08:48 | 2015-06-10 12:00 |  | 0d |  |  | 21.6h |
| 111 | 1.2.2.2.1 | Define system structure and collect system features |  | 1d | 2015-06-08 08:48 | 2015-06-09 08:48 | 103 | 0d |  | NamNT | 8h |
| 112 | 1.2.2.2.2 | Study & choose System Architecture |  | 0.8d | 2015-06-09 08:48 | 2015-06-09 16:12 | 111 | 0d |  | NamNT | 6.4h |
| 113 | 1.2.2.2.3 | Review Architecture Design with checklist |  | 0.3d | 2015-06-09 16:12 | 2015-06-10 09:36 | 109, 112 | 0d |  | PhuongBB; MaiTTT | 4.8h |
| 114 | 1.2.2.2.4 | Update Architecture Design |  | 0.3d | 2015-06-10 09:36 | 2015-06-10 12:00 | 113 | 0d |  | NamNT | 2.4h |
| 115 | 1.2.2.2.5 | Complete System Architecture version 1.0 | milestone | 0d | 2015-06-10 12:00 | 2015-06-10 12:00 | 114 | 0d |  | NamNT |  |
| 116 | 1.2.2.3 | **Detailed design** |  | 3.1d | 2015-06-10 13:00 | 2015-06-15 13:48 |  | 1.5d |  |  |  |
| 117 | 1.2.2.3.1 | **User Interface design** |  | 2.1d | 2015-06-10 13:00 | 2015-06-12 13:48 |  | 1.5d |  |  |  |
| 118 | 1.2.2.3.1.1 | **Bus Driver Module** |  | 0.4d | 2015-06-10 13:00 | 2015-06-10 16:12 |  | 2.4d |  |  |  |
| 119 | 1.2.2.3.1.1.1 | Send bus info module |  | 0.4d | 2015-06-10 13:00 | 2015-06-10 16:12 | 115 | 2.4d | 0d |  |  |
| 120 | 1.2.2.3.1.2 | **Bus Rider Module** |  | 2.1d | 2015-06-10 13:00 | 2015-06-12 13:48 |  | 1.5d |  |  |  |
| 121 | 1.2.2.3.1.2.1 | **Sync module** |  | 0.8d | 2015-06-10 16:12 | 2015-06-11 14:36 |  | 2.4d |  |  |  |
| 122 | 1.2.2.3.1.2.1.1 | PhoneNumberSync module |  | 0.3d | 2015-06-10 16:12 | 2015-06-11 09:36 | 119 | 2.4d | 0d |  |  |
| 123 | 1.2.2.3.1.2.1.2 | Connect Facebook module |  | 0.1d | 2015-06-11 09:36 | 2015-06-11 10:24 | 122 | 2.4d | 0d |  |  |
| 124 | 1.2.2.3.1.2.1.3 | Show Favorite place module |  | 0.1d | 2015-06-11 10:24 | 2015-06-11 11:12 | 123 | 2.4d | 0d |  |  |
| 125 | 1.2.2.3.1.2.1.4 | Show Favorite bus module |  | 0.1d | 2015-06-11 11:12 | 2015-06-11 12:00 | 124 | 2.4d | 0d |  |  |
| 126 | 1.2.2.3.1.2.1.5 | Add/remove Favorite place module |  | 0.1d | 2015-06-11 13:00 | 2015-06-11 13:48 | 125 | 2.4d | 0d |  |  |
| 127 | 1.2.2.3.1.2.1.6 | About module |  | 0.1d | 2015-06-11 13:48 | 2015-06-11 14:36 | 126 | 2.4d | 0.9d |  |  |
| 128 | 1.2.2.3.1.2.2 | **Bus module** |  | 2.1d | 2015-06-10 13:00 | 2015-06-12 13:48 |  | 1.5d |  |  |  |
| 129 | 1.2.2.3.1.2.2.1 | Bus list module |  | 0.1d | 2015-06-10 13:00 | 2015-06-10 13:48 | 115 | 1.5d | 0d |  |  |
| 130 | 1.2.2.3.1.2.2.2 | Bus info module |  | 0.3d | 2015-06-10 13:48 | 2015-06-10 16:12 | 129 | 1.5d | 0d |  |  |
| 131 | 1.2.2.3.1.2.2.3 | Bus route module |  | 0.2d | 2015-06-10 16:12 | 2015-06-11 08:48 | 130 | 1.5d | 0d |  |  |
| 132 | 1.2.2.3.1.2.2.4 | Bus nearest module |  | 0.3d | 2015-06-11 08:48 | 2015-06-11 11:12 | 131 | 1.5d | 0d |  |  |
| 133 | 1.2.2.3.1.2.2.5 | Bus map module |  | 0.2d | 2015-06-11 11:12 | 2015-06-11 13:48 | 132 | 1.5d | 0d |  |  |
| 134 | 1.2.2.3.1.2.2.6 | Set/unset favorite bus module |  | 0.1d | 2015-06-11 13:48 | 2015-06-11 14:36 | 133 | 1.5d | 0d |  |  |
| 135 | 1.2.2.3.1.2.2.7 | Remind module |  | 0.3d | 2015-06-11 14:36 | 2015-06-11 17:00 | 134 | 1.5d | 0d |  |  |
| 136 | 1.2.2.3.1.2.2.8 | Track module |  | 0.2d | 2015-06-12 08:00 | 2015-06-12 09:36 | 135 | 1.5d | 0d |  |  |
| 137 | 1.2.2.3.1.2.2.9 | Get notification module |  | 0.3d | 2015-06-12 09:36 | 2015-06-12 12:00 | 136 | 1.5d | 0d |  |  |
| 138 | 1.2.2.3.1.2.2.10 | Swap direction module |  | 0.1d | 2015-06-12 13:00 | 2015-06-12 13:48 | 137 | 1.5d | 0d |  |  |

| ID | WBS | Task | Type | Duration | Start | Finish | Predecessors | Total slack | Free slack |
| --- | --- | --- | --- | --- | --- | --- | --- | --- | --- |
| 139 | 1.2.2.3.1.2.3 | **Shigeki module** |  | 1.6d | 2015-06-10 13:00 | 2015-06-12 08:48 |  | 2d |  |
| 140 | 1.2.2.3.1.2.3.1 | Achievement module |  | 0.3d | 2015-06-10 13:00 | 2015-06-10 15:24 | 115 | 2d | 0d |
| 141 | 1.2.2.3.1.2.3.2 | Collection module |  | 0.3d | 2015-06-10 15:24 | 2015-06-11 08:48 | 140 | 2d | 0d |
| 142 | 1.2.2.3.1.2.3.3 | Mission module |  | 0.3d | 2015-06-11 08:48 | 2015-06-11 11:12 | 141 | 2d | 0d |
| 143 | 1.2.2.3.1.2.3.4 | Statistic module |  | 0.3d | 2015-06-11 11:12 | 2015-06-11 14:36 | 142 | 2d | 0d |
| 144 | 1.2.2.3.1.2.3.5 | Rank module |  | 0.1d | 2015-06-11 14:36 | 2015-06-11 15:24 | 143 | 2d | 0d |
| 145 | 1.2.2.3.1.2.3.6 | Scan QR code module |  | 0.3d | 2015-06-11 15:24 | 2015-06-12 08:48 | 144 | 2d | 0.5d |
| 146 | 1.2.2.3.1.2.4 | **Search module** |  | 0.6d | 2015-06-10 13:00 | 2015-06-11 08:48 |  | 2.5d |  |
| 147 | 1.2.2.3.1.2.4.1 | Search bus module |  | 0.1d | 2015-06-10 13:00 | 2015-06-10 13:48 | 115 | 2.5d | 0d |
| 148 | 1.2.2.3.1.2.4.2 | Search route module |  | 0.3d | 2015-06-10 13:48 | 2015-06-10 16:12 | 147 | 2.5d | 0d |
| 149 | 1.2.2.3.1.2.4.3 | Search Favorite bus module |  | 0.1d | 2015-06-10 16:12 | 2015-06-10 17:00 | 148 | 2.5d | 0d |
| 150 | 1.2.2.3.1.2.4.4 | Search Favorite place module |  | 0.1d | 2015-06-11 08:00 | 2015-06-11 08:48 | 149 | 2.5d | 0d |
| 151 | 1.2.2.3.1.2.5 | Setting module |  | 0.5d | 2015-06-11 08:48 | 2015-06-11 13:48 | 150 | 2.5d | 1d |
| 152 | 1.2.2.3.2 | Review Detailed Design with checklist |  | 1d | 2015-06-12 13:48 | 2015-06-15 13:48 | 109, 119, 127, 138, 145, 151 | 1.5d | 0d |
| 153 | 1.2.2.3.3 | Update Detailed Design | milestone | 0d | 2015-06-15 13:48 | 2015-06-15 13:48 | 152 | 1.5d | 0d |
| 154 | 1.2.2.3.4 | Complete Detailed Design version 1.0 | milestone | 0d | 2015-06-15 13:48 | 2015-06-15 13:48 | 153 | 1.5d |  |
| 155 | 1.2.2.4 | **Database design** |  | 1.8d | 2015-06-10 13:00 | 2015-06-12 10:24 |  | 0d |  |
| 156 | 1.2.2.4.1 | Create Databse Design draft version |  | 1d | 2015-06-10 13:00 | 2015-06-11 12:00 | 115 | 0d |  |
| 157 | 1.2.2.4.2 | Review Database Design with checklist |  | 0.5d | 2015-06-11 13:00 | 2015-06-11 17:00 | 108, 156 | 0d |  |
| 158 | 1.2.2.4.3 | Update Database Design |  | 0.3d | 2015-06-12 08:00 | 2015-06-12 10:24 | 157 | 0d |  |
| 159 | 1.2.2.4.4 | Complete Database Design version 1.0 | milestone | 0d | 2015-06-12 10:24 | 2015-06-12 10:24 | 158 | 0d |  |
| 160 | 1.2.2.5 | **Class design** |  | 2.8d | 2015-06-12 10:24 | 2015-06-17 08:48 |  | 0d |  |
| 161 | 1.2.2.5.1 | Define class/component |  | 2d | 2015-06-12 10:24 | 2015-06-16 10:24 | 159 | 0d |  |
| 162 | 1.2.2.5.2 | Review Class Design with checklist |  | 0.5d | 2015-06-16 10:24 | 2015-06-16 15:24 | 161 | 0d |  |
| 163 | 1.2.2.5.3 | Update Class Design |  | 0.3d | 2015-06-16 15:24 | 2015-06-17 08:48 | 162 | 0d |  |
| 164 | 1.2.2.5.4 | Complete Class Design version 1.0 | milestone | 0d | 2015-06-17 08:48 | 2015-06-17 08:48 | 163 | 0d |  |
| 165 | 1.2.2.6 | Complete design | milestone | 0d | 2015-06-17 08:48 | 2015-06-17 08:48 | 115, 154, 159, 164 | 49.7d | 0d |

| ID | WBS | Task | Type | Duration | Start | Finish | Predecessors | Total slack | Free slack |
| --- | --- | --- | --- | --- | --- | --- | --- | --- | --- |
| 166 | 1.2.3 | **Progress Report 2** |  | 0.5d | 2015-06-17 08:48 | 2015-06-17 13:48 |  | 49.2d |  |
| 167 | 1.2.3.1 | Develop Progress Report 2 |  | 0.3d | 2015-06-17 08:48 | 2015-06-17 11:12 | 154, 159, 164 | 49.2d | 0d |
| 168 | 1.2.3.2 | Review Progress Report 2 |  | 0.1d | 2015-06-17 11:12 | 2015-06-17 12:00 | 167 | 49.2d | 0d |
| 169 | 1.2.3.3 | Update Progress Report 2 |  | 0.1d | 2015-06-17 13:00 | 2015-06-17 13:48 | 168 | 49.2d | 0d |
| 170 | 1.2.3.4 | Complete Progress Report 2 | milestone | 0d | 2015-06-17 13:48 | 2015-06-17 13:48 | 169 | 49.2d |  |
| 171 | 1.2.4 | Submit SRS,AD,DD | milestone | 0d | 2015-06-17 08:48 | 2015-06-17 08:48 | 103, 165 | 49.7d |  |
| 172 | 1.2.5 | **Coding & Unit Testing** |  | 1d | 2015-06-17 08:48 | 2015-06-18 08:48 |  | 0d |  |
| 173 | 1.2.5.1 | **Bus Driver Module** |  | 1d | 2015-06-17 08:48 | 2015-06-18 08:48 |  | 0d |  |
| 174 | 1.2.5.1.1 | Send bus info module |  | 1d | 2015-06-17 08:48 | 2015-06-18 08:48 | 115, 154, 159, 164 | 0d |  |
| 175 | 1.2.6 | **Testing** |  | 12.8d | 2015-06-10 13:00 | 2015-07-06 10:24 |  | 18.6d |  |
| 176 | 1.2.6.1 | **Test review checklist** |  | 1d | 2015-06-10 13:00 | 2015-06-11 12:00 |  | 19d |  |
| 177 | 1.2.6.1.1 | **Test plan review checklist** |  | 0.6d | 2015-06-10 13:00 | 2015-06-11 08:48 |  | 19d |  |
| 178 | 1.2.6.1.1.1 | Develop test plan review checklist |  | 0.3d | 2015-06-10 13:00 | 2015-06-10 15:24 | 115 | 19d | 0d |
| 179 | 1.2.6.1.1.2 | Review test plan review checklist |  | 0.2d | 2015-06-10 15:24 | 2015-06-10 17:00 | 178 | 19d | 0d |
| 180 | 1.2.6.1.1.3 | Update test plan review checklist |  | 0.1d | 2015-06-11 08:00 | 2015-06-11 08:48 | 179 | 19d | 0d |
| 181 | 1.2.6.1.1.4 | Complete test plan review checklist | milestone | 0d | 2015-06-11 08:48 | 2015-06-11 08:48 | 180 | 19d | 0.4d |
| 182 | 1.2.6.1.2 | **Test case review checklist** |  | 1d | 2015-06-10 13:00 | 2015-06-11 12:00 |  | 40.5d |  |
| 183 | 1.2.6.1.2.1 | Develop test case review checklist |  | 0.5d | 2015-06-10 13:00 | 2015-06-10 17:00 | 115 | 40.5d | 0d |
| 184 | 1.2.6.1.2.2 | Review test case review checklist |  | 0.3d | 2015-06-11 08:00 | 2015-06-11 10:24 | 183 | 40.5d | 0d |
| 185 | 1.2.6.1.2.3 | Update test case review checklist |  | 0.2d | 2015-06-11 10:24 | 2015-06-11 12:00 | 184 | 40.5d | 0d |
| 186 | 1.2.6.1.2.4 | Complete test case review checklist | milestone | 0d | 2015-06-11 12:00 | 2015-06-11 12:00 | 185 | 40.5d | 0d |
| 187 | 1.2.6.1.3 | Complete review checklist | milestone | 0d | 2015-06-11 12:00 | 2015-06-11 12:00 | 181, 186 | 40.5d | 11.8d |
| 188 | 1.2.6.2 | **Test plan** |  | 1.8d | 2015-06-10 13:00 | 2015-06-12 10:24 |  | 18.6d |  |
| 189 | 1.2.6.2.1 | Develop test plan |  | 1d | 2015-06-10 13:00 | 2015-06-11 12:00 | 115 | 18.6d | 0d |
| 190 | 1.2.6.2.2 | Review test plan |  | 0.5d | 2015-06-11 13:00 | 2015-06-11 17:00 | 189, 181 | 18.6d | 0d |
| 191 | 1.2.6.2.3 | Update test plan |  | 0.3d | 2015-06-12 08:00 | 2015-06-12 10:24 | 190 | 18.6d | 0d |
| 192 | 1.2.6.2.4 | Complete test plan | milestone | 0d | 2015-06-12 10:24 | 2015-06-12 10:24 | 191 | 18.6d | 0d |

| ID | WBS | Task | Type | Duration | Start | Finish | Predecessors | Total slack | Free slack |
| --- | --- | --- | --- | --- | --- | --- | --- | --- | --- |
| 193 | 1.2.6.3 | **Test case** |  | 11d | 2015-06-12 10:24 | 2015-07-06 10:24 |  | 18.6d |  |
| 194 | 1.2.6.3.1 | **Unit test** |  | 4d | 2015-06-12 10:24 | 2015-06-18 10:24 |  | 18.6d |  |
| 195 | 1.2.6.3.1.1 | **Develop unit test case** |  | 2d | 2015-06-12 10:24 | 2015-06-16 10:24 |  | 18.6d |  |
| 196 | 1.2.6.3.1.1.1 | Bus driver module |  | 0.5d | 2015-06-12 10:24 | 2015-06-12 15:24 | 192 | 18.6d | 0d |
| 197 | 1.2.6.3.1.1.2 | Sync module |  | 0.5d | 2015-06-12 15:24 | 2015-06-15 10:24 | 196 | 18.6d | 0d |
| 198 | 1.2.6.3.1.1.3 | Bus module |  | 1d | 2015-06-15 10:24 | 2015-06-16 10:24 | 197 | 18.6d | 0d |
| 199 | 1.2.6.3.1.1.4 | Shigeki module |  | 0.8d | 2015-06-12 10:24 | 2015-06-15 08:48 | 192 | 18.6d | 0d |
| 200 | 1.2.6.3.1.1.5 | Search module |  | 0.5d | 2015-06-15 08:48 | 2015-06-15 13:48 | 199 | 18.6d | 0d |
| 201 | 1.2.6.3.1.1.6 | Setting module |  | 0.7d | 2015-06-15 13:48 | 2015-06-16 10:24 | 200 | 18.6d | 0d |
| 202 | 1.2.6.3.1.2 | Review unit test case |  | 1d | 2015-06-16 10:24 | 2015-06-17 10:24 | 198, 201 | 18.6d | 0d |
| 203 | 1.2.6.3.1.3 | Update unit test case |  | 1d | 2015-06-17 10:24 | 2015-06-18 10:24 | 202 | 18.6d | 0d |
| 204 | 1.2.6.3.1.4 | Complete unit test case | milestone | 0d | 2015-06-18 10:24 | 2015-06-18 10:24 | 203 | 18.6d | 0d |
| 205 | 1.2.6.3.2 | **Integration test** |  | 4d | 2015-06-18 10:24 | 2015-07-01 10:24 |  | 28.7d |  |
| 206 | 1.2.6.3.2.1 | Develop integration test case |  | 2d | 2015-06-18 10:24 | 2015-06-29 10:24 | 204 | 28.7d | 0d |
| 207 | 1.2.6.3.2.2 | Review integration test case |  | 1d | 2015-06-29 10:24 | 2015-06-30 10:24 | 206 | 28.7d | 0d |
| 208 | 1.2.6.3.2.3 | Update integration test case |  | 1d | 2015-06-30 10:24 | 2015-07-01 10:24 | 207 | 28.7d | 0d |
| 209 | 1.2.6.3.2.4 | Complete integration test case | milestone | 0d | 2015-07-01 10:24 | 2015-07-01 10:24 | 208 | 28.7d | 0d |
| 210 | 1.2.6.3.3 | **System test** |  | 3d | 2015-07-01 10:24 | 2015-07-06 10:24 |  | 28.7d |  |
| 211 | 1.2.6.3.3.1 | Develop system test case |  | 1d | 2015-07-01 10:24 | 2015-07-02 10:24 | 209 | 28.7d | 0d |
| 212 | 1.2.6.3.3.2 | Review system test case |  | 1d | 2015-07-02 10:24 | 2015-07-03 10:24 | 211 | 28.7d | 0d |
| 213 | 1.2.6.3.3.3 | Update system test case |  | 1d | 2015-07-03 10:24 | 2015-07-06 10:24 | 212 | 28.7d | 0d |
| 214 | 1.2.6.3.3.4 | Complete system test case | milestone | 0d | 2015-07-06 10:24 | 2015-07-06 10:24 | 213 | 28.7d | 0d |
| 215 | 1.2.7 | **Progress report 3** |  | 0.5d | 2015-07-06 10:24 | 2015-07-06 15:24 |  | 28.7d |  |
| 216 | 1.2.7.1 | Develop Progress Report 3 |  | 0.3d | 2015-07-06 10:24 | 2015-07-06 13:48 | 187, 204, 209, 214 | 28.7d | 0d |
| 217 | 1.2.7.2 | Review Progress Report 3 |  | 0.1d | 2015-07-06 13:48 | 2015-07-06 14:36 | 216 | 28.7d | 0d |
| 218 | 1.2.7.3 | Update Progress Report 3 |  | 0.1d | 2015-07-06 14:36 | 2015-07-06 15:24 | 217 | 28.7d | 0d |
| 219 | 1.2.7.4 | Complete Progress Report 3 | milestone | 0d | 2015-07-06 15:24 | 2015-07-06 15:24 | 218 | 28.7d | 0d |
| 220 | 1.2.8 | Q & A Management (update) |  | 0.5d | 2015-07-06 15:24 | 2015-07-07 10:24 | 219 | 28.7d | 0d |

| ID | WBS | Task | Type | Duration | Start | Finish | Predecessors | Total slack | Free slack |
| --- | --- | --- | --- | --- | --- | --- | --- | --- | --- |
| 221 | 1.2.9 | **Report no.3** |  | 2.2d | 2015-07-07 10:24 | 2015-07-09 12:00 |  | 28.7d |  |
| 222 | 1.2.9.1 | Develop Report no.3 (draft version) |  | 0.2d | 2015-07-07 10:24 | 2015-07-07 12:00 | 192, 204, 209, 214, 220 | 28.7d | 0d |
| 223 | 1.2.9.2 | Review Report no.3 (draft version) |  | 1d | 2015-07-07 13:00 | 2015-07-08 12:00 | 222 | 28.7d | 0d |
| 224 | 1.2.9.3 | Update Report no.3 (draft version) |  | 0.5d | 2015-07-08 13:00 | 2015-07-08 17:00 | 223 | 28.7d | 0d |
| 225 | 1.2.9.4 | Submit Report no.3 (first version) | milestone | 0d | 2015-07-08 17:00 | 2015-07-08 17:00 | 224 | 28.7d | 0d |
| 226 | 1.2.9.5 | Revise after got comments for Report no.3 |  | 0.5d | 2015-07-09 08:00 | 2015-07-09 12:00 | 225 | 28.7d | 0d |
| 227 | 1.2.9.6 | Submit Report no.3 (final version) | milestone | 0d | 2015-07-09 12:00 | 2015-07-09 12:00 | 226 | 28.7d | 0d |
| 228 | 1.3 | **Construction** |  | 38.6d | 2015-06-18 08:48 | 2015-08-18 14:36 |  | 0d |  |
| 229 | 1.3.1 | **Code Review checklist** |  | 1.6d | 2015-07-09 13:00 | 2015-07-13 08:48 |  | 28.7d |  |
| 230 | 1.3.1.1 | Develop review checklist |  | 0.9d | 2015-07-09 13:00 | 2015-07-10 11:12 | 227 | 28.7d | 0d |
| 231 | 1.3.1.2 | Review review checklist |  | 0.4d | 2015-07-10 11:12 | 2015-07-10 15:24 | 230 | 28.7d | 0d |
| 232 | 1.3.1.3 | Update review checklist |  | 0.3d | 2015-07-10 15:24 | 2015-07-13 08:48 | 231 | 28.7d | 0d |
| 233 | 1.3.1.4 | Complete review checklist | milestone | 0d | 2015-07-13 08:48 | 2015-07-13 08:48 | 232 | 28.7d | 0d |
| 234 | 1.3.2 | **Coding & Unit testing (continue)** |  | 20d | 2015-06-18 08:48 | 2015-07-23 08:48 |  | 0d |  |
| 235 | 1.3.2.1 | **Bus Rider Module** |  | 20d | 2015-06-18 08:48 | 2015-07-23 08:48 |  | 0d |  |
| 236 | 1.3.2.1.1 | **Sync module** |  | 9d | 2015-06-18 08:48 | 2015-07-08 08:48 |  | 0d |  |
| 237 | 1.3.2.1.1.1 | PhoneNumberSync module |  | 3d | 2015-06-18 08:48 | 2015-06-30 08:48 | 174 | 0d |  |
| 238 | 1.3.2.1.1.2 | Connect Facebook module |  | 2d | 2015-06-30 08:48 | 2015-07-02 08:48 | 237 | 0d |  |
| 239 | 1.3.2.1.1.3 | Show Favorite place module |  | 1d | 2015-07-02 08:48 | 2015-07-03 08:48 | 238 | 0d |  |
| 240 | 1.3.2.1.1.4 | Show Favorite bus module |  | 1d | 2015-07-03 08:48 | 2015-07-06 08:48 | 239 | 0d |  |
| 241 | 1.3.2.1.1.5 | Add/remove Favorite place module |  | 1d | 2015-07-06 08:48 | 2015-07-07 08:48 | 240 | 0d |  |
| 242 | 1.3.2.1.1.6 | About module |  | 1d | 2015-07-07 08:48 | 2015-07-08 08:48 | 241 | 0d |  |
| 243 | 1.3.2.1.2 | **Bus module** |  | 18d | 2015-06-18 08:48 | 2015-07-21 08:48 |  | 0.8d |  |
| 244 | 1.3.2.1.2.1 | Bus list module |  | 1d | 2015-06-18 08:48 | 2015-06-19 08:48 | 174 | 0.8d | 0d |
| 245 | 1.3.2.1.2.2 | Bus info module |  | 3d | 2015-06-19 08:48 | 2015-07-01 08:48 | 244 | 0.8d | 0d |
| 246 | 1.3.2.1.2.3 | Bus route module |  | 2d | 2015-07-01 08:48 | 2015-07-03 08:48 | 245 | 0.8d | 0d |
| 247 | 1.3.2.1.2.4 | Bus nearest module |  | 3d | 2015-07-03 08:48 | 2015-07-08 08:48 | 246 | 0.8d | 0d |
| 248 | 1.3.2.1.2.5 | Bus map module |  | 1.5d | 2015-07-08 08:48 | 2015-07-09 13:48 | 247 | 0.8d | 0d |
| 249 | 1.3.2.1.2.6 | Set/unset favorite bus module |  | 1d | 2015-07-09 13:48 | 2015-07-10 13:48 | 248 | 0.8d | 0d |
| 250 | 1.3.2.1.2.7 | Remind module |  | 2.5d | 2015-07-10 13:48 | 2015-07-15 08:48 | 249 | 0.8d | 0d |
| 251 | 1.3.2.1.2.8 | Track module |  | 1.5d | 2015-07-15 08:48 | 2015-07-16 13:48 | 250 | 0.8d | 0d |
| 252 | 1.3.2.1.2.9 | Get notification module |  | 2d | 2015-07-16 13:48 | 2015-07-20 13:48 | 251 | 0.8d | 0d |
| 253 | 1.3.2.1.2.10 | Swap direction module |  | 0.5d | 2015-07-20 13:48 | 2015-07-21 08:48 | 252 | 0.8d | 0d |

| ID | WBS | Task | Type | Duration | Start | Finish | Predecessors | Total slack | Free slack |
| --- | --- | --- | --- | --- | --- | --- | --- | --- | --- |
| 254 | 1.3.2.1.3 | **Shigeki module** |  | 8.5d | 2015-06-18 08:48 | 2015-07-07 13:48 |  | 11.5d |  |
| 255 | 1.3.2.1.3.1 | Achievement module |  | 1.5d | 2015-06-18 08:48 | 2015-06-19 13:48 | 174 | 11.5d | 0d |
| 256 | 1.3.2.1.3.2 | Collection module |  | 1.5d | 2015-06-19 13:48 | 2015-06-30 08:48 | 255 | 11.5d | 0d |
| 257 | 1.3.2.1.3.3 | Mission module |  | 1.5d | 2015-06-30 08:48 | 2015-07-01 13:48 | 256 | 11.5d | 0d |
| 258 | 1.3.2.1.3.4 | Statistic module |  | 1.5d | 2015-07-01 13:48 | 2015-07-03 08:48 | 257 | 11.5d | 0d |
| 259 | 1.3.2.1.3.5 | Rank module |  | 1d | 2015-07-03 08:48 | 2015-07-06 08:48 | 258 | 11.5d | 0d |
| 260 | 1.3.2.1.3.6 | Scan QR code module |  | 1.5d | 2015-07-06 08:48 | 2015-07-07 13:48 | 259 | 11.5d | 0d |
| 261 | 1.3.2.1.4 | **Search module** |  | 8d | 2015-07-08 08:48 | 2015-07-20 08:48 |  | 0d |  |
| 262 | 1.3.2.1.4.1 | Search bus module |  | 1d | 2015-07-08 08:48 | 2015-07-09 08:48 | 242 | 0d |  |
| 263 | 1.3.2.1.4.2 | Search route module |  | 5d | 2015-07-09 08:48 | 2015-07-16 08:48 | 262 | 0d |  |
| 264 | 1.3.2.1.4.3 | Search Favorite bus module |  | 1d | 2015-07-16 08:48 | 2015-07-17 08:48 | 263 | 0d |  |
| 265 | 1.3.2.1.4.4 | Search Favorite place module |  | 1d | 2015-07-17 08:48 | 2015-07-20 08:48 | 264 | 0d |  |
| 266 | 1.3.2.1.5 | Setting module |  | 3d | 2015-07-20 08:48 | 2015-07-23 08:48 | 265 | 0d |  |
| 267 | 1.3.2.2 | Web service |  | 5d | 2015-07-07 13:48 | 2015-07-14 13:48 | 260 | 27.9d | 6.5d |
| 268 | 1.3.2.3 | Complete coding | milestone | 0d | 2015-07-23 08:48 | 2015-07-23 08:48 | 174, 242, 253, 260, 265, 267, 266 | 21.4d | 0d |
| 269 | 1.3.3 | Q & A Management (update) |  | 1d | 2015-07-13 08:48 | 2015-07-14 08:48 | 233 | 28.7d | 7.3d |
| 270 | 1.3.4 | **Progress report 4** |  | 0.5d | 2015-07-23 08:48 | 2015-07-23 13:48 |  | 21.4d |  |
| 271 | 1.3.4.1 | Develop Progress Report 4 |  | 0.3d | 2015-07-23 08:48 | 2015-07-23 11:12 | 233, 268 | 21.4d | 0d |
| 272 | 1.3.4.2 | Review Progress Report 4 |  | 0.1d | 2015-07-23 11:12 | 2015-07-23 12:00 | 271 | 28.2d | 0d |
| 273 | 1.3.4.3 | Update Progress Report 4 |  | 0.1d | 2015-07-23 13:00 | 2015-07-23 13:48 | 272 | 28.2d | 0d |
| 274 | 1.3.4.4 | Complete Progress Report 4 | milestone | 0d | 2015-07-23 13:48 | 2015-07-23 13:48 | 273 | 28.2d |  |
| 275 | 1.3.5 | **Report no.4** |  | 7d | 2015-07-23 11:12 | 2015-08-03 11:12 |  | 21.4d |  |
| 276 | 1.3.5.1 | Develop Report no.4 (draft version) |  | 1d | 2015-07-23 11:12 | 2015-07-24 11:12 | 233, 268, 269, 271 | 21.4d | 0d |
| 277 | 1.3.5.2 | Review Report no.4 (draft version) |  | 2d | 2015-07-24 11:12 | 2015-07-28 11:12 | 276 | 21.4d | 0d |
| 278 | 1.3.5.3 | Update Report no.4 (draft version) |  | 2d | 2015-07-28 11:12 | 2015-07-30 11:12 | 277 | 21.4d | 0d |
| 279 | 1.3.5.4 | Submit Report no.4 (first version) | milestone | 0d | 2015-07-30 11:12 | 2015-07-30 11:12 | 278 | 21.4d | 0d |
| 280 | 1.3.5.5 | Revise after got comments for Report no.4 |  | 2d | 2015-07-30 11:12 | 2015-08-03 11:12 | 279 | 21.4d | 0d |
| 281 | 1.3.5.6 | Submit Report no.4 (final version) | milestone | 0d | 2015-08-03 11:12 | 2015-08-03 11:12 | 280 | 21.4d |  |

| ID | WBS | Task | Type | Duration | Start | Finish | Predecessors | Total slack |
| --- | --- | --- | --- | --- | --- | --- | --- | --- |
| 282 | 1.3.6 | **Testing** |  | 36.7d | 2015-06-18 10:24 | 2015-08-14 17:00 |  | 0d |
| 283 | 1.3.6.1 | **Execute test & fix bugs** |  | 36.1d | 2015-06-18 10:24 | 2015-08-14 11:12 |  | 0d |
| 284 | 1.3.6.1.1 | **Round 1** |  | 28.6d | 2015-06-18 10:24 | 2015-08-04 16:12 |  | 0d |
| 285 | 1.3.6.1.1.1 | **Execute unit test** |  | 20.6d | 2015-06-18 10:24 | 2015-07-23 16:12 |  | 0d |
| 286 | 1.3.6.1.1.1.1 | Bus driver module |  | 0.8d | 2015-06-18 10:24 | 2015-06-19 08:48 | 174, 204 | 19.8d |
| 287 | 1.3.6.1.1.1.2 | Sync module |  | 0.8d | 2015-07-08 08:48 | 2015-07-08 16:12 | 204, 242 | 11d |
| 288 | 1.3.6.1.1.1.3 | Bus module |  | 2d | 2015-07-21 08:48 | 2015-07-23 08:48 | 204, 253 | 0.8d |
| 289 | 1.3.6.1.1.1.4 | Shigeki module |  | 0.8d | 2015-07-07 13:48 | 2015-07-08 11:12 | 204, 260 | 11.5d |
| 290 | 1.3.6.1.1.1.5 | Search module |  | 2d | 2015-07-20 08:48 | 2015-07-22 08:48 | 204, 265 | 1.8d |
| 291 | 1.3.6.1.1.1.6 | Setting module |  | 0.8d | 2015-07-23 08:48 | 2015-07-23 16:12 | 204, 266 | 0d |
| 292 | 1.3.6.1.1.2 | Fix bugs unit test |  | 4d | 2015-07-23 16:12 | 2015-07-29 16:12 | 286, 287, 288, 289, 290, 291 | 0d |
| 293 | 1.3.6.1.1.3 | Execute integration test |  | 1d | 2015-07-29 16:12 | 2015-07-30 16:12 | 292 | 0d |
| 294 | 1.3.6.1.1.4 | Fix bugs integration test |  | 1d | 2015-07-30 16:12 | 2015-07-31 16:12 | 293 | 0d |
| 295 | 1.3.6.1.1.5 | Execute system test |  | 1d | 2015-07-31 16:12 | 2015-08-03 16:12 | 294 | 0d |
| 296 | 1.3.6.1.1.6 | Fix bugs system test |  | 1d | 2015-08-03 16:12 | 2015-08-04 16:12 | 295 | 0d |
| 297 | 1.3.6.1.2 | **Round 2** |  | 6.5d | 2015-08-04 16:12 | 2015-08-13 11:12 |  | 0d |
| 298 | 1.3.6.1.2.1 | **Execute unit test** |  | 1d | 2015-08-04 16:12 | 2015-08-05 16:12 |  | 0d |
| 299 | 1.3.6.1.2.1.1 | Bus driver module |  | 0.5d | 2015-08-04 16:12 | 2015-08-05 11:12 | 296 | 0.5d |
| 300 | 1.3.6.1.2.1.2 | Sync module |  | 0.6d | 2015-08-04 16:12 | 2015-08-05 12:00 | 296 | 0.4d |
| 301 | 1.3.6.1.2.1.3 | Bus module |  | 1d | 2015-08-04 16:12 | 2015-08-05 16:12 | 296 | 0d |
| 302 | 1.3.6.1.2.1.4 | Shigeki module |  | 0.5d | 2015-08-04 16:12 | 2015-08-05 11:12 | 296 | 0.5d |
| 303 | 1.3.6.1.2.1.5 | Search module |  | 1d | 2015-08-04 16:12 | 2015-08-05 16:12 | 296 | 0d |
| 304 | 1.3.6.1.2.1.6 | Setting module |  | 0.8d | 2015-08-04 16:12 | 2015-08-05 14:36 | 296 | 0.2d |
| 305 | 1.3.6.1.2.2 | Fix bugs unit test |  | 2d | 2015-08-05 16:12 | 2015-08-07 16:12 | 299, 300, 301, 302, 303, 304 | 0d |
| 306 | 1.3.6.1.2.3 | Execute integration test |  | 1d | 2015-08-07 16:12 | 2015-08-10 16:12 | 305 | 0d |
| 307 | 1.3.6.1.2.4 | Fix bugs integration test |  | 1d | 2015-08-10 16:12 | 2015-08-11 16:12 | 306 | 0d |
| 308 | 1.3.6.1.2.5 | Execute system test |  | 0.5d | 2015-08-11 16:12 | 2015-08-12 11:12 | 307 | 0d |
| 309 | 1.3.6.1.2.6 | Fix bugs system test |  | 1d | 2015-08-12 11:12 | 2015-08-13 11:12 | 308 | 0d |
| 310 | 1.3.6.1.3 | Execute acceptance test & collect data |  | 1d | 2015-08-13 11:12 | 2015-08-14 11:12 | 309 | 0d |
| 311 | 1.3.6.2 | Complete execute test | milestone | 0d | 2015-08-14 11:12 | 2015-08-14 11:12 | 310 | 0d |

| ID | WBS | Task | Type | Duration | Start | Finish | Predecessors | Total slack |
| --- | --- | --- | --- | --- | --- | --- | --- | --- |
| 312 | 1.3.6.3 | **Test Report** |  | 0.6d | 2015-08-14 11:12 | 2015-08-14 17:00 |  | 0d |
| 313 | 1.3.6.3.1 | Develop test report |  | 0.2d | 2015-08-14 11:12 | 2015-08-14 13:48 | 311 | 0d |
| 314 | 1.3.6.3.2 | Review test report |  | 0.2d | 2015-08-14 13:48 | 2015-08-14 15:24 | 313 | 0d |
| 315 | 1.3.6.3.3 | Update test report |  | 0.2d | 2015-08-14 15:24 | 2015-08-14 17:00 | 314 | 0d |
| 316 | 1.3.6.3.4 | Complete test report | milestone | 0d | 2015-08-14 17:00 | 2015-08-14 17:00 | 315 | 0d |
| 317 | 1.3.7 | **Quality report** |  | 0.7d | 2015-08-17 08:00 | 2015-08-17 14:36 |  | 0d |
| 318 | 1.3.7.1 | Develop quality report |  | 0.3d | 2015-08-17 08:00 | 2015-08-17 10:24 | 316 | 0d |
| 319 | 1.3.7.2 | Review quality report |  | 0.2d | 2015-08-17 10:24 | 2015-08-17 12:00 | 318 | 0d |
| 320 | 1.3.7.3 | Update quality report |  | 0.2d | 2015-08-17 13:00 | 2015-08-17 14:36 | 319 | 0d |
| 321 | 1.3.7.4 | Complete quality report | milestone | 0d | 2015-08-17 14:36 | 2015-08-17 14:36 | 320 | 0d |
| 322 | 1.3.8 | **Progress report 5** |  | 0.5d | 2015-08-17 14:36 | 2015-08-18 09:36 |  | 0d |
| 323 | 1.3.8.1 | Develop Progress Report 5 |  | 0.3d | 2015-08-17 14:36 | 2015-08-17 17:00 | 321 | 0d |
| 324 | 1.3.8.2 | Review Progress Report 5 |  | 0.1d | 2015-08-18 08:00 | 2015-08-18 08:48 | 323 | 0d |
| 325 | 1.3.8.3 | Update Progress Report 5 |  | 0.1d | 2015-08-18 08:48 | 2015-08-18 09:36 | 324 | 0d |
| 326 | 1.3.8.4 | Complete Progress Report 5 | milestone | 0d | 2015-08-18 09:36 | 2015-08-18 09:36 | 325 | 0d |
| 327 | 1.3.9 | **Report no.5** |  | 0.5d | 2015-08-18 09:36 | 2015-08-18 14:36 |  | 0d |
| 328 | 1.3.9.1 | Develop Report no.5 (draft version) |  | 0.1d | 2015-08-18 09:36 | 2015-08-18 10:24 | 316, 321, 326 | 0d |
| 329 | 1.3.9.2 | Review Report no.5 (draft version) |  | 0.2d | 2015-08-18 10:24 | 2015-08-18 12:00 | 328 | 0d |
| 330 | 1.3.9.3 | Update Report no.5 (draft version) |  | 0.1d | 2015-08-18 13:00 | 2015-08-18 13:48 | 329 | 0d |
| 331 | 1.3.9.4 | Submit Report no.5 (first version) | milestone | 0d | 2015-08-18 13:48 | 2015-08-18 13:48 | 330 | 0d |
| 332 | 1.3.9.5 | Revise after got comments for Report no.5 |  | 0.1d | 2015-08-18 13:48 | 2015-08-18 14:36 | 331 | 0d |
| 333 | 1.3.9.6 | Submit Report no.5 (final version) | milestone | 0d | 2015-08-18 14:36 | 2015-08-18 14:36 | 332 | 0d |
| 334 | 1.4 | **Termination** |  | 10.1d | 2015-08-18 14:36 | 2015-09-01 15:24 |  | 0d |
| 335 | 1.4.1 | **Report no.6** |  | 7.1d | 2015-08-18 14:36 | 2015-08-27 15:24 |  | 0d |
| 336 | 1.4.1.1 | Complete source code & final report |  | 1d | 2015-08-18 14:36 | 2015-08-19 14:36 | 333 | 0d |
| 337 | 1.4.1.2 | Develop installation guide |  | 0.5d | 2015-08-19 14:36 | 2015-08-20 09:36 | 336 | 0d |
| 338 | 1.4.1.3 | Develop user guideline |  | 1d | 2015-08-20 09:36 | 2015-08-21 09:36 | 337 | 0d |
| 339 | 1.4.1.4 | Complete Project Result Assessment |  | 1d | 2015-08-21 09:36 | 2015-08-24 09:36 | 338 | 0d |
| 340 | 1.4.1.5 | Conduct lessons learned |  | 0.6d | 2015-08-24 09:36 | 2015-08-24 15:24 | 339 | 0d |
| 341 | 1.4.1.6 | Complete Presentation slide |  | 1d | 2015-08-24 15:24 | 2015-08-25 15:24 | 340 | 0d |
| 342 | 1.4.1.7 | Review Report no.6 (draft version) |  | 1d | 2015-08-25 15:24 | 2015-08-26 15:24 | 341 | 0d |
| 343 | 1.4.1.8 | Update Report no.6 (draft version) |  | 0.5d | 2015-08-26 15:24 | 2015-08-27 10:24 | 342 | 0d |
| 344 | 1.4.1.9 | Submit Report no.6 (first version) | milestone | 0d | 2015-08-27 10:24 | 2015-08-27 10:24 | 343 | 0d |
| 345 | 1.4.1.10 | Revise after got comments for Report no.6 |  | 0.5d | 2015-08-27 10:24 | 2015-08-27 15:24 | 344 | 0d |
| 346 | 1.4.1.11 | Submit Report no.6 (final version) | milestone | 0d | 2015-08-27 15:24 | 2015-08-27 15:24 | 345 | 0d |
| 347 | 1.4.1.12 | Submit Final report & CD source code | milestone | 0d | 2015-08-27 15:24 | 2015-08-27 15:24 | 346 | 0d |

| ID | WBS | Task | Duration | Start | Finish | Predecessors | Total slack |
| --- | --- | --- | --- | --- | --- | --- | --- |
| 348 | 1.4.2 | **Pre-closing** | 2.5d | 2015-08-27 15:24 | 2015-09-01 10:24 |  | 0d |
| 349 | 1.4.2.1 | Training presentation | 2.5d | 2015-08-27 15:24 | 2015-09-01 10:24 | 347 | 0d |
| 350 | 1.4.3 | **Closing** | 0.5d | 2015-09-01 10:24 | 2015-09-01 15:24 |  | 0d |
| 351 | 1.4.3.1 | Present Capstone Project & Completed | 0.5d | 2015-09-01 10:24 | 2015-09-01 15:24 | 349 | 0d |
