Schedule from MS Project, 2015-05-11 to 2015-09-01, A marks actual dates.

## Calendars

- Standard: Mon-Fri 08:00-12:00, 13:00-17:00; Sat-Sun off. Exceptions (off unless hours are given): 2015-06-22 to 2015-06-26 (Nghỉ hè).

## Resources

| Resource |
| --- |
| NamNT |
| MaiTTT |
| PhuongBB |
| AnhTT |
| SangNV |
| Phuog |

## Schedule

| ID | WBS | Task | Type | Duration | Start | Finish | Predecessors | Complete | Remaining | Total slack | Free slack | Resources | Work | Actual work |
| --- | --- | --- | --- | --- | --- | --- | --- | --- | --- | --- | --- | --- | --- | --- |
| 1 | 1 | **BL** |  | 76.4d | 2015-05-11 08:00 A | 2015-09-01 11:12 |  | 31% | 52.66d | 0d |  |  | 1786.4h | 564.32h |
| 2 | 1.1 | **Initiation** |  | 21.3d | 2015-05-11 08:00 A | 2015-06-09 10:24 |  | 95% | 1.13d | 55.1d |  |  | 294.4h | 283.52h |
| 3 | 1.1.1 | System feasible study |  | 0.3d | 2015-05-11 08:00 A | 2015-05-11 10:24 A |  | 100% |  |  |  | NamNT; MaiTTT; PhuongBB; AnhTT | 9.6h | 9.6h |
| 4 | 1.1.2 | Define business situation |  | 0.4d | 2015-05-11 10:24 A | 2015-05-11 14:36 A | 3 | 100% |  |  |  | NamNT; MaiTTT; PhuongBB; AnhTT | 12.8h | 12.8h |
| 5 | 1.1.3 | Develop project idea |  | 0.8d | 2015-05-11 14:36 A | 2015-05-12 12:00 A | 4 | 100% |  |  |  | NamNT; MaiTTT; PhuongBB; AnhTT | 25.6h | 25.6h |
| 6 | 1.1.4 | Define project and system scope |  | 0.5d | 2015-05-12 13:00 A | 2015-05-12 17:00 A | 5 | 100% |  |  |  | NamNT; MaiTTT; PhuongBB; AnhTT | 16h | 16h |
| 7 | 1.1.5 | Prepare project |  | 1d | 2015-05-13 08:00 A | 2015-05-13 17:00 A | 6 | 100% |  |  |  | NamNT; MaiTTT; PhuongBB; AnhTT | 32h | 32h |
| 8 | 1.1.6 | Kick-off meeting | milestone | 0.4d | 2015-05-14 08:00 A | 2015-05-14 11:12 A | 7 | 100% |  |  |  | NamNT; MaiTTT; PhuongBB; AnhTT | 12.8h | 12.8h |
| 9 | 1.1.7 | Q & A Management |  | 0.5d | 2015-05-14 11:12 A | 2015-05-14 16:12 A | 8 | 100% |  |  |  | MaiTTT | 4h | 4h |
| 10 | 1.1.8 | **Technologies** |  | 17.9d | 2015-05-14 11:12 A | 2015-06-09 10:24 |  | 79% | 3.8d | 55.1d |  |  | 56.8h | 45.92h |
| 11 | 1.1.8.1 | Research development technologies |  | 1.3d | 2015-05-14 11:12 A | 2015-05-28 17:00 A | 8 | 100% |  |  |  | NamNT; AnhTT | 16h | 16h |
| 12 | 1.1.8.2 | Install and configure Eclipse IDE and Android SDK |  | 0.6d | 2015-05-29 08:00 A | 2015-06-02 08:48 A | 11 | 100% |  |  |  | NamNT; AnhTT | 4.8h | 4.8h |
| 13 | 1.1.8.3 | Training Java, Android SDK & Eclipse IDE |  | 2d | 2015-06-02 08:48 A | 2015-06-04 08:48 | 12 | 95% | 0.11d | 58.3d |  | AnhTT | 16h | 15.12h |
| 14 | 1.1.8.4 | Install and configure Visual Studio, SQL Server |  | 1d | 2015-05-29 08:00 A | 2015-06-04 09:36 | 11 | 50% | 0.5d | 57.45d | 1.6d | NamNT; MaiTTT | 8h | 4h |
| 15 | 1.1.8.5 | Study web service |  | 1.5d | 2015-06-05 15:24 A | 2015-06-09 10:24 | 14 | 50% | 0.75d | 55.1d |  | MaiTTT | 12h | 6h |
| 16 | 1.1.9 | **SRS/PP/Concept design Review checklist** |  | 3d | 2015-05-14 16:12 A | 2015-05-19 16:12 A |  | 100% |  |  |  |  | 32h | 32h |
| 17 | 1.1.9.1 | Develop review checklist |  | 2.5d | 2015-05-14 16:12 A | 2015-05-19 11:12 A | 9 | 100% |  |  |  | MaiTTT; PhuongBB | 24h | 24h |
| 18 | 1.1.9.2 | Review review checklist |  | 0.2d | 2015-05-19 11:12 A | 2015-05-19 13:48 A | 17 | 100% |  |  |  | MaiTTT; PhuongBB | 3.2h | 3.2h |
| 19 | 1.1.9.3 | Update review checklist |  | 0.3d | 2015-05-19 13:48 A | 2015-05-19 16:12 A | 18 | 100% |  |  |  | MaiTTT; PhuongBB | 4.8h | 4.8h |
| 20 | 1.1.9.4 | Complete review checklist | milestone | 0d | 2015-05-19 16:12 A | 2015-05-19 16:12 A | 19 | 100% |  |  |  | MaiTTT; PhuongBB |  |  |
| 21 | 1.1.10 | **Requirements** |  | 5.2d | 2015-05-14 11:12 A | 2015-05-21 13:48 A |  | 100% |  |  |  |  | 25.6h | 25.6h |
| 22 | 1.1.10.1 | **User Requirements Specification** |  | 4.5d | 2015-05-14 11:12 A | 2015-05-20 16:12 A |  | 100% |  |  |  |  | 20h | 20h |
| 23 | 1.1.10.1.1 | Collect business requirements and processes |  | 0.5d | 2015-05-14 11:12 A | 2015-05-14 16:12 A | 8 | 100% |  |  |  | PhuongBB | 4h | 4h |
| 24 | 1.1.10.1.2 | Create draft requirements |  | 1d | 2015-05-14 16:12 A | 2015-05-15 16:12 A | 23 | 100% |  |  |  | PhuongBB | 8h | 8h |
| 25 | 1.1.10.1.3 | Complete draft requirements | milestone | 0d | 2015-05-15 16:12 A | 2015-05-15 16:12 A | 24 | 100% |  |  |  | NamNT |  |  |
| 26 | 1.1.10.1.4 | Develop main function and processes |  | 1d | 2015-05-19 16:12 A | 2015-05-20 16:12 A | 25 | 100% |  |  |  | PhuongBB | 8h | 8h |
| 27 | 1.1.10.2 | Review User Requirement Specification with checklist |  | 0.3d | 2015-05-20 16:12 A | 2015-05-21 09:36 A | 26, 20 | 100% |  |  |  | MaiTTT | 2.4h | 2.4h |
| 28 | 1.1.10.3 | Update User Requirement Specification |  | 0.4d | 2015-05-21 09:36 A | 2015-05-21 13:48 A | 27 | 100% |  |  |  | PhuongBB | 3.2h | 3.2h |
| 29 | 1.1.10.4 | Complete User Requirement Specification | milestone | 0d | 2015-05-21 13:48 A | 2015-05-21 13:48 A | 28 | 100% |  |  |  | NamNT |  |  |

| ID | WBS | Task | Type | Duration | Start | Finish | Predecessors | Complete | Remaining | Total slack | Resources | Work | Actual work |
| --- | --- | --- | --- | --- | --- | --- | --- | --- | --- | --- | --- | --- | --- |
| 30 | 1.1.11 | **Concept design** |  | 3d | 2015-05-15 16:12 A | 2015-05-20 16:12 A |  | 100% |  |  |  | 16h | 16h |
| 31 | 1.1.11.1 | Create draft concept design |  | 1d | 2015-05-15 16:12 A | 2015-05-19 11:12 A | 25 | 100% |  |  | AnhTT | 8h | 8h |
| 32 | 1.1.11.2 | Review concept design with checklist |  | 0.5d | 2015-05-19 16:12 A | 2015-05-20 11:12 A | 31, 20 | 100% |  |  | MaiTTT | 4h | 4h |
| 33 | 1.1.11.3 | Update concept design |  | 0.5d | 2015-05-20 11:12 A | 2015-05-20 16:12 A | 32 | 100% |  |  | AnhTT | 4h | 4h |
| 34 | 1.1.11.4 | Complete concept design | milestone | 0d | 2015-05-20 16:12 A | 2015-05-20 16:12 A | 33 | 100% |  |  | NamNT |  |  |
| 35 | 1.1.12 | **Project plan** |  | 6.4d | 2015-05-14 11:12 A | 2015-05-22 15:24 A |  | 100% |  |  |  | 45.6h | 45.6h |
| 36 | 1.1.12.1 | Develop project definition |  | 0.7d | 2015-05-14 11:12 A | 2015-05-15 08:48 A | 8 | 100% |  |  |  |  |  |
| 37 | 1.1.12.2 | Develop Work Breakdown Structure |  | 0.9d | 2015-05-15 08:48 A | 2015-05-15 17:00 A | 36 | 100% |  |  | NamNT | 7.2h | 7.2h |
| 38 | 1.1.12.3 | Create Project Schedule |  | 2d | 2015-05-18 08:00 A | 2015-05-19 17:00 A | 37 | 100% |  |  | NamNT | 16h | 16h |
| 39 | 1.1.12.4 | Create Configuration Management Plan version 1.0 |  | 0.8d | 2015-05-20 08:00 A | 2015-05-20 15:24 A | 38 | 100% |  |  | NamNT | 6.4h | 6.4h |
| 40 | 1.1.12.5 | Create Project Plan (first version) |  | 1.5d | 2015-05-20 15:24 A | 2015-05-22 10:24 A | 39 | 100% |  |  | NamNT | 12h | 12h |
| 41 | 1.1.12.6 | Review Project Plan (first version) |  | 0.5d | 2015-05-22 10:24 A | 2015-05-22 15:24 A | 40 | 100% |  |  | MaiTTT; PhuongBB | 4h | 4h |
| 42 | 1.1.12.7 | Complete Project Plan (final version) | milestone | 0d | 2015-05-22 15:24 A | 2015-05-22 15:24 A | 41 | 100% |  |  | NamNT |  |  |
| 43 | 1.1.13 | **Progress Report 1** |  | 0.7d | 2015-05-22 10:24 A | 2015-05-22 17:00 A |  | 100% |  |  |  | 5.6h | 5.6h |
| 44 | 1.1.13.1 | Develop Progress Report 1 |  | 0.4d | 2015-05-22 10:24 A | 2015-05-22 14:36 A | 38 | 100% |  |  | NamNT | 3.2h | 3.2h |
| 45 | 1.1.13.2 | Review Progress Report 1 |  | 0.2d | 2015-05-22 14:36 A | 2015-05-22 16:12 A | 44 | 100% |  |  | MaiTTT | 1.6h | 1.6h |
| 46 | 1.1.13.3 | Update Progress Report 1 |  | 0.1d | 2015-05-22 16:12 A | 2015-05-22 17:00 A | 45 | 100% |  |  | NamNT | 0.8h | 0.8h |
| 47 | 1.1.13.4 | Complete Progress Report 1 | milestone | 0d | 2015-05-22 17:00 A | 2015-05-22 17:00 A | 46 | 100% |  |  | NamNT |  |  |
| 48 | 1.1.14 | Submit PP, URS, Concept Design | milestone | 0d | 2015-05-22 17:00 A | 2015-05-22 17:00 A | 42, 47, 29, 34 | 100% |  |  | NamNT |  |  |
| 49 | 1.2 | **Solution** |  | 52.3d | 2015-05-25 08:00 A | 2015-08-12 10:24 |  | 40% | 31.44d | 14.1d |  | 654.4h | 280.8h |
| 50 | 1.2.1 | **Requirements** |  | 10.1d | 2015-05-25 08:00 A | 2015-06-08 08:48 A |  | 100% |  |  |  | 220.8h | 220.8h |
| 51 | 1.2.1.1 | **Software Requirements Specification** |  | 10.1d | 2015-05-25 08:00 A | 2015-06-08 08:48 A |  | 100% |  |  |  | 220.8h | 220.8h |
| 52 | 1.2.1.1.1 | **Functional Requirement Specification** |  | 5.6d | 2015-05-25 08:00 A | 2015-06-01 13:48 A |  | 100% |  |  |  | 144.8h | 144.8h |
| 53 | 1.2.1.1.1.1 | **Bus Driver Module** |  | 0.6d | 2015-05-25 08:00 A | 2015-05-25 13:48 A |  | 100% |  |  |  | 4.8h | 4.8h |
| 54 | 1.2.1.1.1.1.1 | Send bus info module |  | 0.6d | 2015-05-25 08:00 A | 2015-05-25 13:48 A | 48 | 100% |  |  | AnhTT | 4.8h | 4.8h |

| ID | WBS | Task | Duration | Start | Finish | Predecessors | Complete | Resources | Work | Actual work |
| --- | --- | --- | --- | --- | --- | --- | --- | --- | --- | --- |
| 55 | 1.2.1.1.1.2 | **Bus Rider Module** | 5.6d | 2015-05-25 08:00 A | 2015-06-01 13:48 A |  | 100% |  | 140h | 140h |
| 56 | 1.2.1.1.1.2.1 | **Common module** | 5.2d | 2015-05-25 08:00 A | 2015-06-01 09:36 A |  | 100% |  | 27.2h | 27.2h |
| 57 | 1.2.1.1.1.2.1.1 | Turn on/off Snooze mode | 1d | 2015-05-25 08:00 A | 2015-05-25 17:00 A | 48 | 100% | NamNT | 8h | 8h |
| 58 | 1.2.1.1.1.2.1.2 | Change app setting | 1.4d | 2015-05-26 13:48 A | 2015-05-27 17:00 A | 57 | 100% | NamNT | 11.2h | 11.2h |
| 59 | 1.2.1.1.1.2.1.3 | View dashboard | 1d | 2015-05-29 09:36 A | 2015-06-01 09:36 A | 58 | 100% | NamNT | 8h | 8h |
| 60 | 1.2.1.1.1.2.2 | **Account Management module** | 3.2d | 2015-05-26 08:00 A | 2015-05-29 09:36 A |  | 100% |  | 12.8h | 12.8h |
| 61 | 1.2.1.1.1.2.2.1 | Log in | 0.6d | 2015-05-26 08:00 A | 2015-05-26 13:48 A | 48 | 100% | NamNT | 4.8h | 4.8h |
| 62 | 1.2.1.1.1.2.2.2 | Log out | 0.3d | 2015-05-28 08:00 A | 2015-05-28 10:24 A | 61 | 100% | NamNT | 2.4h | 2.4h |
| 63 | 1.2.1.1.1.2.2.3 | View account profile | 0.2d | 2015-05-28 10:24 A | 2015-05-28 12:00 A | 62 | 100% | NamNT | 1.6h | 1.6h |
| 64 | 1.2.1.1.1.2.2.4 | Change account info | 0.2d | 2015-05-28 13:00 A | 2015-05-28 14:36 A | 63 | 100% | NamNT | 1.6h | 1.6h |
| 65 | 1.2.1.1.1.2.2.5 | Forgot password | 0.3d | 2015-05-28 14:36 A | 2015-05-29 09:36 A | 64 | 100% | NamNT | 2.4h | 2.4h |
| 66 | 1.2.1.1.1.2.3 | **Bus module** | 4d | 2015-05-25 08:00 A | 2015-05-28 17:00 A |  | 100% |  | 32h | 32h |
| 67 | 1.2.1.1.1.2.3.1 | View bus list | 0.3d | 2015-05-25 08:00 A | 2015-05-25 10:24 A | 48 | 100% | PhuongBB | 2.4h | 2.4h |
| 68 | 1.2.1.1.1.2.3.2 | View bus info | 0.3d | 2015-05-25 10:24 A | 2015-05-25 13:48 A | 67 | 100% | PhuongBB | 2.4h | 2.4h |
| 69 | 1.2.1.1.1.2.3.3 | View bus route | 0.6d | 2015-05-25 13:48 A | 2015-05-26 09:36 A | 68 | 100% | PhuongBB | 4.8h | 4.8h |
| 70 | 1.2.1.1.1.2.3.4 | View nearest bus | 1d | 2015-05-26 09:36 A | 2015-05-27 09:36 A | 69 | 100% | PhuongBB | 8h | 8h |
| 71 | 1.2.1.1.1.2.3.5 | View bus map | 0.8d | 2015-05-27 09:36 A | 2015-05-27 17:00 A | 70 | 100% | PhuongBB | 6.4h | 6.4h |
| 72 | 1.2.1.1.1.2.3.6 | View bus near me | 1d | 2015-05-28 08:00 A | 2015-05-28 17:00 A | 71 | 100% | PhuongBB | 8h | 8h |
| 73 | 1.2.1.1.1.2.4 | **Path Finder module** | 3.2d | 2015-05-25 13:48 A | 2015-05-28 15:24 A |  | 100% |  | 25.6h | 25.6h |
| 74 | 1.2.1.1.1.2.4.1 | Find path | 1.5d | 2015-05-25 13:48 A | 2015-05-27 08:48 A | 54 | 100% | AnhTT | 12h | 12h |
| 75 | 1.2.1.1.1.2.4.2 | View paths found | 0.4d | 2015-05-27 08:48 A | 2015-05-27 12:00 A | 74 | 100% | AnhTT | 3.2h | 3.2h |
| 76 | 1.2.1.1.1.2.4.3 | View path detail | 0.7d | 2015-05-27 13:00 A | 2015-05-28 09:36 A | 75 | 100% | AnhTT | 5.6h | 5.6h |
| 77 | 1.2.1.1.1.2.4.4 | View direction | 0.6d | 2015-05-28 09:36 A | 2015-05-28 15:24 A | 76 | 100% | AnhTT | 4.8h | 4.8h |
| 78 | 1.2.1.1.1.2.5 | **Reminder module** | 1.8d | 2015-05-28 15:24 A | 2015-06-01 13:48 A |  | 100% |  | 14.4h | 14.4h |
| 79 | 1.2.1.1.1.2.5.1 | View bus reminder | 0.5d | 2015-05-28 15:24 A | 2015-05-29 10:24 A | 77 | 100% | AnhTT | 4h | 4h |
| 80 | 1.2.1.1.1.2.5.2 | Add reminder | 0.2d | 2015-05-29 10:24 A | 2015-05-29 12:00 A | 79 | 100% | AnhTT | 1.6h | 1.6h |
| 81 | 1.2.1.1.1.2.5.3 | Edit reminder | 0.3d | 2015-05-29 13:00 A | 2015-05-29 15:24 A | 80 | 100% | AnhTT | 2.4h | 2.4h |
| 82 | 1.2.1.1.1.2.5.4 | Delete reminder | 0.1d | 2015-05-29 15:24 A | 2015-05-29 16:12 A | 81 | 100% | AnhTT | 0.8h | 0.8h |
| 83 | 1.2.1.1.1.2.5.5 | Suspend/Unsuspend all reminder | 0.5d | 2015-05-29 16:12 A | 2015-06-01 11:12 A | 82 | 100% | AnhTT | 4h | 4h |
| 84 | 1.2.1.1.1.2.5.6 | Suspend/Unsuspend a chosen reminder | 0.2d | 2015-06-01 11:12 A | 2015-06-01 13:48 A | 83 | 100% | AnhTT | 1.6h | 1.6h |

| ID | WBS | Task | Type | Duration | Start | Finish | Predecessors | Complete | Remaining | Total slack | Resources | Work | Actual work |
| --- | --- | --- | --- | --- | --- | --- | --- | --- | --- | --- | --- | --- | --- |
| 85 | 1.2.1.1.1.2.6 | **Track module** |  | 1.2d | 2015-05-25 08:00 A | 2015-05-26 09:36 A |  | 100% |  |  |  | 9.6h | 9.6h |
| 86 | 1.2.1.1.1.2.6.1 | Tracking |  | 1d | 2015-05-25 08:00 A | 2015-05-25 17:00 A | 48 | 100% |  |  | MaiTTT | 8h | 8h |
| 87 | 1.2.1.1.1.2.6.2 | Cancel track |  | 0.2d | 2015-05-26 08:00 A | 2015-05-26 09:36 A | 86 | 100% |  |  | MaiTTT | 1.6h | 1.6h |
| 88 | 1.2.1.1.1.2.7 | **Favorite module** |  | 2.3d | 2015-05-26 09:36 A | 2015-05-28 12:00 A |  | 100% |  |  |  | 18.4h | 18.4h |
| 89 | 1.2.1.1.1.2.7.1 | View favorite places |  | 0.4d | 2015-05-26 09:36 A | 2015-05-26 13:48 A | 87 | 100% |  |  | MaiTTT | 3.2h | 3.2h |
| 90 | 1.2.1.1.1.2.7.2 | Add favorite places |  | 0.2d | 2015-05-26 13:48 A | 2015-05-26 15:24 A | 89 | 100% |  |  | MaiTTT | 1.6h | 1.6h |
| 91 | 1.2.1.1.1.2.7.3 | Edit favorite places |  | 0.3d | 2015-05-26 15:24 A | 2015-05-27 08:48 A | 90 | 100% |  |  | MaiTTT | 2.4h | 2.4h |
| 92 | 1.2.1.1.1.2.7.4 | Delete favorite places |  | 0.2d | 2015-05-27 08:48 A | 2015-05-27 10:24 A | 91 | 100% |  |  | MaiTTT | 1.6h | 1.6h |
| 93 | 1.2.1.1.1.2.7.5 | Search favorite places |  | 0.2d | 2015-05-27 10:24 A | 2015-05-27 12:00 A | 92 | 100% |  |  | MaiTTT | 1.6h | 1.6h |
| 94 | 1.2.1.1.1.2.7.6 | View favorite buses |  | 0.4d | 2015-05-27 13:00 A | 2015-05-27 16:12 A | 93 | 100% |  |  | MaiTTT | 3.2h | 3.2h |
| 95 | 1.2.1.1.1.2.7.7 | Add favorite buses |  | 0.2d | 2015-05-27 16:12 A | 2015-05-28 08:48 A | 94 | 100% |  |  | MaiTTT | 1.6h | 1.6h |
| 96 | 1.2.1.1.1.2.7.8 | Delete favorite buses |  | 0.2d | 2015-05-28 08:48 A | 2015-05-28 10:24 A | 95 | 100% |  |  | MaiTTT | 1.6h | 1.6h |
| 97 | 1.2.1.1.1.2.7.9 | Search favorite buses |  | 0.2d | 2015-05-28 10:24 A | 2015-05-28 12:00 A | 96 | 100% |  |  | MaiTTT | 1.6h | 1.6h |
| 98 | 1.2.1.1.2 | **Non-functional Requirement Specification** |  | 2.5d | 2015-05-28 13:00 A | 2015-06-01 17:00 A |  | 100% |  |  |  | 17.6h | 17.6h |
| 99 | 1.2.1.1.2.1 | Develop User Interface Requirement |  | 1.4d | 2015-05-28 13:00 A | 2015-05-29 16:12 A | 97 | 100% |  |  | MaiTTT | 11.2h | 11.2h |
| 100 | 1.2.1.1.2.2 | Develop Performance Requirement |  | 0.8d | 2015-06-01 09:36 A | 2015-06-01 17:00 A | 99 | 100% |  |  | NamNT | 6.4h | 6.4h |
| 101 | 1.2.1.1.3 | Review Software Requirement Specification with checklist |  | 2d | 2015-06-02 08:00 A | 2015-06-03 17:00 A | 54, 59, 65, 72, 77, 84, 87, 97, 100 | 100% |  |  | PhuongBB; MaiTTT | 26.4h | 26.4h |
| 102 | 1.2.1.1.4 | Update Software Requirement Specification |  | 2.1d | 2015-06-04 08:00 A | 2015-06-08 08:48 A | 101 | 100% |  |  | AnhTT; NamNT | 32h | 32h |
| 103 | 1.2.1.1.5 | Complete Software Requirement Specification | milestone | 0d | 2015-06-08 08:48 A | 2015-06-08 08:48 A | 102 | 100% |  |  | NamNT |  |  |
| 104 | 1.2.2 | **Design** |  | 18.8d | 2015-05-29 16:12 A | 2015-07-02 14:36 |  | 19% | 15.32d | 0.1d |  | 244h | 60h |
| 105 | 1.2.2.1 | **Design Review checklist** |  | 4.6d | 2015-05-29 16:12 A | 2015-06-05 12:00 A |  | 100% |  |  |  | 38.4h | 38.4h |
| 106 | 1.2.2.1.1 | Develop review checklist |  | 2.3d | 2015-05-29 16:12 A | 2015-06-05 09:36 A | 99 | 100% |  |  | MaiTTT; PhuongBB | 33.6h | 33.6h |
| 107 | 1.2.2.1.2 | Review review checklist |  | 0.1d | 2015-06-05 09:36 A | 2015-06-05 10:24 A | 106 | 100% |  |  | MaiTTT; PhuongBB | 1.6h | 1.6h |
| 108 | 1.2.2.1.3 | Update review checklist |  | 0.2d | 2015-06-05 10:24 A | 2015-06-05 12:00 A | 107 | 100% |  |  | MaiTTT; PhuongBB | 3.2h | 3.2h |
| 109 | 1.2.2.1.4 | Complete review checklist | milestone | 0d | 2015-06-05 12:00 A | 2015-06-05 12:00 A | 108 | 100% |  |  | MaiTTT; PhuongBB |  |  |

| ID | WBS | Task | Type | Duration | Start | Finish | Predecessors | Complete | Total slack | Free slack | Resources | Work | Actual work |
| --- | --- | --- | --- | --- | --- | --- | --- | --- | --- | --- | --- | --- | --- |
| 110 | 1.2.2.2 | **Architecture design** |  | 2.4d | 2015-06-08 08:48 A | 2015-06-10 12:00 A |  | 100% |  |  |  | 21.6h | 21.6h |
| 111 | 1.2.2.2.1 | Define system structure and collect system features |  | 1d | 2015-06-08 08:48 A | 2015-06-09 08:48 A | 103 | 100% |  |  | NamNT | 8h | 8h |
| 112 | 1.2.2.2.2 | Study & choose System Architecture |  | 0.8d | 2015-06-09 08:48 A | 2015-06-09 16:12 A | 111 | 100% |  |  | NamNT | 6.4h | 6.4h |
| 113 | 1.2.2.2.3 | Review Architecture Design with checklist |  | 0.3d | 2015-06-09 16:12 A | 2015-06-10 09:36 A | 109, 112 | 100% |  |  | PhuongBB; MaiTTT | 4.8h | 4.8h |
| 114 | 1.2.2.2.4 | Update Architecture Design |  | 0.3d | 2015-06-10 09:36 A | 2015-06-10 12:00 A | 113 | 100% |  |  | NamNT | 2.4h | 2.4h |
| 115 | 1.2.2.2.5 | Complete System Architecture version 1.0 | milestone | 0d | 2015-06-10 12:00 A | 2015-06-10 12:00 A | 114 | 100% |  |  | NamNT |  |  |
| 116 | 1.2.2.3 | **Detailed design** |  | 10.9d | 2015-06-10 13:00 | 2015-07-02 11:12 |  |  | 0.4d |  |  | 147.2h |  |
| 117 | 1.2.2.3.1 | **User Interface design** |  | 7.9d | 2015-06-10 13:00 | 2015-06-29 11:12 |  |  | 0.6d |  |  | 127.2h |  |
| 118 | 1.2.2.3.1.1 | **Bus Driver Module** |  | 0.4d | 2015-06-19 14:36 | 2015-06-29 08:48 |  |  | 0.9d |  |  | 3.2h |  |
| 119 | 1.2.2.3.1.1.1 | Send bus info module |  | 0.4d | 2015-06-19 14:36 | 2015-06-29 08:48 | 115 |  | 0.9d | 0.3d | NamNT | 3.2h |  |
| 120 | 1.2.2.3.1.2 | **Bus Rider Module** |  | 7.9d | 2015-06-10 13:00 | 2015-06-29 11:12 |  |  | 0.6d |  |  | 124h |  |
| 121 | 1.2.2.3.1.2.1 | **Common module** |  | 1.4d | 2015-06-18 10:24 | 2015-06-19 14:36 |  |  | 1.3d |  |  | 11.2h |  |
| 122 | 1.2.2.3.1.2.1.1 | Change app setting |  | 1.4d | 2015-06-18 10:24 | 2015-06-19 14:36 | 115 |  | 1.3d | 0.7d | NamNT | 11.2h |  |
| 123 | 1.2.2.3.1.2.2 | **Account Management module** |  | 3.4d | 2015-06-17 08:00 | 2015-06-29 11:12 |  |  | 0.6d |  |  | 12.8h |  |
| 124 | 1.2.2.3.1.2.2.1 | Log in |  | 0.6d | 2015-06-17 08:00 | 2015-06-17 13:48 | 115 |  | 0.6d | 0d | NamNT | 4.8h |  |
| 125 | 1.2.2.3.1.2.2.2 | Log out |  | 0.3d | 2015-06-17 13:48 | 2015-06-17 16:12 | 124 |  | 0.6d | 0d | NamNT | 2.4h |  |
| 126 | 1.2.2.3.1.2.2.3 | View account profile |  | 0.2d | 2015-06-17 16:12 | 2015-06-18 08:48 | 125 |  | 0.6d | 0d | NamNT | 1.6h |  |
| 127 | 1.2.2.3.1.2.2.4 | Change account info |  | 0.2d | 2015-06-18 08:48 | 2015-06-18 10:24 | 126 |  | 0.6d | 0d | NamNT | 1.6h |  |
| 128 | 1.2.2.3.1.2.2.5 | Forgot password |  | 0.3d | 2015-06-29 08:48 | 2015-06-29 11:12 | 127 |  | 0.6d | 0d | NamNT | 2.4h |  |
| 129 | 1.2.2.3.1.2.3 | **Bus module** |  | 5d | 2015-06-10 13:00 | 2015-06-17 12:00 |  |  | 3.5d |  |  | 32h |  |
| 130 | 1.2.2.3.1.2.3.1 | View bus list |  | 0.3d | 2015-06-10 13:00 | 2015-06-10 15:24 | 115 |  | 3.5d | 0d | MaiTTT | 2.4h |  |
| 131 | 1.2.2.3.1.2.3.2 | View bus info |  | 0.3d | 2015-06-10 15:24 | 2015-06-11 08:48 | 130 |  | 3.5d | 0d | MaiTTT | 2.4h |  |
| 132 | 1.2.2.3.1.2.3.3 | View bus route |  | 0.6d | 2015-06-11 08:48 | 2015-06-11 14:36 | 131 |  | 3.5d | 0d | MaiTTT | 4.8h |  |
| 133 | 1.2.2.3.1.2.3.4 | View nearest bus |  | 1d | 2015-06-11 14:36 | 2015-06-12 14:36 | 132 |  | 3.5d | 0d | MaiTTT | 8h |  |
| 134 | 1.2.2.3.1.2.3.5 | View bus map |  | 0.8d | 2015-06-12 14:36 | 2015-06-15 12:00 | 133 |  | 3.5d | 0d | MaiTTT | 6.4h |  |
| 135 | 1.2.2.3.1.2.3.6 | View bus near me |  | 1d | 2015-06-15 15:24 | 2015-06-17 12:00 | 134 |  | 3.5d | 2.9d | MaiTTT | 8h |  |

| ID | WBS | Task | Type | Duration | Start | Finish | Predecessors | Total slack | Free slack | Resources | Work |
| --- | --- | --- | --- | --- | --- | --- | --- | --- | --- | --- | --- |
| 136 | 1.2.2.3.1.2.4 | **Path Finder module** |  | 4.2d | 2015-06-10 13:00 | 2015-06-16 14:36 |  | 2.5d |  |  | 25.6h |
| 137 | 1.2.2.3.1.2.4.1 | Find path |  | 1.5d | 2015-06-10 13:00 | 2015-06-11 17:00 | 115 | 2.5d | 0d | NamNT | 12h |
| 138 | 1.2.2.3.1.2.4.2 | View paths found |  | 0.4d | 2015-06-12 08:00 | 2015-06-12 11:12 | 137 | 2.5d | 0d | NamNT | 3.2h |
| 139 | 1.2.2.3.1.2.4.3 | View path detail |  | 0.7d | 2015-06-12 11:12 | 2015-06-15 08:48 | 138 | 2.5d | 0d | NamNT | 5.6h |
| 140 | 1.2.2.3.1.2.4.4 | View direction |  | 0.6d | 2015-06-16 08:48 | 2015-06-16 14:36 | 139 | 2.5d | 0d | NamNT | 4.8h |
| 141 | 1.2.2.3.1.2.5 | **Reminder module** |  | 1.8d | 2015-06-16 14:36 | 2015-06-18 12:00 |  | 2.5d |  |  | 14.4h |
| 142 | 1.2.2.3.1.2.5.1 | View bus reminder |  | 0.5d | 2015-06-16 14:36 | 2015-06-17 09:36 | 140 | 2.5d | 0d | AnhTT | 4h |
| 143 | 1.2.2.3.1.2.5.2 | Add reminder |  | 0.2d | 2015-06-17 09:36 | 2015-06-17 11:12 | 142 | 2.5d | 0d | AnhTT | 1.6h |
| 144 | 1.2.2.3.1.2.5.3 | Edit reminder |  | 0.3d | 2015-06-17 11:12 | 2015-06-17 14:36 | 143 | 2.5d | 0d | AnhTT | 2.4h |
| 145 | 1.2.2.3.1.2.5.4 | Delete reminder |  | 0.1d | 2015-06-17 14:36 | 2015-06-17 15:24 | 144 | 2.5d | 0d | AnhTT | 0.8h |
| 146 | 1.2.2.3.1.2.5.5 | Suspend/Unsuspend all reminder |  | 0.5d | 2015-06-17 15:24 | 2015-06-18 10:24 | 145 | 2.5d | 0d | AnhTT | 4h |
| 147 | 1.2.2.3.1.2.5.6 | Suspend/Unsuspend a chosen reminder |  | 0.2d | 2015-06-18 10:24 | 2015-06-18 12:00 | 146 | 2.5d | 1.9d | AnhTT | 1.6h |
| 148 | 1.2.2.3.1.2.6 | **Track module** |  | 1.2d | 2015-06-10 13:00 | 2015-06-11 14:36 |  | 5d |  |  | 9.6h |
| 149 | 1.2.2.3.1.2.6.1 | Tracking |  | 1d | 2015-06-10 13:00 | 2015-06-11 12:00 | 115 | 5d | 0d | PhuongBB | 8h |
| 150 | 1.2.2.3.1.2.6.2 | Cancel track |  | 0.2d | 2015-06-11 13:00 | 2015-06-11 14:36 | 149 | 5d | 0d | PhuongBB | 1.6h |
| 151 | 1.2.2.3.1.2.7 | **Favorite module** |  | 2.6d | 2015-06-11 14:36 | 2015-06-16 10:24 |  | 4.7d |  |  | 18.4h |
| 152 | 1.2.2.3.1.2.7.1 | View favorite places |  | 0.4d | 2015-06-11 14:36 | 2015-06-12 08:48 | 150 | 5d | 0d | PhuongBB | 3.2h |
| 153 | 1.2.2.3.1.2.7.2 | Add favorite places |  | 0.2d | 2015-06-12 08:48 | 2015-06-12 10:24 | 152 | 5d | 0d | PhuongBB | 1.6h |
| 154 | 1.2.2.3.1.2.7.3 | Edit favorite places |  | 0.3d | 2015-06-12 10:24 | 2015-06-12 13:48 | 153 | 5d | 0d | PhuongBB | 2.4h |
| 155 | 1.2.2.3.1.2.7.4 | Delete favorite places |  | 0.2d | 2015-06-12 13:48 | 2015-06-12 15:24 | 154 | 5d | 0d | PhuongBB | 1.6h |
| 156 | 1.2.2.3.1.2.7.5 | Search favorite places |  | 0.2d | 2015-06-12 15:24 | 2015-06-12 17:00 | 155 | 5d | 0d | PhuongBB | 1.6h |
| 157 | 1.2.2.3.1.2.7.6 | View favorite buses |  | 0.4d | 2015-06-15 10:24 | 2015-06-15 14:36 | 156 | 4.7d | 0d | PhuongBB | 3.2h |
| 158 | 1.2.2.3.1.2.7.7 | Add favorite buses |  | 0.2d | 2015-06-15 14:36 | 2015-06-15 16:12 | 157 | 4.7d | 0d | PhuongBB | 1.6h |
| 159 | 1.2.2.3.1.2.7.8 | Delete favorite buses |  | 0.2d | 2015-06-15 16:12 | 2015-06-16 08:48 | 158 | 4.7d | 0d | PhuongBB | 1.6h |
| 160 | 1.2.2.3.1.2.7.9 | Search favorite buses |  | 0.2d | 2015-06-16 08:48 | 2015-06-16 10:24 | 159 | 4.7d | 4.1d | PhuongBB | 1.6h |
| 161 | 1.2.2.3.2 | Review Detailed Design with checklist |  | 1d | 2015-06-29 11:12 | 2015-06-30 11:12 | 109, 119, 122, 128, 135, 140, 147, 150, 160 | 0.6d | 0d | PhuongBB; MaiTTT | 16h |
| 162 | 1.2.2.3.3 | Update Detailed Design |  | 0.5d | 2015-07-01 16:12 | 2015-07-02 11:12 | 161 | 0.4d | 0d | NamNT | 4h |
| 163 | 1.2.2.3.4 | Complete Detailed Design version 1.0 | milestone | 0d | 2015-07-02 11:12 | 2015-07-02 11:12 | 162 | 0.4d | 0.3d | NamNT |  |

| ID | WBS | Task | Type | Duration | Start | Finish | Predecessors | Total slack | Free slack | Resources | Work |
| --- | --- | --- | --- | --- | --- | --- | --- | --- | --- | --- | --- |
| 164 | 1.2.2.4 | **Database design** |  | 1.9d | 2015-06-15 08:48 | 2015-06-16 17:00 |  | 1d |  |  | 14.4h |
| 165 | 1.2.2.4.1 | Create Databse Design draft version |  | 1d | 2015-06-15 08:48 | 2015-06-16 08:48 | 115 | 1d | 0d | NamNT | 8h |
| 166 | 1.2.2.4.2 | Review Database Design with checklist |  | 0.5d | 2015-06-16 08:48 | 2015-06-16 13:48 | 108, 165 | 1d | 0d | MaiTTT | 4h |
| 167 | 1.2.2.4.3 | Update Database Design |  | 0.3d | 2015-06-16 14:36 | 2015-06-16 17:00 | 166 | 1d | 0d | NamNT | 2.4h |
| 168 | 1.2.2.4.4 | Complete Database Design version 1.0 | milestone | 0d | 2015-06-16 17:00 | 2015-06-16 17:00 | 167 | 1d | 0d | NamNT |  |
| 169 | 1.2.2.5 | **Class design** |  | 2.8d | 2015-06-29 16:12 | 2015-07-02 14:36 |  | 0.1d |  |  | 22.4h |
| 170 | 1.2.2.5.1 | Define class/component |  | 2d | 2015-06-29 16:12 | 2015-07-01 16:12 | 168 | 0.1d | 0d | NamNT | 16h |
| 171 | 1.2.2.5.2 | Review Class Design with checklist |  | 0.5d | 2015-07-01 16:12 | 2015-07-02 11:12 | 170 | 0.1d | 0d | MaiTTT | 4h |
| 172 | 1.2.2.5.3 | Update Class Design |  | 0.3d | 2015-07-02 11:12 | 2015-07-02 14:36 | 171 | 0.1d | 0d | NamNT | 2.4h |
| 173 | 1.2.2.5.4 | Complete Class Design version 1.0 | milestone | 0d | 2015-07-02 14:36 | 2015-07-02 14:36 | 172 | 0.1d | 0d | NamNT |  |
| 174 | 1.2.2.6 | Complete design | milestone | 0d | 2015-07-02 14:36 | 2015-07-02 14:36 | 115, 163, 168, 173 | 0.1d | 0d | NamNT |  |
| 175 | 1.2.3 | **Progress Report 2** |  | 0.5d | 2015-07-10 10:24 | 2015-07-10 15:24 |  | 36.6d |  |  | 4h |
| 176 | 1.2.3.1 | Develop Progress Report 2 |  | 0.3d | 2015-07-10 10:24 | 2015-07-10 13:48 | 163, 168, 173 | 36.6d | 0d | NamNT | 2.4h |
| 177 | 1.2.3.2 | Review Progress Report 2 |  | 0.1d | 2015-07-10 13:48 | 2015-07-10 14:36 | 176 | 36.6d | 0d | MaiTTT | 0.8h |
| 178 | 1.2.3.3 | Update Progress Report 2 |  | 0.1d | 2015-07-10 14:36 | 2015-07-10 15:24 | 177 | 36.6d | 0d | NamNT | 0.8h |
| 179 | 1.2.3.4 | Complete Progress Report 2 | milestone | 0d | 2015-07-10 15:24 | 2015-07-10 15:24 | 178 | 36.6d |  | NamNT |  |
| 180 | 1.2.4 | Submit SRS,AD,DD | milestone | 0d | 2015-07-02 14:36 | 2015-07-02 14:36 | 103, 174 | 0.1d | 0d | NamNT |  |
| 181 | 1.2.5 | **Coding & Unit Testing** |  | 5d | 2015-07-02 14:36 | 2015-07-09 14:36 |  | 4.3d |  |  | 8h |
| 182 | 1.2.5.1 | **Bus Driver Module** |  | 5d | 2015-07-02 14:36 | 2015-07-09 14:36 |  | 4.3d |  |  | 8h |
| 183 | 1.2.5.1.1 | Send bus info module |  | 1d | 2015-07-02 14:36 | 2015-07-09 14:36 | 115, 163, 168, 173 | 4.3d | 0.8d | AnhTT | 8h |
| 184 | 1.2.6 | **Testing** |  | 32.3d | 2015-06-15 08:00 | 2015-08-05 10:24 |  | 1.2d |  |  | 144h |
| 185 | 1.2.6.1 | **Test review checklist** |  | 4.6d | 2015-06-15 08:00 | 2015-06-19 13:48 |  | 1.2d |  |  | 25.6h |
| 186 | 1.2.6.1.1 | **Test plan review checklist** |  | 3.1d | 2015-06-15 08:00 | 2015-06-18 08:48 |  | 1.2d |  |  | 9.6h |
| 187 | 1.2.6.1.1.1 | Develop test plan review checklist |  | 0.6d | 2015-06-15 08:00 | 2015-06-15 15:24 | 115 | 1.2d | 0d | MaiTTT; PhuongBB | 4.8h |
| 188 | 1.2.6.1.1.2 | Review test plan review checklist |  | 0.4d | 2015-06-16 08:48 | 2015-06-16 17:00 | 187 | 1.3d | 0d | MaiTTT; PhuongBB | 3.2h |
| 189 | 1.2.6.1.1.3 | Update test plan review checklist |  | 0.2d | 2015-06-17 08:00 | 2015-06-18 08:48 | 188 | 1.3d | 0d | MaiTTT; PhuongBB | 1.6h |
| 190 | 1.2.6.1.1.4 | Complete test plan review checklist | milestone | 0d | 2015-06-18 08:48 | 2015-06-18 08:48 | 189 | 1.3d |  | MaiTTT; PhuongBB |  |

| ID | WBS | Task | Type | Duration | Start | Finish | Predecessors | Total slack | Free slack | Resources | Work |
| --- | --- | --- | --- | --- | --- | --- | --- | --- | --- | --- | --- |
| 191 | 1.2.6.1.2 | **Test case review checklist** |  | 3.5d | 2015-06-16 08:48 | 2015-06-19 13:48 |  | 45.4d |  |  | 16h |
| 192 | 1.2.6.1.2.1 | Develop test case review checklist |  | 1d | 2015-06-16 08:48 | 2015-06-17 17:00 | 115 | 45.4d | 0d | MaiTTT; PhuongBB | 8h |
| 193 | 1.2.6.1.2.2 | Review test case review checklist |  | 0.4d | 2015-06-18 08:00 | 2015-06-18 11:12 | 192 | 45.4d | 0d | MaiTTT; PhuongBB | 4.8h |
| 194 | 1.2.6.1.2.3 | Update test case review checklist |  | 0.4d | 2015-06-18 11:12 | 2015-06-19 13:48 | 193 | 45.4d | 0d | MaiTTT; PhuongBB | 3.2h |
| 195 | 1.2.6.1.2.4 | Complete test case review checklist | milestone | 0d | 2015-06-19 13:48 | 2015-06-19 13:48 | 194 | 45.4d | 0d | MaiTTT; PhuongBB |  |
| 196 | 1.2.6.1.3 | Complete review checklist | milestone | 0d | 2015-06-19 13:48 | 2015-06-19 13:48 | 190, 195 | 45.4d | 27.7d | MaiTTT; PhuongBB |  |
| 197 | 1.2.6.2 | **Test plan** |  | 2.8d | 2015-06-18 11:12 | 2015-06-30 09:36 |  | 0d |  |  | 14.4h |
| 198 | 1.2.6.2.1 | Develop test plan |  | 1d | 2015-06-18 11:12 | 2015-06-19 11:12 | 115 | 0d |  | MaiTTT | 8h |
| 199 | 1.2.6.2.2 | Review test plan |  | 0.5d | 2015-06-29 11:12 | 2015-06-29 16:12 | 198, 190 | 0d |  | NamNT | 4h |
| 200 | 1.2.6.2.3 | Update test plan |  | 0.3d | 2015-06-29 16:12 | 2015-06-30 09:36 | 199 | 0d |  | MaiTTT | 2.4h |
| 201 | 1.2.6.2.4 | Complete test plan | milestone | 0d | 2015-06-30 09:36 | 2015-06-30 09:36 | 200 | 0d |  | MaiTTT |  |
| 202 | 1.2.6.3 | **Test case** |  | 25.9d | 2015-06-30 11:12 | 2015-08-05 10:24 |  | 0d |  |  | 104h |
| 203 | 1.2.6.3.1 | **Unit test** |  | 6d | 2015-06-30 11:12 | 2015-07-08 11:12 |  | 0d |  |  | 48h |
| 204 | 1.2.6.3.1.1 | **Develop unit test case** |  | 4d | 2015-06-30 11:12 | 2015-07-06 11:12 |  | 0d |  |  | 32h |
| 205 | 1.2.6.3.1.1.1 | Bus driver module |  | 0.5d | 2015-06-30 11:12 | 2015-06-30 16:12 | 201 | 0.8d | 0d | PhuongBB | 4h |
| 206 | 1.2.6.3.1.1.2 | Sync module |  | 0.5d | 2015-07-01 14:36 | 2015-07-02 09:36 | 205 | 0.8d | 0d | PhuongBB | 4h |
| 207 | 1.2.6.3.1.1.3 | Bus module |  | 1d | 2015-07-02 14:36 | 2015-07-03 14:36 | 206 | 0.7d |  | PhuongBB | 8h |
| 208 | 1.2.6.3.1.1.4 | Shigeki module |  | 0.8d | 2015-06-30 16:12 | 2015-07-01 14:36 | 201 | 0d |  | PhuongBB | 6.4h |
| 209 | 1.2.6.3.1.1.5 | Search module |  | 0.5d | 2015-07-02 09:36 | 2015-07-02 14:36 | 208 | 0d |  | PhuongBB | 4h |
| 210 | 1.2.6.3.1.1.6 | Setting module |  | 0.7d | 2015-07-03 14:36 | 2015-07-06 11:12 | 209 | 0d |  | PhuongBB | 5.6h |
| 211 | 1.2.6.3.1.2 | Review unit test case |  | 1d | 2015-07-06 11:12 | 2015-07-07 11:12 | 207, 210 | 0d |  | MaiTTT | 8h |
| 212 | 1.2.6.3.1.3 | Update unit test case |  | 1d | 2015-07-07 11:12 | 2015-07-08 11:12 | 211 | 0d |  | PhuongBB | 8h |
| 213 | 1.2.6.3.1.4 | Complete unit test case | milestone | 0d | 2015-07-08 11:12 | 2015-07-08 11:12 | 212 | 0d |  | MaiTTT |  |
| 214 | 1.2.6.3.2 | **Integration test** |  | 6d | 2015-07-17 10:24 | 2015-07-27 10:24 |  | 0d |  |  | 32h |
| 215 | 1.2.6.3.2.1 | Develop integration test case |  | 2d | 2015-07-17 10:24 | 2015-07-21 10:24 | 213 | 0d |  | PhuongBB | 16h |
| 216 | 1.2.6.3.2.2 | Review integration test case |  | 1d | 2015-07-23 10:24 | 2015-07-24 10:24 | 215 | 0d |  | MaiTTT | 8h |
| 217 | 1.2.6.3.2.3 | Update integration test case |  | 1d | 2015-07-24 10:24 | 2015-07-27 10:24 | 216 | 0d |  | PhuongBB | 8h |
| 218 | 1.2.6.3.2.4 | Complete integration test case | milestone | 0d | 2015-07-27 10:24 | 2015-07-27 10:24 | 217 | 0d |  | MaiTTT |  |

| ID | WBS | Task | Type | Duration | Start | Finish | Predecessors | Total slack | Free slack | Resources | Work |
| --- | --- | --- | --- | --- | --- | --- | --- | --- | --- | --- | --- |
| 219 | 1.2.6.3.3 | **System test** |  | 6d | 2015-07-28 10:24 | 2015-08-05 10:24 |  | 0d |  |  | 24h |
| 220 | 1.2.6.3.3.1 | Develop system test case |  | 1d | 2015-07-28 10:24 | 2015-07-29 10:24 | 218 | 0d |  | PhuongBB | 8h |
| 221 | 1.2.6.3.3.2 | Review system test case |  | 1d | 2015-07-29 10:24 | 2015-07-30 10:24 | 220 | 0d |  | MaiTTT | 8h |
| 222 | 1.2.6.3.3.3 | Update system test case |  | 1d | 2015-08-04 10:24 | 2015-08-05 10:24 | 221 | 0d |  | PhuongBB | 8h |
| 223 | 1.2.6.3.3.4 | Complete system test case | milestone | 0d | 2015-08-05 10:24 | 2015-08-05 10:24 | 222 | 0d |  | MaiTTT |  |
| 224 | 1.2.7 | **Progress report 3** |  | 0.5d | 2015-08-06 10:24 | 2015-08-06 15:24 |  | 17.6d |  |  | 4h |
| 225 | 1.2.7.1 | Develop Progress Report 3 |  | 0.3d | 2015-08-06 10:24 | 2015-08-06 13:48 | 196, 213, 218, 223 | 17.6d | 0d | NamNT | 2.4h |
| 226 | 1.2.7.2 | Review Progress Report 3 |  | 0.1d | 2015-08-06 13:48 | 2015-08-06 14:36 | 225 | 17.6d | 0d | MaiTTT | 0.8h |
| 227 | 1.2.7.3 | Update Progress Report 3 |  | 0.1d | 2015-08-06 14:36 | 2015-08-06 15:24 | 226 | 17.6d | 0d | NamNT | 0.8h |
| 228 | 1.2.7.4 | Complete Progress Report 3 | milestone | 0d | 2015-08-06 15:24 | 2015-08-06 15:24 | 227 | 17.6d |  | NamNT |  |
| 229 | 1.2.8 | **Report no.3** |  | 4d | 2015-08-06 10:24 | 2015-08-12 10:24 |  | 0d |  |  | 29.6h |
| 230 | 1.2.8.1 | Develop Report no.3 (draft version) |  | 0.2d | 2015-08-06 10:24 | 2015-08-06 12:00 | 201, 213, 218, 223 | 0d |  | NamNT | 1.6h |
| 231 | 1.2.8.2 | Review Report no.3 (draft version) |  | 1d | 2015-08-06 13:00 | 2015-08-07 12:00 | 230 | 0d |  | MaiTTT | 8h |
| 232 | 1.2.8.3 | Update Report no.3 (draft version) |  | 0.5d | 2015-08-10 10:24 | 2015-08-10 15:24 | 231 | 0d |  | NamNT | 4h |
| 233 | 1.2.8.4 | Submit Report no.3 (first version) | milestone | 0d | 2015-08-10 15:24 | 2015-08-10 15:24 | 232 | 0d |  | NamNT |  |
| 234 | 1.2.8.5 | Revise after got comments for Report no.3 |  | 0.8d | 2015-08-10 15:24 | 2015-08-12 10:24 | 233 | 0d |  | NamNT; MaiTTT; PhuongBB; AnhTT | 16h |
| 235 | 1.2.8.6 | Submit Report no.3 (final version) | milestone | 0d | 2015-08-12 10:24 | 2015-08-12 10:24 | 234 | 0d |  | NamNT |  |
| 236 | 1.3 | **Construction** |  | 42.7d | 2015-07-02 14:36 | 2015-09-01 11:12 |  | 0d |  |  | 720.8h |
| 237 | 1.3.1 | **Code Review checklist** |  | 2.3d | 2015-08-13 08:00 | 2015-08-17 10:24 |  | 0d |  |  | 25.6h |
| 238 | 1.3.1.1 | Develop review checklist |  | 1.2d | 2015-08-13 08:00 | 2015-08-14 09:36 | 235 | 0d |  | MaiTTT; PhuongBB | 14.4h |
| 239 | 1.3.1.2 | Review review checklist |  | 0.6d | 2015-08-14 09:36 | 2015-08-14 15:24 | 238 | 0d |  | MaiTTT; PhuongBB | 6.4h |
| 240 | 1.3.1.3 | Update review checklist |  | 0.5d | 2015-08-14 15:24 | 2015-08-17 10:24 | 239 | 0d |  | MaiTTT; PhuongBB | 4.8h |
| 241 | 1.3.1.4 | Complete review checklist | milestone | 0d | 2015-08-17 10:24 | 2015-08-17 10:24 | 240 | 0d |  | MaiTTT; PhuongBB |  |
| 242 | 1.3.2 | **Coding & Unit testing (continue)** |  | 8.3d | 2015-07-02 14:36 | 2015-07-14 17:00 |  | 0.1d |  |  | 164h |
| 243 | 1.3.2.1 | **Bus Rider Module** |  | 8.3d | 2015-07-02 14:36 | 2015-07-14 17:00 |  | 0.1d |  |  | 124h |
| 244 | 1.3.2.1.1 | **Common module** |  | 1.4d | 2015-07-07 16:12 | 2015-07-09 10:24 |  | 4.3d |  |  | 11.2h |
| 245 | 1.3.2.1.1.1 | Change app setting |  | 1.4d | 2015-07-07 16:12 | 2015-07-09 10:24 | 180 | 4.3d | 0d | NamNT | 11.2h |

| ID | WBS | Task | Duration | Start | Finish | Predecessors | Total slack | Free slack | Resources | Work |
| --- | --- | --- | --- | --- | --- | --- | --- | --- | --- | --- |
| 246 | 1.3.2.1.2 | **Account Management module** | 3.5d | 2015-07-02 14:36 | 2015-07-08 09:36 |  | 6.1d |  |  | 12.8h |
| 247 | 1.3.2.1.2.1 | Log in | 0.6d | 2015-07-02 14:36 | 2015-07-06 09:36 | 180 | 6.1d | 0d | AnhTT | 4.8h |
| 248 | 1.3.2.1.2.2 | Log out | 0.3d | 2015-07-06 09:36 | 2015-07-06 12:00 | 247 | 6.1d | 0d | AnhTT | 2.4h |
| 249 | 1.3.2.1.2.3 | View account profile | 0.2d | 2015-07-07 13:00 | 2015-07-07 14:36 | 248 | 6.1d | 0d | AnhTT | 1.6h |
| 250 | 1.3.2.1.2.4 | Change account info | 0.2d | 2015-07-07 14:36 | 2015-07-07 16:12 | 249 | 6.1d | 0d | AnhTT | 1.6h |
| 251 | 1.3.2.1.2.5 | Forgot password | 0.3d | 2015-07-07 16:12 | 2015-07-08 09:36 | 250 | 6.1d | 0.2d | AnhTT | 2.4h |
| 252 | 1.3.2.1.3 | **Bus module** | 6d | 2015-07-02 14:36 | 2015-07-10 14:36 |  | 0.1d |  |  | 32h |
| 253 | 1.3.2.1.3.1 | View bus list | 0.3d | 2015-07-02 14:36 | 2015-07-02 17:00 | 180 | 0.1d | 0d | AnhTT | 2.4h |
| 254 | 1.3.2.1.3.2 | View bus info | 0.3d | 2015-07-03 08:00 | 2015-07-03 10:24 | 253 | 0.1d | 0d | AnhTT | 2.4h |
| 255 | 1.3.2.1.3.3 | View bus route | 0.6d | 2015-07-03 10:24 | 2015-07-03 16:12 | 254 | 0.1d | 0d | AnhTT | 4.8h |
| 256 | 1.3.2.1.3.4 | View nearest bus | 1d | 2015-07-06 13:00 | 2015-07-07 12:00 | 255 | 1d | 0d | AnhTT | 8h |
| 257 | 1.3.2.1.3.5 | View bus map | 0.8d | 2015-07-08 09:36 | 2015-07-08 17:00 | 256 | 1d | 0d | AnhTT | 6.4h |
| 258 | 1.3.2.1.3.6 | View bus near me | 1d | 2015-07-09 14:36 | 2015-07-10 14:36 | 257 | 0.3d | 0d | AnhTT | 8h |
| 259 | 1.3.2.1.4 | **Path Finder module** | 3.2d | 2015-07-02 14:36 | 2015-07-07 16:12 |  | 1d |  |  | 25.6h |
| 260 | 1.3.2.1.4.1 | Find path | 1.5d | 2015-07-02 14:36 | 2015-07-06 09:36 | 180 | 1d | 0d | NamNT | 12h |
| 261 | 1.3.2.1.4.2 | View paths found | 0.4d | 2015-07-06 09:36 | 2015-07-06 13:48 | 260 | 1d | 0d | NamNT | 3.2h |
| 262 | 1.3.2.1.4.3 | View path detail | 0.7d | 2015-07-06 13:48 | 2015-07-07 10:24 | 261 | 1d | 0d | NamNT | 5.6h |
| 263 | 1.3.2.1.4.4 | View direction | 0.6d | 2015-07-07 10:24 | 2015-07-07 16:12 | 262 | 1d | 0d | NamNT | 4.8h |
| 264 | 1.3.2.1.5 | **Reminder module** | 1.8d | 2015-07-07 16:12 | 2015-07-09 14:36 |  | 1d |  |  | 14.4h |
| 265 | 1.3.2.1.5.1 | View bus reminder | 0.5d | 2015-07-07 16:12 | 2015-07-08 11:12 | 263 | 1d | 0d | MaiTTT | 4h |
| 266 | 1.3.2.1.5.2 | Add reminder | 0.2d | 2015-07-08 11:12 | 2015-07-08 13:48 | 265 | 1d | 0d | MaiTTT | 1.6h |
| 267 | 1.3.2.1.5.3 | Edit reminder | 0.3d | 2015-07-08 13:48 | 2015-07-08 16:12 | 266 | 1d | 0d | MaiTTT | 2.4h |
| 268 | 1.3.2.1.5.4 | Delete reminder | 0.1d | 2015-07-08 16:12 | 2015-07-08 17:00 | 267 | 1d | 0d | MaiTTT | 0.8h |
| 269 | 1.3.2.1.5.5 | Suspend/Unsuspend all reminder | 0.5d | 2015-07-09 08:00 | 2015-07-09 12:00 | 268 | 1d | 0d | MaiTTT | 4h |
| 270 | 1.3.2.1.5.6 | Suspend/Unsuspend a chosen reminder | 0.2d | 2015-07-09 13:00 | 2015-07-09 14:36 | 269 | 1d | 0d | MaiTTT | 1.6h |

| ID | WBS | Task | Type | Duration | Start | Finish | Predecessors | Total slack | Free slack | Resources | Work |
| --- | --- | --- | --- | --- | --- | --- | --- | --- | --- | --- | --- |
| 271 | 1.3.2.1.6 | **Track module** |  | 1.2d | 2015-07-09 10:24 | 2015-07-10 12:00 |  | 25.8d |  |  | 9.6h |
| 272 | 1.3.2.1.6.1 | Tracking |  | 1d | 2015-07-09 10:24 | 2015-07-10 10:24 | 180 | 25.8d | 0d | NamNT | 8h |
| 273 | 1.3.2.1.6.2 | Cancel track |  | 0.2d | 2015-07-10 10:24 | 2015-07-10 12:00 | 272 | 25.8d | 0d | NamNT | 1.6h |
| 274 | 1.3.2.1.7 | **Favorite module** |  | 2.3d | 2015-07-10 14:36 | 2015-07-14 17:00 |  | 28.43d |  |  | 18.4h |
| 275 | 1.3.2.1.7.1 | View favorite places |  | 0.4d | 2015-07-10 14:36 | 2015-07-13 08:48 | 273 | 28.43d | 0d | AnhTT | 3.2h |
| 276 | 1.3.2.1.7.2 | Add favorite places |  | 0.2d | 2015-07-13 08:48 | 2015-07-13 10:24 | 275 | 28.43d | 0d | AnhTT | 1.6h |
| 277 | 1.3.2.1.7.3 | Edit favorite places |  | 0.3d | 2015-07-13 10:24 | 2015-07-13 13:48 | 276 | 28.43d | 0d | AnhTT | 2.4h |
| 278 | 1.3.2.1.7.4 | Delete favorite places |  | 0.2d | 2015-07-13 13:48 | 2015-07-13 15:24 | 277 | 28.43d | 0d | AnhTT | 1.6h |
| 279 | 1.3.2.1.7.5 | Search favorite places |  | 0.2d | 2015-07-13 15:24 | 2015-07-13 17:00 | 278 | 28.43d | 0d | AnhTT | 1.6h |
| 280 | 1.3.2.1.7.6 | View favorite buses |  | 0.4d | 2015-07-14 08:00 | 2015-07-14 11:12 | 279 | 28.43d | 0d | AnhTT | 3.2h |
| 281 | 1.3.2.1.7.7 | Add favorite buses |  | 0.2d | 2015-07-14 11:12 | 2015-07-14 13:48 | 280 | 28.43d | 0d | AnhTT | 1.6h |
| 282 | 1.3.2.1.7.8 | Delete favorite buses |  | 0.2d | 2015-07-14 13:48 | 2015-07-14 15:24 | 281 | 28.43d | 0d | AnhTT | 1.6h |
| 283 | 1.3.2.1.7.9 | Search favorite buses |  | 0.2d | 2015-07-14 15:24 | 2015-07-14 17:00 | 282 | 28.43d | 0d | AnhTT | 1.6h |
| 284 | 1.3.2.2 | Web service |  | 5d | 2015-07-02 14:36 | 2015-07-14 13:48 | 180 | 34.8d |  | MaiTTT | 40h |
| 285 | 1.3.2.3 | Complete coding | milestone | 0d | 2015-07-10 12:00 | 2015-07-10 12:00 | 183, 245, 251, 263, 270, 273 | 25.8d |  | NamNT; MaiTTT; AnhTT |  |
| 286 | 1.3.3 | **Progress report 4** |  | 2.9d | 2015-08-17 10:24 | 2015-08-20 09:36 |  | 0d |  |  | 4h |
| 287 | 1.3.3.1 | Develop Progress Report 4 |  | 0.3d | 2015-08-17 10:24 | 2015-08-17 13:48 | 241, 285 | 0d |  | NamNT | 2.4h |
| 288 | 1.3.3.2 | Review Progress Report 4 |  | 0.1d | 2015-08-18 08:00 | 2015-08-18 08:48 | 287 | 8.9d | 0d | MaiTTT | 0.8h |
| 289 | 1.3.3.3 | Update Progress Report 4 |  | 0.1d | 2015-08-20 08:48 | 2015-08-20 09:36 | 288 | 8.2d | 0d | NamNT | 0.8h |
| 290 | 1.3.3.4 | Complete Progress Report 4 | milestone | 0d | 2015-08-20 09:36 | 2015-08-20 09:36 | 289 | 8.2d |  | NamNT |  |
| 291 | 1.3.4 | **Report no.4** |  | 10.8d | 2015-08-17 13:48 | 2015-09-01 11:12 |  | 0d |  |  | 104h |
| 292 | 1.3.4.1 | Develop Report no.4 (draft version) |  | 1d | 2015-08-17 13:48 | 2015-08-19 08:48 | 241, 285, 287 | 0d |  | NamNT | 8h |
| 293 | 1.3.4.2 | Review Report no.4 (draft version) |  | 2d | 2015-08-19 08:48 | 2015-08-24 09:36 | 292 | 0d |  | MaiTTT | 16h |
| 294 | 1.3.4.3 | Update Report no.4 (draft version) |  | 2d | 2015-08-24 09:36 | 2015-08-26 09:36 | 293 | 0d |  | NamNT | 16h |
| 295 | 1.3.4.4 | Submit Report no.4 (first version) | milestone | 0d | 2015-08-26 09:36 | 2015-08-26 09:36 | 294 | 0d |  | NamNT |  |
| 296 | 1.3.4.5 | Revise after got comments for Report no.4 |  | 4d | 2015-08-26 09:36 | 2015-09-01 11:12 | 295 | 0d |  | NamNT; MaiTTT; PhuongBB; AnhTT | 64h |
| 297 | 1.3.4.6 | Submit Report no.4 (final version) | milestone | 0d | 2015-09-01 11:12 | 2015-09-01 11:12 | 296 | 0d |  | NamNT |  |

| ID | WBS | Task | Type | Duration | Start | Finish | Predecessors | Total slack | Free slack | Resources | Work |
| --- | --- | --- | --- | --- | --- | --- | --- | --- | --- | --- | --- |
| 298 | 1.3.5 | **Testing** |  | 28.1d | 2015-07-08 11:12 | 2015-08-17 12:00 |  | 5.9d |  |  | 401.6h |
| 299 | 1.3.5.1 | **Execute test & fix bugs** |  | 25.9d | 2015-07-08 11:12 | 2015-08-13 10:24 |  | 5.9d |  |  | 392h |
| 300 | 1.3.5.1.1 | **Round 1** |  | 14.9d | 2015-07-08 11:12 | 2015-07-29 10:24 |  | 5.9d |  |  | 229.6h |
| 301 | 1.3.5.1.1.1 | **Execute unit test** |  | 10.7d | 2015-07-08 11:12 | 2015-07-23 08:48 |  | 5.9d |  |  | 69.6h |
| 302 | 1.3.5.1.1.1.1 | Bus driver module |  | 0.8d | 2015-07-13 08:00 | 2015-07-13 15:24 | 183, 213 | 4.5d | 3.5d | PhuongBB | 6.4h |
| 303 | 1.3.5.1.1.1.2 | Common module |  | 0.8d | 2015-07-10 11:12 | 2015-07-13 17:00 | 213, 245 | 4.3d | 3.3d | PhuongBB | 6.4h |
| 304 | 1.3.5.1.1.1.3 | Account Management module |  | 2d | 2015-07-08 11:12 | 2015-07-10 11:12 | 213, 251 | 5.9d | 4.9d | PhuongBB | 16h |
| 305 | 1.3.5.1.1.1.4 | Bus module |  | 0.8d | 2015-07-16 08:00 | 2015-07-16 15:24 | 213, 258 | 1.5d | 0.5d | PhuongBB | 6.4h |
| 306 | 1.3.5.1.1.1.5 | Path Finder module |  | 2d | 2015-07-14 08:00 | 2015-07-15 17:00 | 213, 263 | 2.3d | 1.3d | PhuongBB | 16h |
| 307 | 1.3.5.1.1.1.6 | Reminder module |  | 0.5d | 2015-07-16 15:24 | 2015-07-17 10:24 | 213, 270 | 1d | 0d | PhuongBB | 4h |
| 308 | 1.3.5.1.1.1.7 | Track module |  | 1d | 2015-07-21 10:24 | 2015-07-22 10:24 | 213, 273 | 29.1d |  | PhuongBB | 8h |
| 309 | 1.3.5.1.1.1.8 | Favorite module |  | 0.8d | 2015-07-22 10:24 | 2015-07-23 08:48 | 213, 283 | 28.3d |  | PhuongBB | 6.4h |
| 310 | 1.3.5.1.1.2 | Fix bugs unit test |  | 4d | 2015-07-17 10:24 | 2015-07-23 10:24 | 302, 303, 304, 305, 306, 307 | 1d | 0d | AnhTT; NamNT; MaiTTT | 96h |
| 311 | 1.3.5.1.1.3 | Execute integration test |  | 1d | 2015-07-23 10:24 | 2015-07-24 10:24 | 310 | 1d | 0d | PhuongBB | 8h |
| 312 | 1.3.5.1.1.4 | Fix bugs integration test |  | 1d | 2015-07-24 10:24 | 2015-07-27 10:24 | 311 | 1d | 0d | AnhTT; NamNT; MaiTTT | 24h |
| 313 | 1.3.5.1.1.5 | Execute system test |  | 1d | 2015-07-27 10:24 | 2015-07-28 10:24 | 312 | 1d | 0d | PhuongBB | 8h |
| 314 | 1.3.5.1.1.6 | Fix bugs system test |  | 1d | 2015-07-28 10:24 | 2015-07-29 10:24 | 313 | 1d | 0d | AnhTT; NamNT; MaiTTT | 24h |
| 315 | 1.3.5.1.2 | **Round 2** |  | 9.7d | 2015-07-29 10:24 | 2015-08-11 17:00 |  | 4d |  |  | 146.4h |
| 316 | 1.3.5.1.2.1 | **Execute unit test** |  | 5.8d | 2015-07-29 10:24 | 2015-08-06 08:48 |  | 4d |  |  | 38.4h |
| 317 | 1.3.5.1.2.1.1 | Bus driver module |  | 0.5d | 2015-07-31 16:12 | 2015-08-03 11:12 | 314 | 1.9d | 0.9d | PhuongBB | 4h |
| 318 | 1.3.5.1.2.1.2 | Common module |  | 0.6d | 2015-07-31 10:24 | 2015-07-31 16:12 | 314 | 2.4d | 1.4d | PhuongBB | 4.8h |
| 319 | 1.3.5.1.2.1.3 | Account Management module |  | 1d | 2015-07-29 10:24 | 2015-07-30 10:24 | 314 | 4d | 3d | PhuongBB | 8h |
| 320 | 1.3.5.1.2.1.4 | Bus module |  | 0.5d | 2015-08-03 11:12 | 2015-08-03 16:12 | 314 | 1.4d | 0.4d | PhuongBB | 4h |
| 321 | 1.3.5.1.2.1.5 | Path Finder module |  | 1d | 2015-07-30 10:24 | 2015-07-31 10:24 | 314 | 3d | 2d | PhuongBB | 8h |
| 322 | 1.3.5.1.2.1.6 | Reminder module |  | 0.3d | 2015-08-05 15:24 | 2015-08-06 08:48 | 314 | 18.3d |  | PhuongBB | 2.4h |
| 323 | 1.3.5.1.2.1.7 | Track module |  | 0.5d | 2015-08-05 10:24 | 2015-08-05 15:24 | 314 | 18.6d |  | PhuongBB | 4h |
| 324 | 1.3.5.1.2.1.8 | Favorite module |  | 0.4d | 2015-08-03 16:12 | 2015-08-04 10:24 | 314 | 1d | 0d | PhuongBB | 3.2h |
| 325 | 1.3.5.1.2.2 | Fix bugs unit test |  | 2d | 2015-08-04 10:24 | 2015-08-06 10:24 | 317, 318, 319, 320, 321, 324 | 1d | 0d | AnhTT; NamNT; MaiTTT | 48h |
| 326 | 1.3.5.1.2.3 | Execute integration test |  | 1d | 2015-08-06 10:24 | 2015-08-07 10:24 | 325 | 1d | 0d | PhuongBB | 8h |
| 327 | 1.3.5.1.2.4 | Fix bugs integration test |  | 1.2d | 2015-08-07 10:24 | 2015-08-10 12:00 | 326 | 1d | 0d | AnhTT; NamNT; MaiTTT | 24h |
| 328 | 1.3.5.1.2.5 | Execute system test |  | 0.5d | 2015-08-10 13:00 | 2015-08-10 17:00 | 327 | 1d | 0d | PhuongBB | 4h |
| 329 | 1.3.5.1.2.6 | Fix bugs system test |  | 1d | 2015-08-11 08:00 | 2015-08-11 17:00 | 328 | 1d | 0d | AnhTT; NamNT; MaiTTT | 24h |
| 330 | 1.3.5.1.3 | Execute acceptance test & collect data |  | 1.3d | 2015-08-12 08:00 | 2015-08-13 10:24 | 329 | 1d | 0d | PhuongBB; MaiTTT | 16h |
| 331 | 1.3.5.2 | Complete execute test | milestone | 0d | 2015-08-13 10:24 | 2015-08-13 10:24 | 330 | 1d | 0d | PhuongBB; MaiTTT |  |

| ID | WBS | Task | Type | Duration | Start | Finish | Predecessors | Total slack | Free slack | Resources | Work |
| --- | --- | --- | --- | --- | --- | --- | --- | --- | --- | --- | --- |
| 332 | 1.3.5.3 | **Test Report** |  | 1.6d | 2015-08-13 16:12 | 2015-08-17 12:00 |  | 1d |  |  | 9.6h |
| 333 | 1.3.5.3.1 | Develop test report |  | 0.4d | 2015-08-13 16:12 | 2015-08-14 11:12 | 331 | 1d | 0d | MaiTTT; PhuongBB | 3.2h |
| 334 | 1.3.5.3.2 | Review test report |  | 0.4d | 2015-08-14 11:12 | 2015-08-14 17:00 | 333 | 1d | 0d | MaiTTT; PhuongBB | 3.2h |
| 335 | 1.3.5.3.3 | Update test report |  | 0.4d | 2015-08-17 08:00 | 2015-08-17 12:00 | 334 | 1d | 0d | MaiTTT; PhuongBB | 3.2h |
| 336 | 1.3.5.3.4 | Complete test report | milestone | 0d | 2015-08-17 12:00 | 2015-08-17 12:00 | 335 | 1d | 0d | MaiTTT; PhuongBB |  |
| 337 | 1.3.6 | **Quality report** |  | 0.7d | 2015-08-17 13:00 | 2015-08-18 09:36 |  | 1d |  |  | 11.2h |
| 338 | 1.3.6.1 | Develop quality report |  | 0.3d | 2015-08-17 13:00 | 2015-08-17 15:24 | 336 | 1d | 0d | MaiTTT; PhuongBB | 4.8h |
| 339 | 1.3.6.2 | Review quality report |  | 0.2d | 2015-08-17 15:24 | 2015-08-17 17:00 | 338 | 1d | 0d | MaiTTT; PhuongBB | 3.2h |
| 340 | 1.3.6.3 | Update quality report |  | 0.2d | 2015-08-18 08:00 | 2015-08-18 09:36 | 339 | 1d | 0d | MaiTTT; PhuongBB | 3.2h |
| 341 | 1.3.6.4 | Complete quality report | milestone | 0d | 2015-08-18 09:36 | 2015-08-18 09:36 | 340 | 1d | 0d | MaiTTT; PhuongBB |  |
| 342 | 1.3.7 | **Progress report 5** |  | 0.5d | 2015-08-18 09:36 | 2015-08-18 14:36 |  | 1d |  |  | 4h |
| 343 | 1.3.7.1 | Develop Progress Report 5 |  | 0.3d | 2015-08-18 09:36 | 2015-08-18 12:00 | 341 | 1d | 0d | NamNT | 2.4h |
| 344 | 1.3.7.2 | Review Progress Report 5 |  | 0.1d | 2015-08-18 13:00 | 2015-08-18 13:48 | 343 | 1d | 0d | MaiTTT | 0.8h |
| 345 | 1.3.7.3 | Update Progress Report 5 |  | 0.1d | 2015-08-18 13:48 | 2015-08-18 14:36 | 344 | 1d | 0d | NamNT | 0.8h |
| 346 | 1.3.7.4 | Complete Progress Report 5 | milestone | 0d | 2015-08-18 14:36 | 2015-08-18 14:36 | 345 | 1d | 0d | NamNT |  |
| 347 | 1.3.8 | **Report no.5** |  | 0.6d | 2015-08-18 14:36 | 2015-08-19 10:24 |  | 1d |  |  | 6.4h |
| 348 | 1.3.8.1 | Develop Report no.5 (draft version) |  | 0.1d | 2015-08-18 14:36 | 2015-08-18 15:24 | 336, 341, 346 | 1d | 0d | NamNT | 0.8h |
| 349 | 1.3.8.2 | Review Report no.5 (draft version) |  | 0.2d | 2015-08-18 15:24 | 2015-08-18 17:00 | 348 | 1d | 0d | MaiTTT | 1.6h |
| 350 | 1.3.8.3 | Update Report no.5 (draft version) |  | 0.1d | 2015-08-19 08:48 | 2015-08-19 09:36 | 349 | 1d | 0d | NamNT | 0.8h |
| 351 | 1.3.8.4 | Submit Report no.5 (first version) | milestone | 0d | 2015-08-19 09:36 | 2015-08-19 09:36 | 350 | 1d | 0d | NamNT |  |
| 352 | 1.3.8.5 | Revise after got comments for Report no.5 |  | 0.1d | 2015-08-19 09:36 | 2015-08-19 10:24 | 351 | 1d | 0d | NamNT; MaiTTT; AnhTT; PhuongBB | 3.2h |
| 353 | 1.3.8.6 | Submit Report no.5 (final version) | milestone | 0d | 2015-08-19 10:24 | 2015-08-19 10:24 | 352 | 1d | 0d | NamNT |  |
| 354 | 1.4 | **Termination** |  | 8.1d | 2015-08-19 10:24 | 2015-08-31 11:12 |  | 1d |  |  | 116.8h |
| 355 | 1.4.1 | **Report no.6** |  | 6.6d | 2015-08-19 10:24 | 2015-08-27 16:12 |  | 1d |  |  | 88.8h |
| 356 | 1.4.1.1 | Complete source code & final report |  | 2.5d | 2015-08-19 10:24 | 2015-08-25 09:36 | 353 | 5.2d |  | NamNT; MaiTTT; PhuongBB; AnhTT | 24h |
| 357 | 1.4.1.2 | Develop installation guide |  | 0.5d | 2015-08-19 10:24 | 2015-08-19 15:24 | 353 | 7.8d | 0d | AnhTT | 4h |
| 358 | 1.4.1.3 | Develop user guideline |  | 0.8d | 2015-08-19 15:24 | 2015-08-20 13:48 | 357 | 7.8d |  | PhuongBB | 6.4h |
| 359 | 1.4.1.4 | Complete Project Result Assessment |  | 1d | 2015-08-19 10:24 | 2015-08-20 10:24 | 353 | 1d | 0d | NamNT; MaiTTT | 14.4h |
| 360 | 1.4.1.5 | Conduct lessons learned |  | 0.6d | 2015-08-20 10:24 | 2015-08-20 16:12 | 359 | 1d | 0d | NamNT | 4.8h |
| 361 | 1.4.1.6 | Complete Presentation slide |  | 1d | 2015-08-25 09:36 | 2015-08-26 09:36 | 360 | 1d | 0d | MaiTTT | 8h |
| 362 | 1.4.1.7 | Review Report no.6 (draft version) |  | 1d | 2015-08-26 09:36 | 2015-08-27 09:36 | 361 | 1d | 0d | MaiTTT; PhuongBB | 12.8h |
| 363 | 1.4.1.8 | Update Report no.6 (draft version) |  | 0.5d | 2015-08-27 09:36 | 2015-08-27 14:36 | 362 | 1d | 0d | NamNT; AnhTT | 8h |
| 364 | 1.4.1.9 | Submit Report no.6 (first version) | milestone | 0d | 2015-08-27 14:36 | 2015-08-27 14:36 | 363 | 1d | 0d | NamNT |  |
| 365 | 1.4.1.10 | Revise after got comments for Report no.6 |  | 0.2d | 2015-08-27 14:36 | 2015-08-27 16:12 | 364 | 1d | 0d | NamNT; MaiTTT; PhuongBB; AnhTT | 6.4h |
| 366 | 1.4.1.11 | Submit Report no.6 (final version) | milestone | 0d | 2015-08-27 16:12 | 2015-08-27 16:12 | 365 | 1d | 0d | NamNT |  |
| 367 | 1.4.1.12 | Submit Final report & CD source code | milestone | 0d | 2015-08-27 16:12 | 2015-08-27 16:12 | 366 | 1d | 0d | NamNT; MaiTTT; PhuongBB; AnhTT |  |

| ID | WBS | Task | Duration | Start | Finish | Predecessors | Total slack | Free slack | Resources | Work |
| --- | --- | --- | --- | --- | --- | --- | --- | --- | --- | --- |
| 368 | 1.4.2 | **Pre-closing** | 1d | 2015-08-27 16:12 | 2015-08-28 16:12 |  | 1d |  |  | 24h |
| 369 | 1.4.2.1 | Training presentation | 1d | 2015-08-27 16:12 | 2015-08-28 16:12 | 367 | 1d | 0d | NamNT; MaiTTT; PhuongBB; AnhTT | 24h |
| 370 | 1.4.3 | **Closing** | 0.5d | 2015-08-28 16:12 | 2015-08-31 11:12 |  | 1d |  |  | 4h |
| 371 | 1.4.3.1 | Present Capstone Project & Completed | 0.5d | 2015-08-28 16:12 | 2015-08-31 11:12 | 369 | 1d |  | NamNT; MaiTTT; PhuongBB; AnhTT | 4h |
